# MDSS

Schedule from MS Project, 2009-02-02 to 2009-06-30, costs in USD, A marks actual dates.
Misty Heights

## Calendars

- Standard: Mon-Fri 08:00-12:00, 13:00-17:00; Sat-Sun off.

## Resources

| Resource | Group | Rate |
| --- | --- | --- |
| Nathan | Terra Frame | 115 |
| Thomas (Oz) | Terra Frame | 115 |
| Justin | Terra Frame | 115 |
| Darrell | Terra Frame | 115 |
| MRC | Supplier |  |
| Naifeh | Terra Frame |  |
| Marlize | Project |  |
| Mike | Project |  |
| Eric | Terra Frame |  |
| TBD | Terra Frame | 115 |
| Saul | Project |  |
| Sanika | Project |  |
| Lars | Project |  |
| Miguel | Project |  |

## Schedule

| ID | WBS | Task | Type | Duration | Start | Finish | Predecessors | Complete | Remaining | Baseline start | Baseline finish | Baseline duration | Total slack | Free slack | Constraint | Resources | Work | Actual work | Cost | Baseline cost | Actual cost | Text1 | Text2 | Text4 | Text3 |
| --- | --- | --- | --- | --- | --- | --- | --- | --- | --- | --- | --- | --- | --- | --- | --- | --- | --- | --- | --- | --- | --- | --- | --- | --- | --- |
| 1 | 1 | **MDSS Implementation** |  | 93.76d? | 2009-02-02 A | 2009-06-11 |  | 15% | 79.36d? | 2009-02-02 | 2009-05-28 | 83.25d? | 13.24d |  |  |  | 4700.82h | 685.02h | 244,237.21 | 257,416.04 | 35,238.47 |  |  |  |  |
| 2 | 1.1 | **Create Prototype (Entomology)** |  | 46d? | 2009-02-02 A | 2009-04-06 |  | 47% | 24.19d? | 2009-02-02 | 2009-03-12 | 28.23d? | 60d | 0d |  |  | 1078.2h | 492.82h | 63,733.21 | 74,152.04 | 35,238.47 |  |  |  |  |
| 3 | 1.1.1 | **System requirements** |  | 46d? | 2009-02-02 A | 2009-04-06 |  | 65% | 16.26d? | 2009-02-02 | 2009-03-09 | 26d? | 60d |  |  |  | 637.4h | 401.62h | 27,761.21 | 31,372.04 | 24,750.47 |  |  |  |  |
| 4 | 1.1.1.1 | Dev: Ontology Schema MIRO |  | 15.5d | 2009-02-02 A | 2009-02-23 A |  | 100% |  | 2009-02-02 | 2009-02-09 | 6d |  |  |  | Thomas (Oz) [85%] | 105.4h | 105.4h | 12,121 | 4,692 | 12,121 | SYS08 | 5 days |  |  |
| 5 | 1.1.1.2 | Dev: Geography MOJO attributes (PostGIS phase 1) |  | 17d | 2009-02-02 A | 2009-02-24 |  | 95% | 0.85d | 2009-02-02 | 2009-02-09 | 5.88d? | 83.65d | 1d | finish no earlier than 2009-02-24 | Nathan [85%] | 115.6h | 109.82h | 13,294.21 | 4,600.04 | 12,629.47 | SYS03-01 | 7 days |  |  |
| 6 | 1.1.1.3 | Dev: Geography functions integrated into the query API |  | 3d | 2009-02-26 | 2009-03-02 | 5 |  |  | 2009-02-09 | 2009-02-17 | 5.88d? | 46d | 0d | finish no earlier than 2009-03-02 | Nathan [85%] | 20.4h |  | 2,346 | 4,600 |  | SYS03-02 | 7 days |  |  |
| 7 | 1.1.1.4 | Dev: GIS visual tool integration |  | 8d | 2009-02-02 A | 2009-03-04 |  | 35% | 5.2d | 2009-02-10 | 2009-02-19 | 7.06d? | 83d |  |  | Naifeh | 64h | 22.4h |  | 5,520 |  | SYS10 | 6 days |  |  |
| 8 | 1.1.1.5 | Dev: Geoserver integration |  | 8d | 2009-02-12 A | 2009-03-03 |  | 38% | 5d | 2009-02-19 | 2009-03-02 | 7.06d? | 26.24d | 13d | finish no earlier than 2009-03-03 | Naifeh | 64h | 24h |  | 5,520 |  | SYS11 | 6 days |  |  |
| 9 | 1.1.1.6 | Dev: DHTML tree widget selection and integration |  | 8.5d | 2009-02-11 A | 2009-02-23 A |  | 100% |  | 2009-02-11 | 2009-02-17 | 5d? |  |  | start no earlier than 2009-02-11 | Naifeh | 68h | 68h |  |  |  | SYS02 | 5 days | 10 |  |
| 10 | 1.1.1.7 | Dev: import/export an XLS file with a pre-populated headers |  | 7d | 2009-02-11 A | 2009-02-19 A |  | 100% |  | 2009-02-11 | 2009-02-18 | 6d? |  |  | start no earlier than 2009-02-11 | Eric | 56h | 56h |  |  |  | SYS04-01 | 2 days | 11 |  |
| 11 | 1.1.1.8 | Dev: Import XLS file. Map column headers to fields of a class |  | 2d? | 2009-02-20 A | 2009-02-23 A | 10 | 100% |  | 2009-02-19 | 2009-02-20 | 2d? |  |  |  | Eric | 16h | 16h |  |  |  | SYS04-02 | 2 days | 12 |  |
| 12 | 1.1.1.9 | Dev: Represent query criteria as in a user interface |  | 5d? | 2009-03-16 | 2009-03-20 | 9 |  |  | 2009-02-18 | 2009-02-24 | 5d? | 13.24d | 0d | start no earlier than 2009-03-14 | Naifeh | 40h |  |  |  |  | SYS06-01 | 5 days | 13 |  |
| 13 | 1.1.1.10 | Dev: Represent query criteria in back-end |  | 5d? | 2009-03-30 | 2009-04-03 | 12, 15 |  |  | 2009-02-25 | 2009-03-03 | 5d? | 55d | 0d |  | Naifeh | 40h |  |  |  |  | SYS06-02 | 5 days | 14 |  |
| 14 | 1.1.1.11 | Dev: Save query criteria to the database |  | 1d? | 2009-04-06 | 2009-04-06 | 13 |  |  | 2009-03-04 | 2009-03-04 | 1d? | 55d | 0d |  | Naifeh | 8h |  |  |  |  | SYS06-03 | 1 day | 15 |  |
| 15 | 1.1.1.12 | Dev: Generic GIS visualisation and output requirements |  | 40h | 2009-03-23 | 2009-03-27 | 8, 12 |  |  | 2009-03-02 | 2009-03-09 | 47.06h | 13.24d | 0d |  | Naifeh | 40h |  |  | 4,600 |  | MDSS143 |  | 16 |  |
| 16 | 1.1.2 | **Prototype Use cases** |  | 30.41d? | 2009-02-02 A | 2009-03-16 |  | 23% | 23.47d? | 2009-02-09 | 2009-03-12 | 23.23d? | 75.59d |  |  |  | 440.8h | 91.2h | 35,972 | 42,780 | 10,488 |  |  | 17 |  |
| 17 | 1.1.2.1 | **Search for a geo entity** |  | 15.76d? | 2009-02-20 | 2009-03-16 |  |  |  | 2009-02-20 | 2009-03-12 | 14.12d? | 52.35d |  |  |  | 96h |  | 7,360 | 11,040 |  | MDSS101 |  | 18 |  |
| 18 | 1.1.2.1.1 | Dev: Search for a geo entity - ontology tree |  | 4d? | 2009-02-20 | 2009-03-02 |  |  |  | 2009-02-20 | 2009-02-26 | 4.71d? | 85d |  | finish no earlier than 2009-03-02 | Naifeh | 32h |  |  | 3,680 |  | MDSS111 | 4 days | 19 |  |
| 19 | 1.1.2.1.2 | Dev: Search for a geo entity - filtered |  | 2.35d? | 2009-03-03 | 2009-03-05 | 6 |  |  | 2009-02-26 | 2009-03-03 | 2.35d? | 46d | 0d |  | Nathan [85%] | 16h |  | 1,840 | 1,840 |  | MDSS101 |  | 20 |  |
| 20 | 1.1.2.1.3 | Dev: Search for a geo entity - Hierarchy table |  | 2.35d? | 2009-03-05 | 2009-03-09 | 19 |  |  | 2009-03-03 | 2009-03-05 | 2.35d? | 46d | 0d |  | Nathan [85%] | 16h |  | 1,840 | 1,840 |  | MDSS101 |  | 21 |  |
| 21 | 1.1.2.1.4 | Dev: Search for a geo entity - combo boxes |  | 3.53d? | 2009-03-09 | 2009-03-13 | 20 |  |  | 2009-03-05 | 2009-03-11 | 3.53d? | 46d | 0d |  | Nathan [85%] | 24h |  | 2,760 | 2,760 |  | MDSS101 |  | 22 |  |
| 22 | 1.1.2.1.5 | Dev: Search for a geo entity - finalise |  | 1.18d? | 2009-03-13 | 2009-03-16 | 21 |  |  | 2009-03-11 | 2009-03-12 | 1.18d? | 46d | 0d |  | Nathan [85%] | 8h |  | 920 | 920 |  | MDSS101 |  | 23 |  |
| 23 | 1.1.2.2 | Investigate widget libraries |  | 16h | 2009-02-09 A | 2009-02-10 A |  | 100% |  | 2009-02-09 | 2009-02-10 | 16h |  |  | start no earlier than 2009-02-07 | Darrell | 16h | 16h | 1,840 | 1,840 | 1,840 |  |  | 24 |  |
| 24 | 1.1.2.3 | Dev: login to MDSS |  | 4h | 2009-02-11 A | 2009-02-11 A | 23 | 100% |  | 2009-02-11 | 2009-02-11 | 4h |  |  |  | Darrell | 4h | 4h | 460 | 460 | 460 | MDSS107 |  | 25 |  |
| 25 | 1.1.2.4 | Dev: BE - Submit a mosquito collection |  | 20h | 2009-02-09 A | 2009-02-11 A |  | 100% |  | 2009-02-09 | 2009-02-11 | 20h |  |  | start no earlier than 2009-02-07 | Justin [80%] | 16h | 16h | 1,840 | 1,840 | 1,840 | MDSS024 |  | 26 |  |
| 26 | 1.1.2.5 | Dev: GUI - Submit a mosquito collection |  | 20h | 2009-02-18 A | 2009-02-20 A | 24, 25 | 100% |  | 2009-02-11 | 2009-02-13 | 20h |  |  | start no earlier than 2009-02-18 | Darrell [80%] | 16h | 16h | 1,840 | 1,840 | 1,840 | MDSS024 |  | 27 |  |
| 27 | 1.1.2.6 | Dev: GUI - Adult discriminating dose assay |  | 20h | 2009-02-24 A | 2009-02-26 | 35, 26 | 50% | 10h | 2009-02-25 | 2009-02-27 | 20h | 47.5d | 0d |  | Darrell [80%] | 16h | 8h | 1,840 | 1,840 | 920 | MDSS004 |  | 35 |  |
| 28 | 1.1.2.7 | Dev: BE - Submit collection points |  | 1.25d? | 2009-02-11 A | 2009-02-12 A | 25 | 100% |  | 2009-02-11 | 2009-02-12 | 1.25d? |  |  |  | Justin [80%] | 8h | 8h | 920 | 920 | 920 | MDSS016 |  | 28 |  |
| 29 | 1.1.2.8 | Dev: GUI - Submit collection points |  | 10h | 2009-02-27 | 2009-03-02 | 28, 27 |  |  | 2009-02-16 | 2009-02-17 | 10h | 47.5d | 0.75d | start no earlier than 2009-02-24 | Darrell [80%] | 8h |  | 920 | 920 |  | MDSS016 |  | 29 |  |
| 30 | 1.1.2.9 | Dev: BE - Resistance Mechanisms |  | 5.75d | 2009-02-23 | 2009-03-02 | 28 |  |  | 2009-02-12 | 2009-02-17 | 2.5d? | 25.25d | 0d | finish no earlier than 2009-03-02 | Justin [80%] | 36.8h |  | 4,232 | 1,840 |  | MDSS012 |  | 30 |  |
| 31 | 1.1.2.10 | Dev: GUI - Resistance Mechanisms |  | 16h | 2009-03-03 | 2009-03-04 | 29, 30 |  |  | 2009-02-17 | 2009-02-24 | 40h | 46.75d | 0d | finish no earlier than 2009-03-04 | Darrell [200%] | 32h |  | 3,680 | 3,680 |  | MDSS012 |  | 31 |  |
| 32 | 1.1.2.11 | Dev: BE - Resistance cut-off values |  | 1.25d? | 2009-02-20 A | 2009-02-23 A |  | 100% |  | 2009-02-17 | 2009-02-18 | 1.25d? |  |  |  | Justin [80%] | 8h | 8h | 920 | 920 | 920 | MDSS009 |  | 32 |  |
| 33 | 1.1.2.12 | Dev: GUI - Resistance cut-off values |  | 10h | 2009-03-05 | 2009-03-06 | 32, 31 |  |  | 2009-02-24 | 2009-02-25 | 10h | 46.75d | 0d |  | Darrell [80%] | 8h |  | 920 | 920 |  | MDSS009 |  | 33 |  |
| 34 | 1.1.2.13 | Dev: GUI - Resistance cut-off values |  | 10h | 2009-02-02 | 2009-02-03 |  |  |  | 2009-02-24 | 2009-02-25 | 10h | 104.75d |  |  | Darrell [80%] | 8h |  | 920 | 920 |  | MDSS009 |  | 33 |  |
| 35 | 1.1.2.14 | Dev: BE - Adult discriminating dose assay |  | 1.25d? | 2009-02-23 A | 2009-02-24 | 32 | 50% | 0.62d? | 2009-02-18 | 2009-02-20 | 2.5d? | 48.75d | 0d |  | Justin [80%] | 8h | 4h | 920 | 1,840 | 460 | MDSS004 |  | 34 |  |
| 36 | 1.1.2.15 | Dev: Configure import interfaces |  | 16h | 2009-02-24 | 2009-02-25 |  |  |  | 2009-02-23 | 2009-02-24 | 10h | 45.5d | 2d | start no earlier than 2009-02-24 | Eric | 16h |  |  | 920 |  | MDSS100 |  | 36 |  |
| 37 | 1.1.2.16 | Dev: BE - Entomology dynamic query |  | 2.5d? | 2009-02-24 A | 2009-02-26 | 35 | 70% | 0.75d? | 2009-02-24 | 2009-02-26 | 2.5d? | 52d | 5.25d |  | Justin [80%] | 16h | 11.2h | 1,840 | 1,840 | 1,288 | MDSS145 |  | 38 |  |
| 38 | 1.1.2.17 | Dev: GUI - Entomology dynamic query |  | 20h | 2009-03-06 | 2009-03-10 | 37, 33, 27 |  |  | 2009-03-03 | 2009-03-05 | 20h | 46.75d | 3.25d |  | Darrell [80%] | 16h |  | 1,840 | 1,840 |  | MDSS145 |  | 39 |  |
| 39 | 1.1.2.18 | Dev: Enquiry integration with selected reporting tool |  | 4d? | 2009-03-03 | 2009-03-06 | 30 |  |  | 2009-02-26 | 2009-03-04 | 4d? | 25.25d | 0d |  | Justin | 32h |  | 3,680 | 3,680 |  | SYS09 |  | 40 |  |
| 40 | 1.1.2.19 | Dev: MO Importer |  | 40h | 2009-03-02 | 2009-03-06 | 36 |  |  |  |  |  | 43.5d | 0d | start no earlier than 2009-03-02 | Eric | 40h |  |  |  |  |  |  | 359 |  |
| 41 | 1.1.2.20 | Dev: change visibility of fields on GUI |  | 40h | 2009-03-09 | 2009-03-13 | 40 |  |  | 2009-03-05 | 2009-03-11 | 32h | 43.5d | 0d |  | Eric | 40h |  |  | 3,680 |  | MDSS117 |  | 41 |  |
| 42 | 1.2 | Delivery of prototype | milestone | 1d? | 2009-04-07 | 2009-04-07 | 2 |  |  | 2009-03-12 | 2009-03-13 | 1d? | 60d |  |  |  |  |  |  |  |  |  |  | 42 |  |
| 43 | 1.3 | Required delivery of prototype | milestone | 8h | 2009-03-09 | 2009-03-09 |  |  |  | 2009-03-02 | 2009-03-02 | 8h | 81d |  | start no earlier than 2009-03-09 |  |  |  |  |  |  |  |  | 43 |  |
| 44 | 1.4 | Dev:BE - Biochemical cut-off values |  | 1d? | 2009-03-09 | 2009-03-09 | 39 |  |  | 2009-03-04 | 2009-03-05 | 1d? | 25.25d | 0d |  | Justin [80%] | 6.4h |  | 736 | 736 |  | MDSS014 |  | 44 |  |
| 45 | 1.5 | Dev: GUI - Biochemical cut-off values |  | 10h | 2009-03-16 | 2009-03-17 | 44, 41, 38 |  |  | 2009-03-11 | 2009-03-12 | 10h | 43.5d | 0d |  | Darrell [80%] | 8h |  | 920 | 920 |  | MDSS014 |  | 45 |  |
| 46 | 1.6 | Dev: BE - Adult knock down assay |  | 1.5d? | 2009-03-10 | 2009-03-11 | 44 |  |  | 2009-03-05 | 2009-03-09 | 1.5d? | 25.25d | 0d |  | Justin [80%] | 9.6h |  | 1,104 | 1,104 |  | MDSS006 |  | 46 |  |
| 47 | 1.7 | Dev: GUI - Adult knock down assay |  | 15h | 2009-03-17 | 2009-03-19 | 46, 45 |  |  | 2009-03-13 | 2009-03-16 | 15h | 43.5d | 0d |  | Darrell [80%] | 12h |  | 1,380 | 1,380 |  | MDSS006 |  | 47 |  |
| 48 | 1.8 | Dev: BE - Larvae discriminating dose assay |  | 1.5d? | 2009-03-11 | 2009-03-12 | 46 |  |  | 2009-03-09 | 2009-03-10 | 1.5d? | 25.25d | 0d |  | Justin [80%] | 9.6h |  | 1,104 | 1,104 |  | MDSS008 |  | 48 | 10 |
| 49 | 1.9 | Dev: GUI - Larvae discriminating dose assay |  | 15h | 2009-03-19 | 2009-03-20 | 48, 47 |  |  | 2009-03-16 | 2009-03-18 | 15h | 43.5d | 0d |  | Darrell [80%] | 12h |  | 1,380 | 1,380 |  | MDSS008 |  | 49 | 10 |
| 50 | 1.10 | Dev: BE - Efficacy assay |  | 2.5d? | 2009-03-13 | 2009-03-17 | 48 |  |  | 2009-03-10 | 2009-03-13 | 2.5d? | 25.25d | 0d |  | Justin [80%] | 16h |  | 1,840 | 1,840 |  | MDSS025 |  | 50 |  |
| 51 | 1.11 | Dev: GUI - Efficacy assay |  | 20h | 2009-03-23 | 2009-03-25 | 49 |  |  | 2009-03-18 | 2009-03-23 | 20h | 43.5d | 0d |  | Darrell [80%] | 16h |  | 1,840 | 1,840 |  | MDSS025 |  | 51 |  |

| ID | WBS | Task | Type | Duration | Start | Finish | Predecessors | Complete | Remaining | Baseline start | Baseline finish | Baseline duration | Total slack | Free slack | Constraint | Resources | Work | Actual work | Text4 |
| --- | --- | --- | --- | --- | --- | --- | --- | --- | --- | --- | --- | --- | --- | --- | --- | --- | --- | --- | --- |
| 52 | 1.12 | **Aquire Geo Data** |  | 11d? | 2009-02-10 A | 2009-02-24 |  | 7% | 10.26d? | 2009-02-10 | 2009-02-24 | 11d? | 89d | 0d |  |  | 1552h | 104h | 52 |
| 53 | 1 | **Mozambique** |  | 11d? | 2009-02-10 A | 2009-02-24 |  | 25% | 8.3d? | 2009-02-10 | 2009-02-24 | 11d? | 89d |  |  |  | 424h | 104h | 53 |
| 54 | 1.1 | **Priority 1: Province Boundaries** |  | 10d | 2009-02-10 | 2009-02-23 |  |  |  | 2009-02-10 | 2009-02-23 | 10d | 90d |  |  |  | 80h |  | 54 |
| 55 | 1.1.1 | Data set acquired |  | 7d | 2009-02-10 | 2009-02-18 |  |  |  | 2009-02-10 | 2009-02-18 | 7d | 90d | 0d | start no earlier than 2009-02-10 | MRC | 56h |  | 55 |
| 56 | 1.1.2 | Data set ready for delivery | milestone | 3d | 2009-02-19 | 2009-02-23 | 55 |  |  | 2009-02-19 | 2009-02-23 | 3d | 90d |  | start no earlier than 2009-02-12 | MRC | 24h |  | 56 |
| 57 | 1.2 | **Priority 1: District Boundaries** |  | 4d? | 2009-02-10 A | 2009-02-13 A |  | 100% |  | 2009-02-10 | 2009-02-13 | 4d? |  |  |  |  | 32h | 32h | 57 |
| 58 | 1.2.1 | Data set acquired |  | 3d | 2009-02-10 A | 2009-02-12 A |  | 100% |  | 2009-02-10 | 2009-02-12 | 3d |  |  | start no earlier than 2009-02-10 | MRC | 24h | 24h | 58 |
| 59 | 1.2.2 | Data set ready for delivery | milestone | 1d? | 2009-02-13 A | 2009-02-13 A | 58 | 100% |  | 2009-02-13 | 2009-02-13 | 1d? |  |  | start no earlier than 2009-02-06 | MRC | 8h | 8h | 59 |
| 60 | 1.3 | **Priority 1: Administrative Post Boundaries** |  | 4d? | 2009-02-10 A | 2009-02-13 A |  | 100% |  | 2009-02-10 | 2009-02-13 | 4d? |  |  |  |  | 32h | 32h | 60 |
| 61 | 1.3.1 | Data set acquired |  | 3d | 2009-02-10 A | 2009-02-12 A |  | 100% |  | 2009-02-10 | 2009-02-12 | 3d |  |  | start no earlier than 2009-02-10 | MRC | 24h | 24h | 61 |
| 62 | 1.3.2 | Data set ready for delivery | milestone | 1d? | 2009-02-13 A | 2009-02-13 A | 61 | 100% |  | 2009-02-13 | 2009-02-13 | 1d? |  |  | start no earlier than 2009-02-06 | MRC | 8h | 8h | 62 |
| 63 | 1.4 | **Priority 1: Locality Boundaries** |  | 4d? | 2009-02-10 A | 2009-02-13 A |  | 100% |  | 2009-02-10 | 2009-02-13 | 4d? |  |  |  |  | 32h | 32h | 63 |
| 64 | 1.4.1 | Data set acquired |  | 1d? | 2009-02-10 A | 2009-02-10 A |  | 100% |  | 2009-02-10 | 2009-02-10 | 1d? |  |  | start no earlier than 2009-02-10 | MRC | 8h | 8h | 64 |
| 65 | 1.4.2 | Data set ready for delivery | milestone | 3d | 2009-02-11 A | 2009-02-13 A | 64 | 100% |  | 2009-02-11 | 2009-02-13 | 3d |  |  | start no earlier than 2009-02-06 | MRC | 24h | 24h | 65 |
| 66 | 1.5 | **Priority 1: Village Points** |  | 10d? | 2009-02-10 | 2009-02-23 |  |  |  | 2009-02-10 | 2009-02-23 | 10d? | 90d |  |  |  | 80h |  | 66 |
| 67 | 1.5.1 | Data set acquired |  | 5d | 2009-02-10 | 2009-02-16 |  |  |  | 2009-02-10 | 2009-02-16 | 5d | 90d | 0d | start no earlier than 2009-02-10 | MRC | 40h |  | 67 |
| 68 | 1.5.2 | Data set ready for delivery | milestone | 5d? | 2009-02-17 | 2009-02-23 | 67 |  |  | 2009-02-17 | 2009-02-23 | 5d? | 90d |  | finish no earlier than 2009-02-13 | MRC | 40h |  | 68 |
| 69 | 1.6 | **Priority 1: Health Facility Points** |  | 11d? | 2009-02-10 | 2009-02-24 |  |  |  | 2009-02-10 | 2009-02-24 | 11d? | 89d |  |  |  | 88h |  | 69 |
| 70 | 1.6.1 | Data set acquired |  | 10d | 2009-02-10 | 2009-02-23 |  |  |  | 2009-02-10 | 2009-02-23 | 10d | 89d | 0d | start no earlier than 2009-02-10 | MRC | 80h |  | 70 |
| 71 | 1.6.2 | Data set ready for delivery | milestone | 1d? | 2009-02-24 | 2009-02-24 | 70 |  |  | 2009-02-24 | 2009-02-24 | 1d? | 89d |  | start no earlier than 2009-02-16 | MRC | 8h |  | 71 |
| 72 | 1.7 | **Priority 1: Sentinel Site Points** |  | 5d? | 2009-02-10 A | 2009-02-16 |  | 20% | 4d? | 2009-02-10 | 2009-02-16 | 5d? | 95d |  |  |  | 40h | 8h | 72 |
| 73 | 1.7.1 | Data set acquired |  | 1d? | 2009-02-10 A | 2009-02-10 A |  | 100% |  | 2009-02-10 | 2009-02-10 | 1d? |  |  | start no earlier than 2009-02-10 | MRC | 8h | 8h | 73 |
| 74 | 1.7.2 | Data set ready for delivery | milestone | 4d? | 2009-02-11 | 2009-02-16 | 73 |  |  | 2009-02-11 | 2009-02-16 | 4d? | 95d |  | finish no earlier than 2009-02-06 | MRC | 32h |  | 74 |
| 75 | 1.8 | **Priority 1: Window Trap Points** |  | 5d? | 2009-02-10 | 2009-02-16 |  |  |  | 2009-02-10 | 2009-02-16 | 5d? | 95d |  |  |  | 40h |  | 75 |
| 76 | 1.8.1 | Data set acquired |  | 1d? | 2009-02-10 | 2009-02-10 |  |  |  | 2009-02-10 | 2009-02-10 | 1d? | 95d | 0d | start no earlier than 2009-02-10 | MRC | 8h |  | 76 |
| 77 | 1.8.2 | Data set ready for delivery | milestone | 4d? | 2009-02-11 | 2009-02-16 | 76 |  |  | 2009-02-11 | 2009-02-16 | 4d? | 95d |  | start no earlier than 2009-02-03 | MRC | 32h |  | 77 |

| ID | WBS | Task | Type | Duration | Start | Finish | Predecessors | Baseline start | Baseline finish | Baseline duration | Total slack | Free slack | Constraint | Resources | Work | Text4 |
| --- | --- | --- | --- | --- | --- | --- | --- | --- | --- | --- | --- | --- | --- | --- | --- | --- |
| 78 | 2 | **Malawi** |  | 10d? | 2009-02-10 | 2009-02-23 |  | 2009-02-10 | 2009-02-23 | 10d? | 90d |  |  |  | 512h | 78 |
| 79 | 2.1 | **Priority 1: Province / Region Boundaries** |  | 10d? | 2009-02-10 | 2009-02-23 |  | 2009-02-10 | 2009-02-23 | 10d? | 90d |  |  |  | 80h | 79 |
| 80 | 2.1.1 | Data set acquired |  | 5d | 2009-02-10 | 2009-02-16 |  | 2009-02-10 | 2009-02-16 | 5d | 90d | 0d | start no earlier than 2009-02-10 | MRC | 40h | 80 |
| 81 | 2.1.2 | Data set ready for delivery | milestone | 5d? | 2009-02-17 | 2009-02-23 | 80 | 2009-02-17 | 2009-02-23 | 5d? | 90d |  | finish no earlier than 2009-02-13 | MRC | 40h | 81 |
| 82 | 2.2 | **Priority 1: District Boundaries** |  | 10d? | 2009-02-10 | 2009-02-23 |  | 2009-02-10 | 2009-02-23 | 10d? | 90d |  |  |  | 80h | 82 |
| 83 | 2.2.1 | Data set acquired |  | 5d | 2009-02-10 | 2009-02-16 |  | 2009-02-10 | 2009-02-16 | 5d | 90d | 0d | start no earlier than 2009-02-10 | MRC | 40h | 83 |
| 84 | 2.2.2 | Data set ready for delivery | milestone | 5d? | 2009-02-17 | 2009-02-23 | 83 | 2009-02-17 | 2009-02-23 | 5d? | 90d |  | finish no earlier than 2009-02-13 | MRC | 40h | 84 |
| 85 | 2.3 | **Priority 1: Traditional Authority Boundaries** |  | 10d? | 2009-02-10 | 2009-02-23 |  | 2009-02-10 | 2009-02-23 | 10d? | 90d |  |  |  | 80h | 85 |
| 86 | 2.3.1 | Data set acquired |  | 5d | 2009-02-10 | 2009-02-16 |  | 2009-02-10 | 2009-02-16 | 5d | 90d | 0d | start no earlier than 2009-02-10 | MRC | 40h | 86 |
| 87 | 2.3.2 | Data set ready for delivery | milestone | 5d? | 2009-02-17 | 2009-02-23 | 86 | 2009-02-17 | 2009-02-23 | 5d? | 90d |  | finish no earlier than 2009-02-13 | MRC | 40h | 87 |
| 88 | 2.4 | **Priority 1: Village Points** |  | 10d? | 2009-02-10 | 2009-02-23 |  | 2009-02-10 | 2009-02-23 | 10d? | 90d |  |  |  | 80h | 88 |
| 89 | 2.4.1 | Data set acquired |  | 5d | 2009-02-10 | 2009-02-16 |  | 2009-02-10 | 2009-02-16 | 5d | 90d | 0d | start no earlier than 2009-02-10 | MRC | 40h | 89 |
| 90 | 2.4.2 | Data set ready for delivery | milestone | 5d? | 2009-02-17 | 2009-02-23 | 89 | 2009-02-17 | 2009-02-23 | 5d? | 90d |  | finish no earlier than 2009-02-13 | MRC | 40h | 90 |
| 91 | 2.5 | **Priority 1: Health Facility Points** |  | 10d? | 2009-02-10 | 2009-02-23 |  | 2009-02-10 | 2009-02-23 | 10d? | 90d |  |  |  | 80h | 91 |
| 92 | 2.5.1 | Data set acquired |  | 5d | 2009-02-10 | 2009-02-16 |  | 2009-02-10 | 2009-02-16 | 5d | 90d | 0d | start no earlier than 2009-02-10 | MRC | 40h | 92 |
| 93 | 2.5.2 | Data set ready for delivery | milestone | 5d? | 2009-02-17 | 2009-02-23 | 92 | 2009-02-17 | 2009-02-23 | 5d? | 90d |  | start no earlier than 2009-02-09 | MRC | 40h | 93 |
| 94 | 2.6 | **Priority 1: Sentinel Site Points** |  | 8d? | 2009-02-10 | 2009-02-19 |  | 2009-02-10 | 2009-02-19 | 8d? | 92d |  |  |  | 64h | 94 |
| 95 | 2.6.1 | Data set acquired |  | 4d | 2009-02-10 | 2009-02-13 |  | 2009-02-10 | 2009-02-13 | 4d | 92d | 0d | start no earlier than 2009-02-10 | MRC | 32h | 95 |
| 96 | 2.6.2 | Data set ready for delivery | milestone | 4d? | 2009-02-16 | 2009-02-19 | 95 | 2009-02-16 | 2009-02-19 | 4d? | 92d |  | start no earlier than 2009-02-10 | MRC | 32h | 96 |
| 97 | 2.7 | **Priority 1: Window Trap Points** |  | 6d? | 2009-02-10 | 2009-02-17 |  | 2009-02-10 | 2009-02-17 | 6d? | 94d |  |  |  | 48h | 97 |
| 98 | 2.7.1 | Data set acquired |  | 5d | 2009-02-10 | 2009-02-16 |  | 2009-02-10 | 2009-02-16 | 5d | 94d | 0d | start no earlier than 2009-02-10 | MRC | 40h | 98 |
| 99 | 2.7.2 | Data set ready for delivery | milestone | 1d? | 2009-02-17 | 2009-02-17 | 98 | 2009-02-17 | 2009-02-17 | 1d? | 94d |  | finish no earlier than 2009-02-13 | MRC | 8h | 99 |
| 100 | 3 | **Zambia** |  | 10d? | 2009-02-10 | 2009-02-23 |  | 2009-02-10 | 2009-02-23 | 10d? | 90d |  |  |  | 616h | 100 |
| 101 | 3.1 | **Priority 1: Province Boundaries** |  | 10d? | 2009-02-10 | 2009-02-23 |  | 2009-02-10 | 2009-02-23 | 10d? | 90d |  |  |  | 80h | 101 |
| 102 | 3.1.1 | Data set acquired |  | 5d | 2009-02-10 | 2009-02-16 |  | 2009-02-10 | 2009-02-16 | 5d | 90d | 0d | start no earlier than 2009-02-10 | MRC | 40h | 102 |
| 103 | 3.1.2 | Data set ready for delivery | milestone | 5d? | 2009-02-17 | 2009-02-23 | 102 | 2009-02-17 | 2009-02-23 | 5d? | 90d |  | finish no earlier than 2009-02-13 | MRC | 40h | 103 |

| ID | WBS | Task | Type | Duration | Start | Finish | Predecessors | Complete | Remaining | Baseline start | Baseline finish | Baseline duration | Total slack | Free slack | Constraint | Resources | Work | Actual work | Text4 |
| --- | --- | --- | --- | --- | --- | --- | --- | --- | --- | --- | --- | --- | --- | --- | --- | --- | --- | --- | --- |
| 104 | 3.2 | **Priority 1: District Boundaries** |  | 10d? | 2009-02-10 | 2009-02-23 |  |  |  | 2009-02-10 | 2009-02-23 | 10d? | 90d |  |  |  | 80h |  | 104 |
| 105 | 3.2.1 | Data set acquired |  | 5d | 2009-02-10 | 2009-02-16 |  |  |  | 2009-02-10 | 2009-02-16 | 5d | 90d | 0d | start no earlier than 2009-02-10 | MRC | 40h |  | 105 |
| 106 | 3.2.2 | Data set ready for delivery | milestone | 5d? | 2009-02-17 | 2009-02-23 | 105 |  |  | 2009-02-17 | 2009-02-23 | 5d? | 90d |  | finish no earlier than 2009-02-13 | MRC | 40h |  | 106 |
| 107 | 3.3 | **Priority 1: Constituency Boundaries** |  | 10d? | 2009-02-10 | 2009-02-23 |  |  |  | 2009-02-10 | 2009-02-23 | 10d? | 90d |  |  |  | 80h |  | 107 |
| 108 | 3.3.1 | Data set acquired |  | 5d | 2009-02-10 | 2009-02-16 |  |  |  | 2009-02-10 | 2009-02-16 | 5d | 90d | 0d | start no earlier than 2009-02-10 | MRC | 40h |  | 108 |
| 109 | 3.3.2 | Data set ready for delivery | milestone | 5d? | 2009-02-17 | 2009-02-23 | 108 |  |  | 2009-02-17 | 2009-02-23 | 5d? | 90d |  | start no earlier than 2009-02-09 | MRC | 40h |  | 109 |
| 110 | 3.4 | **Priority 1: Ward Boundaries** |  | 10d? | 2009-02-10 | 2009-02-23 |  |  |  | 2009-02-10 | 2009-02-23 | 10d? | 90d |  |  |  | 80h |  | 110 |
| 111 | 3.4.1 | Data set acquired |  | 5d | 2009-02-10 | 2009-02-16 |  |  |  | 2009-02-10 | 2009-02-16 | 5d | 90d | 0d | start no earlier than 2009-02-10 | MRC | 40h |  | 111 |
| 112 | 3.4.2 | Data set ready for delivery | milestone | 5d? | 2009-02-17 | 2009-02-23 | 111 |  |  | 2009-02-17 | 2009-02-23 | 5d? | 90d |  | finish no earlier than 2009-02-13 | MRC | 40h |  | 112 |
| 113 | 3.5 | **Priority 1: Village Points** |  | 10d? | 2009-02-10 | 2009-02-23 |  |  |  | 2009-02-10 | 2009-02-23 | 10d? | 90d |  |  |  | 80h |  | 113 |
| 114 | 3.5.1 | Data set acquired |  | 5d | 2009-02-10 | 2009-02-16 |  |  |  | 2009-02-10 | 2009-02-16 | 5d | 90d | 0d | start no earlier than 2009-02-10 | MRC | 40h |  | 114 |
| 115 | 3.5.2 | Data set ready for delivery | milestone | 5d? | 2009-02-17 | 2009-02-23 | 114 |  |  | 2009-02-17 | 2009-02-23 | 5d? | 90d |  | finish no earlier than 2009-02-20 | MRC | 40h |  | 115 |
| 116 | 3.6 | **Priority 1: Health Facility Points** |  | 9d? | 2009-02-10 | 2009-02-20 |  |  |  | 2009-02-10 | 2009-02-20 | 9d? | 91d |  |  |  | 72h |  | 116 |
| 117 | 3.6.1 | Data set acquired |  | 4d? | 2009-02-10 | 2009-02-13 |  |  |  | 2009-02-10 | 2009-02-13 | 4d? | 91d | 0d | start no earlier than 2009-02-10 | MRC | 32h |  | 117 |
| 118 | 3.6.2 | Data set ready for delivery | milestone | 5d? | 2009-02-16 | 2009-02-20 | 117 |  |  | 2009-02-16 | 2009-02-20 | 5d? | 91d |  | finish no earlier than 2009-02-20 | MRC | 40h |  | 118 |
| 119 | 3.7 | **Priority 1: Sentinel Site Points** |  | 9d? | 2009-02-10 | 2009-02-20 |  |  |  | 2009-02-10 | 2009-02-20 | 9d? | 91d |  |  |  | 72h |  | 119 |
| 120 | 3.7.1 | Data set acquired |  | 4d? | 2009-02-10 | 2009-02-13 |  |  |  | 2009-02-10 | 2009-02-13 | 4d? | 91d | 0d | start no earlier than 2009-02-10 | MRC | 32h |  | 120 |
| 121 | 3.7.2 | Data set ready for delivery | milestone | 5d? | 2009-02-16 | 2009-02-20 | 120 |  |  | 2009-02-16 | 2009-02-20 | 5d? | 91d |  | start no earlier than 2009-02-16 | MRC | 40h |  | 121 |
| 122 | 3.8 | **Priority 1: Window Trap Points** |  | 9d? | 2009-02-10 | 2009-02-20 |  |  |  | 2009-02-10 | 2009-02-20 | 9d? | 91d |  |  |  | 72h |  | 122 |
| 123 | 3.8.1 | Data set acquired |  | 4d? | 2009-02-10 | 2009-02-13 |  |  |  | 2009-02-10 | 2009-02-13 | 4d? | 91d | 0d | start no earlier than 2009-02-10 | MRC | 32h |  | 123 |
| 124 | 3.8.2 | Data set ready for delivery | milestone | 5d? | 2009-02-16 | 2009-02-20 | 123 |  |  | 2009-02-16 | 2009-02-20 | 5d? | 91d |  | finish no earlier than 2009-02-20 | MRC | 40h |  | 124 |
| 125 | 1.13 | Deliver Population data | milestone | 0h | 2009-02-24 | 2009-02-24 | 52 |  |  | 2009-02-24 | 2009-02-24 | 0h | 89d | 0d | start no earlier than 2009-02-18 | MRC |  |  | 125 |
| 126 | 1.14 | Import Geo data into MDSS schema |  | 8h | 2009-02-25 | 2009-02-25 | 125 |  |  | 2009-02-25 | 2009-02-25 | 8h | 89d |  |  |  | 24h |  | 126 |
| 127 | 1.15 | Deliver entomology data to be imported |  | 64h | 2009-02-18 A | 2009-02-27 |  | 63% | 24h | 2009-02-20 | 2009-02-20 | 0h | 4.29d | 3.43d | start no earlier than 2009-02-18 | Mike | 64h | 40h | 127 |

| ID | WBS | Task | Type | Duration | Start | Finish | Predecessors | Complete | Remaining | Baseline start | Baseline finish | Baseline duration | Total slack | Free slack | Constraint | Deadline | Resources | Work | Actual work | Text4 | Text1 |
| --- | --- | --- | --- | --- | --- | --- | --- | --- | --- | --- | --- | --- | --- | --- | --- | --- | --- | --- | --- | --- | --- |
| 128 | 1.16 | **Prototype Test Cases** |  | 2.86d? | 2009-02-23 A | 2009-02-25 A |  | 100% |  | 2009-02-11 | 2009-02-13 | 2.86d? |  |  |  |  |  | 16h | 16h | 128 |  |
| 129 | 1.16.1 | TC: Geo Tree |  | 1.43d? | 2009-02-23 A | 2009-02-24 A |  | 100% |  | 2009-02-11 | 2009-02-12 | 1.43d? |  |  | start no earlier than 2009-02-21 |  | Marlize [70%] | 8h | 8h | 129 | MDSS111 |
| 130 | 1.16.2 | TC: Searching for a geo entity |  | 11.43h | 2009-02-24 A | 2009-02-25 A | 129 | 100% |  | 2009-02-12 | 2009-02-13 | 11.43h |  |  |  |  | Marlize [70%] | 8h | 8h | 130 | MDSS101 |
| 131 | 1.17 | Create test cases for entomology prototype |  | 88h | 2009-02-16 A | 2009-03-02 |  | 60% | 35.2h | 2009-02-11 | 2009-02-20 | 64h | 76d | 4d | finish no earlier than 2009-03-02 |  | Mike [50%] | 32h | 23.2h | 131 |  |
| 132 | 1.18 | Test defect logging procedures |  | 0.71d? | 2009-03-02 | 2009-03-03 | 209 |  |  | 2009-02-24 | 2009-02-25 | 0.71d? | 1.43d | 0.57d |  |  | Marlize [70%] | 4h |  | 132 |  |
| 133 | 1.19 | Prepare entomology test data |  | 5.71h | 2009-03-05 | 2009-03-06 | 127, 134 |  |  | 2009-02-27 | 2009-02-27 | 5.71h | 0.86d |  |  |  | Marlize [70%] | 4h |  | 133 |  |
| 134 | 1.20 | Learn BIRT report writer |  | 11.43h | 2009-03-04 | 2009-03-05 | 132 |  |  | 2009-02-25 | 2009-02-27 | 11.43h | 0.86d | 0d | start no earlier than 2009-03-04 |  | Marlize [70%] | 8h |  | 134 |  |
| 135 | 1.21 | **Test Prototype Submit Change Requests** |  | 13.57d? | 2009-03-09 A | 2009-03-26 | 134 | 1% | 13.49d? | 2009-03-02 | 2009-03-20 | 13.57d? | 68.43d |  |  |  |  | 125.02h | 1h | 135 |  |
| 136 | 1.21.1 | **Test: Geo entity search and maintanance** |  | 7.15d? | 2009-03-09 | 2009-03-18 |  |  |  | 2009-03-02 | 2009-03-12 | 7.15d? | 0d |  |  |  |  | 40.02h |  | 136 |  |
| 137 | 1.21.1.1 | Test: login to MDSS | milestone | 0h | 2009-03-09 | 2009-03-09 | 133 |  |  | 2009-03-02 | 2009-03-02 | 0h | 0d |  | start no earlier than 2009-03-09 | 2009-03-08 | Marlize [70%] |  |  | 137 | MDSS107 |
| 138 | 1.21.1.2 | Test: Search for a geo entity - tree |  | 0.36d? | 2009-03-09 | 2009-03-09 | 137 |  |  | 2009-03-03 | 2009-03-03 | 0.36d? | 37.71d | 0d | start no earlier than 2009-03-03 |  | Marlize [70%] | 2h |  | 138 | MDSS111 |
| 139 | 1.21.1.3 | Submit defects: Search for a geo entity - tree |  | 0.71d? | 2009-03-09 | 2009-03-10 | 138 |  |  | 2009-03-03 | 2009-03-04 | 0.71d? | 37.71d | 0d |  |  | Marlize [70%] | 4h |  | 139 | MDSS111 |
| 140 | 1.21.1.4 | Test: create a geo entity |  | 2.86h | 2009-03-10 | 2009-03-10 | 139 |  |  | 2009-03-04 | 2009-03-04 | 2.86h | 37.71d | 0d |  |  | Marlize [70%] | 2h |  | 140 | MDSS101 |
| 141 | 1.21.1.5 | Submit defects: create a geo entity |  | 5.71h | 2009-03-10 | 2009-03-11 | 140 |  |  | 2009-03-04 | 2009-03-05 | 5.71h | 37.71d | 0d |  |  | Marlize [70%] | 4h |  | 141 | MDSS101 |
| 142 | 1.21.1.6 | Test: Search for a geo entity - filtered |  | 0.36d? | 2009-03-11 | 2009-03-11 | 141 |  |  | 2009-03-05 | 2009-03-05 | 0.36d? | 37.71d | 0d |  |  | Marlize [70%] | 2h |  | 142 | MDSS101 |
| 143 | 1.21.1.7 | Submit defects: Search for a geo entity - filtered |  | 0.36d | 2009-03-11 | 2009-03-11 | 142 |  |  | 2009-03-05 | 2009-03-05 | 0.36d | 37.71d | 0d |  |  | Marlize [70%] | 2.02h |  | 143 | MDSS101 |
| 144 | 1.21.1.8 | Test: Search for a geo entity - Hierarchy table |  | 1.43d? | 2009-03-11 | 2009-03-13 | 143 |  |  | 2009-03-05 | 2009-03-09 | 1.43d? | 37.71d | 0d |  |  | Marlize [70%] | 8h |  | 144 | MDSS101 |
| 145 | 1.21.1.9 | Submit defects: Search for a geo entity - Hierarchy table |  | 0.71d? | 2009-03-13 | 2009-03-16 | 144 |  |  | 2009-03-09 | 2009-03-10 | 0.71d? | 37.71d | 0d |  |  | Marlize [70%] | 4h |  | 145 | MDSS101 |
| 146 | 1.21.1.10 | Test: Search for a geo entity - combo boxes |  | 0.36d? | 2009-03-16 | 2009-03-16 | 145 |  |  | 2009-03-10 | 2009-03-10 | 0.36d? | 37.71d | 0d |  |  | Marlize [70%] | 2h |  | 146 | MDSS101 |
| 147 | 1.21.1.11 | Submit defects: Search for a geo entity - combo boxes |  | 0.36d? | 2009-03-16 | 2009-03-16 | 146 |  |  | 2009-03-10 | 2009-03-10 | 0.36d? | 37.71d | 0d |  |  | Marlize [70%] | 2h |  | 147 | MDSS101 |
| 148 | 1.21.1.12 | Test: Call 101 from 024, 016, 025 |  | 0.36d? | 2009-03-16 | 2009-03-17 | 147 |  |  | 2009-03-10 | 2009-03-11 | 0.36d? | 37.71d | 0d |  |  | Marlize [70%] | 2h |  | 148 | MDSS101 |
| 149 | 1.21.1.13 | Submit defects: Call 101 from 024, 016, 025 |  | 0.36d? | 2009-03-17 | 2009-03-17 | 148 |  |  | 2009-03-11 | 2009-03-11 | 0.36d? | 37.71d | 0d |  |  | Marlize [70%] | 2h |  | 149 | MDSS101 |
| 150 | 1.21.1.14 | Write change request MDSS101, MDSS111 |  | 0.71d? | 2009-03-17 | 2009-03-18 | 149 |  |  | 2009-03-11 | 2009-03-12 | 0.71d? | 37.71d | 0d |  |  | Marlize [70%] | 4h |  | 150 | MDSS101 |
| 151 | 1.21.2 | Test: changing visibility of fields in GUI |  | 1.43h | 2009-03-18 | 2009-03-18 | 150 |  |  | 2009-03-12 | 2009-03-12 | 1.43h | 37.71d | 0d |  |  | Marlize [70%] | 1h |  | 151 | MDSS117 |
| 152 | 1.21.3 | Submit defects: changing visibility of fields in GUI |  | 2.86h | 2009-03-18 | 2009-03-18 | 151 |  |  | 2009-03-12 | 2009-03-12 | 2.86h | 37.71d | 0d |  |  | Marlize [70%] | 2h |  | 152 | MDSS117 |
| 153 | 1.21.4 | Test: Submit a mosquito collection |  | 0.12d? | 2009-03-09 | 2009-03-09 | 131 |  |  | 2009-03-09 | 2009-03-09 | 0.12d? | 72d | 0d | start no earlier than 2009-03-09 |  | Mike | 1h |  | 153 | MDSS024 |
| 154 | 1.21.5 | Submit defects: Submit a mosquito collection |  | 2h | 2009-03-09 | 2009-03-09 | 153 |  |  | 2009-03-09 | 2009-03-09 | 2h | 72d | 0d |  |  | Mike | 2h |  | 154 | MDSS024 |
| 155 | 1.21.6 | Test: search/update/delete record |  | 1h | 2009-03-09 | 2009-03-09 | 154 |  |  | 2009-03-09 | 2009-03-09 | 1h | 72d | 0d |  |  | Mike | 1h |  | 155 | MDSS75 |
| 156 | 1.21.7 | Submit defects: search/update/delete |  | 2h | 2009-03-09 | 2009-03-09 | 155 |  |  | 2009-03-09 | 2009-03-09 | 2h | 72d | 0d |  |  | Mike | 2h |  | 156 |  |
| 157 | 1.21.8 | Test: Submit collection points |  | 1h | 2009-03-09 | 2009-03-09 | 156 |  |  | 2009-03-09 | 2009-03-09 | 1h | 72d | 0d |  |  | Mike | 1h |  | 157 | MDSS016 |
| 158 | 1.21.9 | Submit defects: Submit collection points |  | 1h | 2009-03-09 | 2009-03-09 | 157 |  |  | 2009-03-09 | 2009-03-09 | 1h | 72d | 0d |  |  | Mike | 1h |  | 158 | MDSS016 |
| 159 | 1.21.10 | Write change request: Collections |  | 4h | 2009-03-10 | 2009-03-10 | 158 |  |  | 2009-03-10 | 2009-03-10 | 4h | 72d | 0d |  |  | Mike | 4h |  | 159 | MDSS024 |
| 160 | 1.21.11 | Test: Import assay and collection data |  | 1h | 2009-03-10 | 2009-03-10 | 159, 133 |  |  | 2009-03-10 | 2009-03-10 | 1h | 72d | 0d |  |  | Mike | 1h |  | 160 | MDSS102 |
| 161 | 1.21.12 | Submit defects: generic import functionality |  | 2h | 2009-03-10 | 2009-03-10 | 160 |  |  | 2009-03-10 | 2009-03-10 | 2h | 72d | 0d |  |  | Mike | 2h |  | 161 | MDSS102 |
| 162 | 1.21.13 | Test:Species identification |  | 1h | 2009-03-10 | 2009-03-10 | 161 |  |  | 2009-03-10 | 2009-03-10 | 1h | 72d | 0d |  |  | Mike | 1h |  | 162 | MDSS012 |
| 163 | 1.21.14 | Submit defects: Species identification |  | 1h | 2009-03-11 | 2009-03-11 | 162 |  |  | 2009-03-11 | 2009-03-11 | 1h | 72d | 0d |  |  | Mike | 1h |  | 163 | MDSS012 |
| 164 | 1.21.15 | Test: Infectivity assay |  | 1h | 2009-03-11 | 2009-03-11 | 163 |  |  | 2009-03-11 | 2009-03-11 | 1h | 72d | 0d |  |  | Mike | 1h |  | 164 | MDSS022 |
| 165 | 1.21.16 | Submit defects: Infectivity assay |  | 1h | 2009-03-11 | 2009-03-11 | 164 |  |  | 2009-03-11 | 2009-03-11 | 1h | 72d | 0d |  |  | Mike | 1h |  | 165 | MDSS022 |
| 166 | 1.21.17 | Test: Molecular assay |  | 2h | 2009-03-11 | 2009-03-11 | 165 |  |  | 2009-03-11 | 2009-03-11 | 2h | 72d | 0d |  |  | Mike | 2h |  | 166 | MDSS010 |
| 167 | 1.21.18 | Submit defects: Molecular assay |  | 2h | 2009-03-11 | 2009-03-11 | 166 |  |  | 2009-03-11 | 2009-03-11 | 2h | 72d | 0d |  |  | Mike | 2h |  | 167 | MDSS010 |
| 168 | 1.21.19 | Test: Biochemical assay |  | 1h | 2009-03-11 | 2009-03-11 | 167 |  |  | 2009-03-11 | 2009-03-11 | 1h | 72d | 0d |  |  | Mike | 1h |  | 168 | MDSS011 |
| 169 | 1.21.20 | Submit defects: Biochemical assay |  | 1h | 2009-03-12 | 2009-03-12 | 168 |  |  | 2009-03-12 | 2009-03-12 | 1h | 72d | 0d |  |  | Mike | 1h |  | 169 | MDSS011 |
| 170 | 1.21.21 | Test: Biochemical cut-off values |  | 1h | 2009-03-12 | 2009-03-12 | 169 |  |  | 2009-03-12 | 2009-03-12 | 1h | 72d | 0d |  |  | Mike | 1h |  | 170 | MDSS014 |
| 171 | 1.21.22 | Submit defects: Biochemical cut-off values |  | 1h | 2009-03-12 | 2009-03-12 | 170 |  |  | 2009-03-12 | 2009-03-12 | 1h | 72d | 0d |  |  | Mike | 1h |  | 171 | MDSS014 |
| 172 | 1.21.23 | Write change request: Mechanisms |  | 4h | 2009-03-12 | 2009-03-12 | 171 |  |  | 2009-03-12 | 2009-03-12 | 4h | 72d | 0d |  |  | Mike | 4h |  | 172 |  |
| 173 | 1.21.24 | Test: Adult discriminating dose assay |  | 0.25d? | 2009-03-12 | 2009-03-13 | 172 |  |  | 2009-03-12 | 2009-03-13 | 0.25d? | 72d | 0d |  |  | Mike | 2h |  | 173 | MDSS004 |
| 174 | 1.21.25 | Submit defects: Adult discriminating dose assay |  | 2h | 2009-03-13 A | 2009-03-13 | 173 | 50% | 1h | 2009-03-13 | 2009-03-13 | 2h | 71.88d | 0d |  |  | Mike | 2h | 1h | 174 | MDSS004 |
| 175 | 1.21.26 | Test: Larvae discriminating dose assay |  | 0.12d? | 2009-03-13 | 2009-03-13 | 174 |  |  | 2009-03-13 | 2009-03-13 | 0.12d? | 71.88d | 0d |  |  | Mike | 1h |  | 175 | MDSS008 |
| 176 | 1.21.27 | Submit defects: Larvae discriminating dose assay |  | 1h | 2009-03-13 | 2009-03-13 | 175 |  |  | 2009-03-13 | 2009-03-13 | 1h | 71.88d | 0d |  |  | Mike | 1h |  | 176 | MDSS008 |
| 177 | 1.21.28 | Test: Adult knock down assay |  | 0.12d? | 2009-03-13 | 2009-03-13 | 176 |  |  | 2009-03-13 | 2009-03-13 | 0.12d? | 71.88d | 0d |  |  | Mike | 1h |  | 177 | MDSS006 |
| 178 | 1.21.29 | Submit defects: Adult knock down assay |  | 1h | 2009-03-13 | 2009-03-13 | 177 |  |  | 2009-03-13 | 2009-03-13 | 1h | 71.88d | 0d |  |  | Mike | 1h |  | 178 | MDSS006 |
| 179 | 1.21.30 | Test: Resistance cut-off values |  | 1h | 2009-03-13 | 2009-03-13 | 178 |  |  | 2009-03-13 | 2009-03-13 | 1h | 71.88d | 0d |  |  | Mike | 1h |  | 179 | MDSS009 |
| 180 | 1.21.31 | Submit defects: Resistance cut-off values |  | 1h | 2009-03-16 | 2009-03-16 | 179 |  |  | 2009-03-16 | 2009-03-16 | 1h | 71.88d | 0d |  |  | Mike | 1h |  | 180 | MDSS009 |
| 181 | 1.21.32 | Write change request: resistance assays |  | 4h | 2009-03-16 | 2009-03-16 | 180 |  |  | 2009-03-16 | 2009-03-16 | 4h | 71.88d | 0d |  |  | Mike | 4h |  | 181 |  |
| 182 | 1.21.33 | Test: Efficacy assay |  | 0.12d? | 2009-03-16 | 2009-03-16 | 181 |  |  | 2009-03-16 | 2009-03-16 | 0.12d? | 71.88d | 0d |  |  | Mike | 1h |  | 182 | MDSS025 |
| 183 | 1.21.34 | Submit defects: Efficacy assay |  | 1h | 2009-03-16 | 2009-03-16 | 182 |  |  | 2009-03-16 | 2009-03-16 | 1h | 71.88d | 0d |  |  | Mike | 1h |  | 183 | MDSS025 |
| 184 | 1.21.35 | Write change request: Efficacy assay |  | 2h | 2009-03-16 | 2009-03-17 | 183 |  |  | 2009-03-16 | 2009-03-17 | 2h | 71.88d | 0d |  |  | Mike | 2h |  | 184 | MDSS025 |

| ID | WBS | Task | Duration | Start | Finish | Predecessors | Complete | Remaining | Baseline start | Baseline finish | Baseline duration | Total slack | Free slack | Constraint | Resources | Work | Actual work | Text1 | Text4 |
| --- | --- | --- | --- | --- | --- | --- | --- | --- | --- | --- | --- | --- | --- | --- | --- | --- | --- | --- | --- |
| 185 | 1.21.36 | **Test: Entomology dynamic query and reports** | 5.89d | 2009-03-18 | 2009-03-26 | 152 |  |  | 2009-03-12 | 2009-03-20 | 5.89d | 68.43d |  |  |  | 33h |  | MDSS145 | 185 |
| 186 | 1.21.36.1 | Test: add Geo-entity fields | 1.43h | 2009-03-18 | 2009-03-18 |  |  |  | 2009-03-12 | 2009-03-12 | 1.43h | 68.43d | 0d |  | Marlize [70%] | 1h |  | MDSS145 | 186 |
| 187 | 1.21.36.2 | Test: add other fields | 1.43h | 2009-03-18 | 2009-03-19 | 186 |  |  | 2009-03-12 | 2009-03-13 | 1.43h | 68.43d | 0d |  | Marlize [70%] | 1h |  | MDSS145 | 187 |
| 188 | 1.21.36.3 | Test: add functions | 1.43h | 2009-03-19 | 2009-03-19 | 187 |  |  | 2009-03-13 | 2009-03-13 | 1.43h | 68.43d | 0d |  | Marlize [70%] | 1h |  | MDSS145 | 188 |
| 189 | 1.21.36.4 | Test: date ranges on collection date or assay date | 1.43h | 2009-03-19 | 2009-03-19 | 188 |  |  | 2009-03-13 | 2009-03-13 | 1.43h | 68.43d | 0d |  | Marlize [70%] | 1h |  | MDSS145 | 189 |
| 190 | 1.21.36.5 | Submit defects: Build query | 2.86h | 2009-03-19 | 2009-03-19 | 189 |  |  | 2009-03-13 | 2009-03-13 | 2.86h | 68.43d | 0d |  | Marlize [70%] | 2h |  | MDSS145 | 190 |
| 191 | 1.21.36.6 | Test: save query | 1.43h | 2009-03-19 | 2009-03-19 | 190 |  |  | 2009-03-13 | 2009-03-13 | 1.43h | 68.43d | 0d |  | Marlize [70%] | 1h |  | MDSS056 | 191 |
| 192 | 1.21.36.7 | Test: run a saved query | 1.43h | 2009-03-19 | 2009-03-20 | 191 |  |  | 2009-03-13 | 2009-03-16 | 1.43h | 68.43d | 0d |  | Marlize [70%] | 1h |  | MDSS056 | 192 |
| 193 | 1.21.36.8 | Test: modify a saved query | 1.43h | 2009-03-20 | 2009-03-20 | 192 |  |  | 2009-03-16 | 2009-03-16 | 1.43h | 68.43d | 0d |  | Marlize [70%] | 1h |  | MDSS056 | 193 |
| 194 | 1.21.36.9 | Test: export query results | 1.43h | 2009-03-20 | 2009-03-20 | 193 |  |  | 2009-03-16 | 2009-03-16 | 1.43h | 68.43d | 0d |  | Marlize [70%] | 1h |  | MDSS071 | 194 |
| 195 | 1.21.36.10 | Test: dump functionality | 1.43h | 2009-03-20 | 2009-03-20 | 194 |  |  | 2009-03-16 | 2009-03-16 | 1.43h | 68.43d | 0d |  | Marlize [70%] | 1h |  |  | 195 |
| 196 | 1.21.36.11 | Submit defects: deploy query | 2.86h | 2009-03-20 | 2009-03-23 | 195 |  |  | 2009-03-16 | 2009-03-17 | 2.86h | 68.43d | 0d |  | Marlize [70%] | 2h |  |  | 196 |
| 197 | 1.21.36.12 | Test: create thematic map from query | 11.43h | 2009-03-23 | 2009-03-24 | 196 |  |  | 2009-03-17 | 2009-03-18 | 11.43h | 68.43d | 0d |  | Marlize [70%] | 8h |  |  | 197 |
| 198 | 1.21.36.13 | Test: find query results in BIRT | 1.43h | 2009-03-24 | 2009-03-24 | 197 |  |  | 2009-03-18 | 2009-03-18 | 1.43h | 68.43d | 0d |  | Marlize [70%] | 1h |  | MDSS062 | 198 |
| 199 | 1.21.36.14 | Test: create a report template (table) | 2.86h | 2009-03-24 | 2009-03-24 | 198 |  |  | 2009-03-18 | 2009-03-18 | 2.86h | 68.43d | 0d |  | Marlize [70%] | 2h |  | MDSS062 | 199 |
| 200 | 1.21.36.15 | Test: Link a report template to query | 1.43h | 2009-03-24 | 2009-03-25 | 199 |  |  | 2009-03-18 | 2009-03-19 | 1.43h | 68.43d | 0d |  | Marlize [70%] | 1h |  | MDSS056 | 200 |
| 201 | 1.21.36.16 | Test: view/print/save a report | 1.43h | 2009-03-25 | 2009-03-25 | 200 |  |  | 2009-03-19 | 2009-03-19 | 1.43h | 68.43d | 0d |  | Marlize [70%] | 1h |  | MDSS062 | 201 |
| 202 | 1.21.36.17 | Test: change linked report | 1.43h | 2009-03-25 | 2009-03-25 | 201 |  |  | 2009-03-19 | 2009-03-19 | 1.43h | 68.43d | 0d |  | Marlize [70%] | 1h |  | MDSS062 | 202 |
| 203 | 1.21.36.18 | Submit defects: deploy query | 2.86h | 2009-03-25 | 2009-03-25 | 202 |  |  | 2009-03-19 | 2009-03-19 | 2.86h | 68.43d | 0d |  | Marlize [70%] | 2h |  |  | 203 |
| 204 | 1.21.36.19 | Write change request: Dynamic query | 5.71h | 2009-03-25 | 2009-03-26 | 203 |  |  | 2009-03-19 | 2009-03-20 | 5.71h | 68.43d |  |  | Marlize [70%] | 4h |  |  | 204 |
| 205 | 1.22 | **Finalise Query Use Cases** | 36.97d | 2009-02-23 A | 2009-04-14 |  | 11% | 32.86d | 2009-02-13 | 2009-04-08 | 38.11d | 40.75d |  |  |  | 72h | 8h |  | 205 |
| 206 | 1.22.1 | UC: Individual Cases - query | 11.43h | 2009-02-23 A | 2009-02-24 A |  | 100% |  | 2009-02-18 | 2009-02-20 | 11.43h |  |  | start no earlier than 2009-02-21 | Miguel [70%] | 8h | 8h | MDSS128 | 208 |
| 207 | 1.22.2 | UC: Aggregated Cases - query | 11.43h | 2009-02-25 | 2009-02-27 | 130 |  |  | 2009-02-13 | 2009-02-17 | 11.43h | 33.71d | 0d | start no earlier than 2009-02-24 | Miguel [70%] | 8h |  | MDSS129 | 206 |
| 208 | 1.22.3 | UC: Indicator survey - query | 11.43h | 2009-02-27 | 2009-03-02 | 207 |  |  | 2009-02-17 | 2009-02-18 | 11.43h | 40.04d | 3.04d |  | Miguel [70%] | 8h |  | MDSS140 | 207 |
| 209 | 1.22.4 | UC: IRS - query | 22.86h | 2009-02-25 | 2009-03-02 | 206, 130 |  |  | 2009-02-20 | 2009-02-24 | 22.86h | 1.43d | 0d |  | Marlize [70%] | 16h |  | MDSS132 | 209 |
| 210 | 1.22.5 | UC: ITN FacilityCommunity distribution - query | 11.43h | 2009-04-07 | 2009-04-08 | 336 |  |  | 2009-04-01 | 2009-04-02 | 11.43h | 37.71d | 0d |  | Marlize [70%] | 8h |  | MDSS135 | 210 |
| 211 | 1.22.6 | UC: ITN household use - query | 11.43h | 2009-04-08 | 2009-04-10 | 210 |  |  | 2009-04-02 | 2009-04-06 | 11.43h | 37.71d | 0d |  | Marlize [70%] | 8h |  | MDSS138 | 211 |
| 212 | 1.22.7 | UC: IPT individual - query | 11.43h | 2009-04-10 | 2009-04-13 | 211 |  |  | 2009-04-06 | 2009-04-07 | 11.43h | 37.71d | 0d |  | Marlize [70%] | 8h |  | MDSS130 | 212 |
| 213 | 1.22.8 | UC: IPT aggregated - query | 11.43h | 2009-04-13 | 2009-04-14 | 212 |  |  | 2009-04-07 | 2009-04-08 | 11.43h | 40.75d | 0d |  | Marlize [70%] | 8h |  | MDSS131 | 213 |

| ID | WBS | Task | Duration | Start | Finish | Predecessors | Baseline start | Baseline finish | Baseline duration | Total slack | Free slack | Constraint | Resources | Work | Cost | Baseline cost | Text4 | Text1 | Text2 |
| --- | --- | --- | --- | --- | --- | --- | --- | --- | --- | --- | --- | --- | --- | --- | --- | --- | --- | --- | --- |
| 214 | 1.23 | **Complete Development** | 73.76d? | 2009-03-02 | 2009-06-11 |  | 2009-03-02 | 2009-05-28 | 63.25d? | 13.24d |  |  |  | 1632h | 170,200 | 172,960 | 214 |  |  |
| 215 | 1.23.1 | **Generic Development** | 23.53d? | 2009-03-16 | 2009-04-16 |  | 2009-03-05 | 2009-04-14 | 28.76d? | 22.82d |  |  |  | 344h | 31,280 | 31,280 | 215 |  |  |
| 216 | 1.23.1.1 | Dev: Reconstruct saved query | 47.06h | 2009-03-16 | 2009-03-24 | 22 | 2009-03-12 | 2009-03-20 | 47.06h | 46d | 0d |  | Nathan [85%] | 40h | 4,600 | 4,600 | 216 | SYS06-4 |  |
| 217 | 1.23.1.2 | Dev: Overall site layout | 47.06h | 2009-03-24 | 2009-04-01 | 216 | 2009-03-20 | 2009-03-27 | 47.06h | 46d | 0d |  | Nathan [85%] | 40h | 4,600 | 4,600 | 217 | SYS05 |  |
| 218 | 1.23.1.3 | Dev: Configure system variables | 8h | 2009-03-25 | 2009-03-26 | 51 | 2009-03-23 | 2009-03-24 | 8h | 43.5d | 0d |  | Darrell | 8h | 920 | 920 | 218 | MDSS109 | 1 day |
| 219 | 1.23.1.4 | Dev: maintain catalogues | 28.23h | 2009-04-01 | 2009-04-06 | 217 | 2009-03-27 | 2009-04-02 | 28.23h | 46d | 0d |  | Nathan [85%] | 24h | 2,760 | 2,760 | 219 | MDSS103 |  |
| 220 | 1.23.1.5 | Dev: Epi week - set or change | 18.82h | 2009-03-30 | 2009-04-01 | 15 | 2009-03-09 | 2009-03-12 | 18.82h | 13.24d | 0d |  | Thomas (Oz) [85%] | 16h | 1,840 | 1,840 | 220 | MDSS119 | 2 days |
| 221 | 1.23.1.6 | Dev: define season start and end dates | 18.82h | 2009-04-01 | 2009-04-03 | 220 | 2009-03-12 | 2009-03-16 | 18.82h | 13.24d | 0d |  | Thomas (Oz) [85%] | 16h | 1,840 | 1,840 | 221 | MDSS127 | 2 days |
| 222 | 1.23.1.7 | Dev: enter/maintain people in the system | 18.82h | 2009-04-03 | 2009-04-08 | 221 | 2009-03-16 | 2009-03-19 | 18.82h | 13.24d | 0d |  | Thomas (Oz) [85%] | 16h | 1,840 | 1,840 | 222 | MDSS114 |  |
| 223 | 1.23.1.8 | Dev: create synonyms for imported Geo entities | 32h | 2009-03-17 | 2009-03-23 | 50 | 2009-03-13 | 2009-03-19 | 32h | 25.25d | 0d |  | Justin | 32h | 3,680 | 3,680 | 223 | MDSS112 |  |
| 224 | 1.23.1.9 | Dev: User Admin Screen for account management | 3d? | 2009-04-07 | 2009-04-09 | 14 | 2009-04-06 | 2009-04-08 | 3d? | 58d |  | start no earlier than 2009-04-06 | Naifeh | 24h |  |  | 224 |  | 3 days |
| 225 | 1.23.1.10 | Dev: user Admin Screen for Role assignment | 2.35d? | 2009-04-06 | 2009-04-09 | 219 | 2009-04-02 | 2009-04-06 | 2.35d? | 46d | 0d | start no earlier than 2009-03-06 | Nathan [85%] | 16h | 1,840 | 1,840 | 225 | MDSS142 | 2 days |
| 226 | 1.23.1.11 | Dev: Add localisable character attributes | 18.82h | 2009-04-09 | 2009-04-13 | 225 | 2009-04-06 | 2009-04-09 | 18.82h | 46d | 0d |  | Nathan [85%] | 16h | 1,840 | 1,840 | 226 | SYS01-1 |  |
| 227 | 1.23.1.12 | Dev: CRUD on localisable fields | 48h | 2009-04-07 | 2009-04-14 | 14 | 2009-03-05 | 2009-03-12 | 48h | 55d |  |  | Naifeh | 48h |  |  | 227 | SYS01-2 |  |
| 228 | 1.23.1.13 | Dev: CRUD screen for defining geography universals | 28.23h | 2009-04-13 | 2009-04-16 | 226 | 2009-04-09 | 2009-04-14 | 28.23h | 46d | 0d |  | Nathan [85%] | 24h | 2,760 | 2,760 | 228 | SYS07-3 |  |
| 229 | 1.23.1.14 | Change date/time format | 10h | 2009-04-02 | 2009-04-03 | 232 | 2009-03-31 | 2009-04-01 | 10h | 43.5d | 0d |  | Darrell [80%] | 8h | 920 | 920 | 229 | MDSS120 |  |
| 230 | 1.23.1.15 | Change geo root | 20h | 2009-04-03 | 2009-04-08 | 229 | 2009-04-01 | 2009-04-03 | 20h | 43.5d | 13.25d |  | Darrell [80%] | 16h | 1,840 | 1,840 | 230 | MDSS122 |  |
| 231 | 1.23.2 | **Indicator survey** | 8d | 2009-03-23 | 2009-04-02 |  | 2009-03-19 | 2009-03-31 | 8d | 25.25d |  |  |  | 72h | 8,280 | 8,280 | 231 |  |  |
| 232 | 1.23.2.1 | Dev: Indicator survey - CRUD | 40h | 2009-03-26 | 2009-04-02 | 218 | 2009-03-24 | 2009-03-31 | 40h | 43.5d | 0d |  | Darrell [80%] | 32h | 3,680 | 3,680 | 232 | MDSS026 |  |
| 233 | 1.23.2.2 | Dev - Indicator survey - dynamic query | 50h | 2009-03-23 | 2009-03-31 | 223, 208 | 2009-03-19 | 2009-03-27 | 50h | 25.25d | 0d |  | Justin [80%] | 40h | 4,600 | 4,600 | 233 | MDSS140 |  |
| 234 | 1.23.3 | **Case Surveilance** | 50.5d | 2009-03-02 | 2009-05-11 |  | 2009-03-02 | 2009-05-07 | 48.25d | 28d |  |  |  | 448h | 51,520 | 51,520 | 234 |  |  |
| 235 | 1.23.3.1 | Dev: aggregated cases - CRUD | 40h | 2009-03-02 | 2009-03-06 |  | 2009-03-02 | 2009-03-06 | 40h | 28d | 0d | start no earlier than 2009-03-01 | TBD | 40h | 4,600 | 4,600 | 235 | MDSS002 | 5 days |
| 236 | 1.23.3.2 | Dev: calculate CFR | 37.65h | 2009-04-08 | 2009-04-14 | 222 | 2009-03-19 | 2009-03-25 | 37.65h | 13.24d | 0d |  | Thomas (Oz) [85%] | 32h | 3,680 | 3,680 | 236 | MDSS087 | 4 days |
| 237 | 1.23.3.3 | Dev: aggregated cases - dynamic query | 40h | 2009-03-09 | 2009-03-13 | 235, 207 | 2009-03-09 | 2009-03-13 | 40h | 28d | 0d |  | TBD | 40h | 4,600 | 4,600 | 237 | MDSS129 | 5 days |
| 238 | 1.23.3.4 | Dev: Input or modify population data | 32h | 2009-03-16 | 2009-03-19 | 237 | 2009-03-16 | 2009-03-19 | 32h | 28d | 0d | start no earlier than 2009-02-01 | TBD | 32h | 3,680 | 3,680 | 238 | MDSS003 | 4 days |
| 239 | 1.23.3.5 | Dev: Import population or annual growth rate data | 40h | 2009-03-20 | 2009-03-26 | 238 | 2009-03-20 | 2009-03-26 | 40h | 28d | 0d |  | TBD | 40h | 4,600 | 4,600 | 239 | MDSS083 |  |
| 240 | 1.23.3.6 | Dev: input/modify outbreak thresholds | 32h | 2009-03-27 | 2009-04-01 | 239 | 2009-03-27 | 2009-04-01 | 32h | 28d | 0d |  | TBD | 32h | 3,680 | 3,680 | 240 | MDSS105 | 5 days |
| 241 | 1.23.3.7 | Dev :import outbreak thresholds | 32h | 2009-04-02 | 2009-04-07 | 240 | 2009-04-02 | 2009-04-07 | 32h | 28d | 0d |  | TBD | 32h | 3,680 | 3,680 | 241 | MDSS085 | 5 days |
| 242 | 1.23.3.8 | Dev: Calculate annual or seasonal population | 50h | 2009-05-01 | 2009-05-11 | 269 | 2009-04-29 | 2009-05-07 | 50h | 30.25d | 0d |  | Darrell [80%] | 40h | 4,600 | 4,600 | 242 | MDSS073 | 5 days |
| 243 | 1.23.3.9 | Dev: calculate incidence | 47.06h | 2009-04-14 | 2009-04-22 | 236 | 2009-03-25 | 2009-04-02 | 47.06h | 13.24d | 0d |  | Thomas (Oz) [85%] | 40h | 4,600 | 4,600 | 243 | MDSS086 | 5 days |
| 244 | 1.23.3.10 | Dev: individual cases - CRUD | 40h | 2009-04-08 | 2009-04-14 | 241 | 2009-04-08 | 2009-04-14 | 40h | 28d | 0d |  | TBD | 40h | 4,600 | 4,600 | 244 | MDSS001 | 5 days |
| 245 | 1.23.3.11 | Dev: Outbreak notification | 47.06h | 2009-04-22 | 2009-04-30 | 243 | 2009-04-02 | 2009-04-10 | 47.06h | 13.24d | 0d |  | Thomas (Oz) [85%] | 40h | 4,600 | 4,600 | 245 | MDSS124 | 5 days |
| 246 | 1.23.3.12 | Dev: individual case - dynamic query | 40h | 2009-04-15 | 2009-04-21 | 244, 206 | 2009-04-15 | 2009-04-21 | 40h | 28d | 0d |  | TBD | 40h | 4,600 | 4,600 | 246 | MDSS128 | 5 days |

| ID | WBS | Task | Type | Duration | Start | Finish | Predecessors | Complete | Baseline start | Baseline finish | Baseline duration | Total slack | Free slack | Constraint | Resources | Work | Cost | Baseline cost | Text4 | Text1 | Text2 | Text3 |
| --- | --- | --- | --- | --- | --- | --- | --- | --- | --- | --- | --- | --- | --- | --- | --- | --- | --- | --- | --- | --- | --- | --- |
| 247 | 1.23.4 | **Intervention monitoring** |  | 52.01d | 2009-03-31 | 2009-06-11 |  |  | 2009-03-27 | 2009-05-28 | 43.75d | 13.24d |  |  |  | 712h | 72,680 | 75,440 | 247 |  |  |  |
| 248 | 1.23.4.1 | **IRS** |  | 35d | 2009-03-31 | 2009-05-19 |  |  | 2009-03-27 | 2009-05-21 | 38.75d | 25.25d |  |  |  | 224h | 25,760 | 28,520 | 248 |  |  |  |
| 249 | 1.23.4.1.1 | Dev: enter/maintain spray team member |  | 32h | 2009-04-22 | 2009-04-27 | 235, 246 |  | 2009-04-22 | 2009-04-27 | 32h | 28d | 0d |  | TBD | 32h | 3,680 | 3,680 | 249 | MDSS113 |  |  |
| 250 | 1.23.4.1.2 | Dev: enter/maintain IRS teams |  | 32h | 2009-04-28 | 2009-05-01 | 249 |  | 2009-04-28 | 2009-05-01 | 32h | 28d | 0d |  | TBD | 32h | 3,680 | 3,680 | 250 | MDSS141 |  |  |
| 251 | 1.23.4.1.3 | Dev: BE - input or modify IRS targets |  | 30h | 2009-03-31 | 2009-04-06 | 233 |  | 2009-03-27 | 2009-04-02 | 30h | 25.25d | 0d |  | Justin [80%] | 24h | 2,760 | 2,760 | 251 | MDSS028 |  |  |
| 252 | 1.23.4.1.4 | Dev: GUI - input or modify IRS targets |  | 30h | 2009-05-11 | 2009-05-15 | 242, 251 |  | 2009-05-07 | 2009-05-12 | 30h | 30.25d | 0d |  | Darrell [80%] | 24h | 2,760 | 2,760 | 252 | MDSS028 |  |  |
| 253 | 1.23.4.1.5 | Dev: Configure items relating to application rate |  | 50h | 2009-04-06 | 2009-04-14 | 251 |  | 2009-04-02 | 2009-04-10 | 50h | 25.25d | 0d |  | Justin [80%] | 40h | 4,600 | 4,600 | 253 | MDSS106 |  |  |
| 254 | 1.23.4.1.6 | Dev: Configure items relating to application rate |  | 20h | 2009-05-15 | 2009-05-19 | 252, 253 |  | 2009-05-13 | 2009-05-15 | 20h | 30.25d |  |  | Darrell [80%] | 16h | 1,840 | 1,840 | 254 | MDSS106 |  |  |
| 255 | 1.23.4.1.7 | Dev: IRS - CRUD |  | 28.23h | 2009-04-16 | 2009-04-22 | 228 |  | 2009-04-14 | 2009-04-20 | 28.23h | 46d | 0d |  | Nathan [85%] | 24h | 2,760 | 2,760 | 255 | MDSS027 |  |  |
| 256 | 1.23.4.1.8 | Dev: IRS - dynamic query |  | 40h | 2009-04-14 | 2009-04-21 | 253, 209 |  | 2009-04-10 | 2009-04-17 | 40h | 25.25d | 0d | start no earlier than 2009-03-16 | Justin [80%] | 32h | 3,680 | 3,680 | 257 | MDSS132 |  |  |
| 257 | 1.23.4.2 | **Larvaciding** |  | 4.71d | 2009-04-30 | 2009-05-07 |  |  | 2009-04-10 | 2009-04-17 | 4.71d | 13.24d |  |  |  | 32h | 3,680 | 3,680 | 258 |  |  |  |
| 258 | 1.23.4.2.1 | Dev: larviciding - CRUD |  | 37.65h | 2009-04-30 | 2009-05-07 | 245 |  | 2009-04-10 | 2009-04-17 | 37.65h | 13.24d | 0d |  | Thomas (Oz) [85%] | 32h | 3,680 | 3,680 | 259 | MDSS031 | 8 days |  |
| 259 | 1.23.4.3 | **ITN** |  | 28.76d | 2009-05-04 | 2009-06-11 |  |  | 2009-04-17 | 2009-05-22 | 25.53d | 13.24d |  |  |  | 280h | 23,000 | 23,000 | 260 |  |  |  |
| 260 | 1.23.4.3.1 | Dev: ITN aggregated data - CRUD |  | 47.06h | 2009-05-07 | 2009-05-15 | 258 |  | 2009-04-17 | 2009-04-27 | 47.06h | 13.24d | 0d |  | Thomas (Oz) [85%] | 40h | 4,600 | 4,600 | 261 | MDSS080 | 5 days |  |
| 261 | 1.23.4.3.2 | Dev: ITN aggregated data - query |  | 8h | 2009-05-15 | 2009-05-18 | 260 |  | 2009-04-27 | 2009-04-28 | 8h | 13.24d | 0d |  |  | 40h |  |  | 262 | MDSS136 |  |  |
| 262 | 1.23.4.3.3 | Dev: ITN facility distribution - CRUD |  | 56.47h | 2009-05-18 | 2009-05-27 | 261 |  | 2009-04-28 | 2009-05-07 | 56.47h | 13.24d | 0d |  | Thomas (Oz) [85%] | 48h | 5,520 | 5,520 | 263 | MDSS030 | 5 days |  |
| 263 | 1.23.4.3.4 | Dev: ITN community distribution - CRUD |  | 37.65h | 2009-05-27 | 2009-06-02 | 262 |  | 2009-05-07 | 2009-05-13 | 37.65h | 13.24d | 0d |  | Thomas (Oz) [85%] | 32h | 3,680 | 3,680 | 264 | MDSS079 | 5 days |  |
| 264 | 1.23.4.3.5 | Dev: ITN by facility/community - query |  | 8h | 2009-06-02 | 2009-06-03 | 263, 210 |  | 2009-05-13 | 2009-05-14 | 8h | 13.24d | 0d |  |  | 40h |  |  | 265 | MDSS135 |  |  |
| 265 | 1.23.4.3.6 | Dev: ITN by household - CRUD |  | 47.06h | 2009-06-03 | 2009-06-11 | 263, 264 |  | 2009-05-14 | 2009-05-22 | 47.06h | 13.24d |  | start no earlier than 2009-03-21 | Thomas (Oz) [85%] | 40h | 4,600 | 4,600 | 266 | MDSS082 | 5 days | 10 |
| 266 | 1.23.4.3.7 | Dev: ITN by household - query |  | 40h | 2009-05-04 | 2009-05-08 | 250, 211 |  | 2009-05-04 | 2009-05-08 | 40h | 28d | 0d | start no earlier than 2009-04-10 | TBD | 40h | 4,600 | 4,600 | 267 | MDSS138 |  | 10 |
| 267 | 1.23.4.4 | **Intervention Planning** |  | 7.5d | 2009-04-21 | 2009-05-01 |  |  | 2009-04-17 | 2009-04-28 | 7.5d | 25.25d |  |  |  | 48h | 5,520 | 5,520 | 268 |  |  |  |
| 268 | 1.23.4.4.1 | Dev: BE - Intervention planning |  | 30h | 2009-04-21 | 2009-04-27 | 256 |  | 2009-04-17 | 2009-04-23 | 30h | 25.25d | 0d |  | Justin [80%] | 24h | 2,760 | 2,760 | 269 | MDSS077 |  |  |
| 269 | 1.23.4.4.2 | Dev: GUI - Intervention planning |  | 30h | 2009-04-27 | 2009-05-01 | 268, 230 |  | 2009-04-23 | 2009-04-28 | 30h | 30.25d | 0d |  | Darrell [80%] | 24h | 2,760 | 2,760 | 270 | MDSS077 |  |  |
| 270 | 1.23.4.5 | **IPT** |  | 15d | 2009-04-27 | 2009-05-18 |  |  | 2009-04-23 | 2009-05-28 | 25d | 25.25d |  |  |  | 128h | 14,720 | 14,720 | 271 |  |  |  |
| 271 | 1.23.4.5.1 | Dev: IPT aggregated - CRUD |  | 20h | 2009-04-27 | 2009-04-29 | 268 |  | 2009-04-23 | 2009-04-27 | 20h | 25.25d | 0d |  | Justin [80%] | 16h | 1,840 | 1,840 | 272 | MDSS069 |  |  |
| 272 | 1.23.4.5.2 | Dev: IPT aggregated - CRUD |  | 20h | 2009-04-30 | 2009-05-04 | 271 |  | 2009-05-21 | 2009-05-25 | 20h | 39d | 0d |  | Darrell [80%] | 16h | 1,840 | 1,840 | 273 | MDSS069 |  |  |
| 273 | 1.23.4.5.3 | Dev: IPT aggregated - query |  | 40h | 2009-04-30 | 2009-05-06 | 212, 271 |  | 2009-04-27 | 2009-05-04 | 40h | 25.25d | 0d |  | Justin [80%] | 32h | 3,680 | 3,680 | 274 | MDSS131 |  |  |
| 274 | 1.23.4.5.4 | Dev: BE - IPT individual - CRUD |  | 20h | 2009-05-07 | 2009-05-11 | 273 |  | 2009-05-04 | 2009-05-07 | 20h | 25.25d | 0d |  | Justin [80%] | 16h | 1,840 | 1,840 | 275 | MDSS081 |  | 10 |
| 275 | 1.23.4.5.5 | Dev: GUI - IPT individual - CRUD |  | 20h | 2009-05-04 | 2009-05-06 | 272 |  | 2009-05-25 | 2009-05-28 | 20h | 39d |  |  | Darrell [80%] | 16h | 1,840 | 1,840 | 276 | MDSS081 |  | 10 |
| 276 | 1.23.4.5.6 | Dev: IPT individual - query |  | 40h | 2009-05-11 | 2009-05-18 | 213, 274 |  | 2009-05-07 | 2009-05-14 | 40h | 25.25d | 0d |  | Justin [80%] | 32h | 3,680 | 3,680 | 277 | MDSS130 |  | 10 |
| 277 | 1.23.5 | Dev: BE - Stock Control |  | 28.23h | 2009-04-22 | 2009-04-27 | 255 |  | 2009-04-20 | 2009-04-23 | 28.23h | 46d |  |  | Nathan [85%] | 24h | 2,760 | 2,760 | 278 | MDSS032 |  |  |
| 278 | 1.23.6 | Dev: GUI - Stock Control |  | 32h | 2009-05-11 | 2009-05-14 | 266 |  | 2009-05-11 | 2009-05-14 | 32h | 28d | 0d |  | TBD | 32h | 3,680 | 3,680 | 279 | MDSS032 |  |  |
| 279 | 2 | Dev: Backup the data and configuration file |  | 40h | 2009-05-15 | 2009-05-21 | 278 |  | 2009-05-15 | 2009-05-21 | 40h | 28d |  |  | TBD | 40h | 4,600 | 4,600 | 280 | MDSS065 |  |  |
| 280 | 3 | Dev: Select the user language | milestone | 0h | 2009-02-02 A | 2009-02-02 A |  | 100% | 2009-02-02 | 2009-02-02 | 0h |  |  |  |  |  |  |  | 281 | MDSS118 |  |  |
| 281 | 4 | Dev: Change date/time format |  | 10h | 2009-05-18 | 2009-05-19 | 276 |  | 2009-05-14 | 2009-05-15 | 10h | 25.25d | 0d |  | Justin [80%] | 8h | 920 | 920 | 282 | MDSS120 |  |  |

| ID | WBS | Task | Duration | Start | Finish | Predecessors | Complete | Remaining | Baseline start | Baseline finish | Baseline duration | Total slack | Free slack | Constraint | Resources | Work | Actual work | Text4 | Text1 | Text3 | Text2 |
| --- | --- | --- | --- | --- | --- | --- | --- | --- | --- | --- | --- | --- | --- | --- | --- | --- | --- | --- | --- | --- | --- |
| 282 | 5 | **Complete Test Cases** | 39.25d? | 2009-02-11 A | 2009-04-07 |  | 37% | 24.67d? | 2009-02-11 | 2009-04-01 | 35.25d? | 60.75d |  |  |  | 192h | 48h | 283 |  |  |  |
| 283 | 5.1 | **Entomology** | 4d? | 2009-03-17 | 2009-03-23 |  |  |  | 2009-03-17 | 2009-03-23 | 4d? | 71.88d |  |  |  | 16h |  | 284 |  |  |  |
| 284 | 5.1.1 | TC: Biochemical cut-off values | 1d? | 2009-03-17 | 2009-03-18 | 184 |  |  | 2009-03-17 | 2009-03-18 | 1d? | 71.88d | 0d |  | Mike [50%] | 4h |  | 285 | MDSS014 |  |  |
| 285 | 5.1.2 | TC: Adult knock down assay | 1d? | 2009-03-18 | 2009-03-19 | 284 |  |  | 2009-03-18 | 2009-03-19 | 1d? | 71.88d | 0d |  | Mike [50%] | 4h |  | 286 | MDSS006 |  |  |
| 286 | 5.1.3 | TC: Larvae discriminating dose assay | 1d? | 2009-03-19 | 2009-03-20 | 285 |  |  | 2009-03-19 | 2009-03-20 | 1d? | 71.88d | 0d |  | Mike [50%] | 4h |  | 287 | MDSS008 | 10 |  |
| 287 | 5.1.4 | TC: Efficacy assay | 1d? | 2009-03-20 | 2009-03-23 | 286 |  |  | 2009-03-20 | 2009-03-23 | 1d? | 71.88d |  |  | Mike [50%] | 4h |  | 288 | MDSS025 |  |  |
| 288 | 5.2 | **System** | 23d | 2009-02-11 A | 2009-03-13 |  | 58% | 9.58d | 2009-02-11 | 2009-02-26 | 11.25d | 77d |  |  |  | 48h | 28h | 289 |  |  |  |
| 289 | 5.2.1 | TC: Configure system variables | 10h | 2009-02-12 A | 2009-02-13 A | 302 | 100% |  | 2009-02-12 | 2009-02-13 | 10h |  |  | start no earlier than 2009-02-11 | Sanika [40%] | 4h | 4h | 290 | MDSS109 |  | 1 day |
| 290 | 5.2.2 | TC: maintain catalogues | 10h | 2009-02-13 A | 2009-02-16 A | 289 | 100% |  | 2009-02-13 | 2009-02-16 | 10h |  |  |  | Sanika [40%] | 4h | 4h | 291 | MDSS103 |  |  |
| 291 | 5.2.3 | TC: Epi week - set or change | 10h | 2009-02-16 A | 2009-02-17 A | 290 | 100% |  | 2009-02-16 | 2009-02-17 | 10h |  |  |  | Sanika [40%] | 4h | 4h | 292 | MDSS119 |  | 2 days |
| 292 | 5.2.4 | TC: define season start and end dates | 10h | 2009-02-23 A | 2009-02-24 A | 291 | 100% |  | 2009-02-18 | 2009-02-19 | 10h |  |  | start no earlier than 2009-02-21 | Sanika [40%] | 4h | 4h | 293 | MDSS127 |  | 2 days |
| 293 | 5.2.5 | TC: enter/maintain people in the system | 10h | 2009-02-24 A | 2009-02-25 A | 292 | 100% |  | 2009-02-19 | 2009-02-20 | 10h |  |  | start no earlier than 2009-02-21 | Sanika [40%] | 4h | 4h | 294 | MDSS114 |  |  |
| 294 | 5.2.6 | TC: create synonyms for imported Geo entities | 10h | 2009-02-25 | 2009-02-26 | 293 |  |  | 2009-02-20 | 2009-02-23 | 10h | 78.25d | 0d |  | Sanika [40%] | 4h |  | 295 | MDSS112 |  |  |
| 295 | 5.2.7 | TC: User Admin Screen for account management | 10h | 2009-02-11 A | 2009-02-12 A |  | 100% |  | 2009-02-11 | 2009-02-12 | 10h |  |  | start no earlier than 2009-02-11 | Saul [40%] | 4h | 4h | 296 | MDSS142 |  | 3 days |
| 296 | 5.2.8 | TC: user Admin Screen for Role assignment | 10h | 2009-02-12 A | 2009-02-13 A | 295 | 100% |  | 2009-02-12 | 2009-02-13 | 10h |  |  | start no earlier than 2009-02-01 | Saul [40%] | 4h | 4h | 297 | MDSS144 |  | 2 days |
| 297 | 5.2.9 | TC: Change date/time format | 10h | 2009-03-09 | 2009-03-10 | 296 |  |  | 2009-02-19 | 2009-02-20 | 10h | 77d | 0d | start no earlier than 2009-02-21 | Saul [40%] | 4h |  | 301 | MDSS120 |  |  |
| 298 | 5.2.10 | TC: Change geo root | 10h | 2009-03-10 | 2009-03-11 | 297 |  |  | 2009-02-20 | 2009-02-23 | 10h | 77d | 0d |  | Saul [40%] | 4h |  | 302 | MDSS122 |  |  |
| 299 | 5.2.11 | TC: Select the user language | 10h | 2009-03-11 | 2009-03-12 | 298 |  |  | 2009-02-23 | 2009-02-24 | 10h | 77d | 0d |  | Saul [40%] | 4h |  | 303 | MDSS118 |  |  |
| 300 | 5.2.12 | TC: Change date/time format | 10h | 2009-03-12 | 2009-03-13 | 299 |  |  | 2009-02-25 | 2009-02-26 | 10h | 77d |  |  | Saul [40%] | 4h |  | 304 | MDSS120 |  |  |
| 301 | 5.3 | **Indicator Survey** | 1.25d | 2009-02-11 A | 2009-02-12 A |  | 100% |  | 2009-02-11 | 2009-02-12 | 1.25d |  |  |  |  | 4h | 4h | 305 |  |  |  |
| 302 | 5.3.1 | TC: Indicator survey - CRUD | 10h | 2009-02-11 A | 2009-02-12 A |  | 100% |  | 2009-02-11 | 2009-02-12 | 10h |  |  | start no earlier than 2009-02-11 | Sanika [40%] | 4h | 4h | 306 | MDSS026 |  |  |
| 303 | 5.4 | **Case Surveilance** | 68.58h | 2009-03-18 | 2009-03-31 |  |  |  | 2009-03-12 | 2009-03-25 | 68.58h | 37.71d |  |  |  | 48h |  | 308 |  |  |  |
| 304 | 5.4.1 | TC: aggregated cases - CRUD | 5.71h | 2009-03-18 | 2009-03-19 | 152 |  |  | 2009-03-12 | 2009-03-13 | 5.71h | 37.71d | 0d | start no earlier than 2009-02-01 | Marlize [70%] | 4h |  | 309 | MDSS002 |  | 5 days |
| 305 | 5.4.2 | TC: calculate CFR | 5.71h | 2009-03-19 | 2009-03-20 | 304 |  |  | 2009-03-13 | 2009-03-16 | 5.71h | 37.71d | 0d |  | Marlize [70%] | 4h |  | 310 | MDSS087 |  | 4 days |
| 306 | 5.4.3 | TC: aggregated cases - dynamic query | 5.71h | 2009-03-20 | 2009-03-20 | 305 |  |  | 2009-03-16 | 2009-03-16 | 5.71h | 37.71d | 0d |  | Marlize [70%] | 4h |  | 311 | MDSS129 |  | 5 days |
| 307 | 5.4.4 | TC: Input or modify population data | 5.71h | 2009-03-20 | 2009-03-23 | 306 |  |  | 2009-03-16 | 2009-03-17 | 5.71h | 37.71d | 0d | start no earlier than 2009-02-01 | Marlize [70%] | 4h |  | 312 | MDSS003 |  | 4 days |
| 308 | 5.4.5 | TC: Import population or annual growth rate data | 5.71h | 2009-03-23 | 2009-03-24 | 307 |  |  | 2009-03-17 | 2009-03-18 | 5.71h | 37.71d | 0d |  | Marlize [70%] | 4h |  | 313 | MDSS083 |  |  |
| 309 | 5.4.6 | TC: input/modify outbreak thresholds | 5.71h | 2009-03-24 | 2009-03-24 | 308 |  |  | 2009-03-18 | 2009-03-18 | 5.71h | 37.71d | 0d |  | Marlize [70%] | 4h |  | 314 | MDSS105 |  | 5 days |
| 310 | 5.4.7 | TC :import outbreak thresholds | 5.71h | 2009-03-24 | 2009-03-25 | 309 |  |  | 2009-03-18 | 2009-03-19 | 5.71h | 37.71d | 0d |  | Marlize [70%] | 4h |  | 315 | MDSS085 |  | 5 days |
| 311 | 5.4.8 | TC: Calculate annual or seasonal population | 5.71h | 2009-03-25 | 2009-03-26 | 310 |  |  | 2009-03-19 | 2009-03-20 | 5.71h | 37.71d | 0d |  | Marlize [70%] | 4h |  | 316 | MDSS073 |  | 5 days |
| 312 | 5.4.9 | TC: calculate incidence | 5.71h | 2009-03-26 | 2009-03-27 | 311 |  |  | 2009-03-20 | 2009-03-23 | 5.71h | 37.71d | 0d |  | Marlize [70%] | 4h |  | 317 | MDSS086 |  | 5 days |
| 313 | 5.4.10 | TC: individual cases - CRUD | 5.71h | 2009-03-27 | 2009-03-27 | 312 |  |  | 2009-03-23 | 2009-03-23 | 5.71h | 37.71d | 0d |  | Marlize [70%] | 4h |  | 318 | MDSS001 |  | 5 days |
| 314 | 5.4.11 | TC: Outbreak notification | 5.71h | 2009-03-27 | 2009-03-30 | 313 |  |  | 2009-03-23 | 2009-03-24 | 5.71h | 37.71d | 0d |  | Marlize [70%] | 4h |  | 319 | MDSS124 |  | 5 days |
| 315 | 5.4.12 | TC: individual case - dynamic query | 5.71h | 2009-03-30 | 2009-03-31 | 314 |  |  | 2009-03-24 | 2009-03-25 | 5.71h | 37.71d | 0d |  | Marlize [70%] | 4h |  | 320 | MDSS128 |  | 5 days |

| ID | WBS | Task | Duration | Start | Finish | Predecessors | Complete | Remaining | Baseline start | Baseline finish | Baseline duration | Total slack | Free slack | Constraint | Resources | Work | Actual work | Text4 | Text1 | Text2 | Text3 |
| --- | --- | --- | --- | --- | --- | --- | --- | --- | --- | --- | --- | --- | --- | --- | --- | --- | --- | --- | --- | --- | --- |
| 316 | 5.5 | **Intervention monitoring** | 314.04h | 2009-02-11 A | 2009-04-07 |  | 40% | 188.42h | 2009-02-11 | 2009-04-01 | 282.04h | 60.75d |  |  |  | 76h | 16h | 321 |  |  |  |
| 317 | 5.5.1 | **IRS** | 34.29h | 2009-03-31 | 2009-04-06 |  |  |  | 2009-03-25 | 2009-03-31 | 34.29h | 37.71d |  |  |  | 24h |  | 322 |  |  |  |
| 318 | 5.5.1.1 | TC: enter/maintain spray team member | 5.71h | 2009-03-31 | 2009-03-31 | 315 |  |  | 2009-03-25 | 2009-03-25 | 5.71h | 37.71d | 0d |  | Marlize [70%] | 4h |  | 323 | MDSS113 |  |  |
| 319 | 5.5.1.2 | TC: enter/maintain IRS teams | 5.71h | 2009-03-31 | 2009-04-01 | 318 |  |  | 2009-03-25 | 2009-03-26 | 5.71h | 37.71d | 0d |  | Marlize [70%] | 4h |  | 324 | MDSS141 |  |  |
| 320 | 5.5.1.3 | TC: input or modify IRS targets | 5.71h | 2009-04-01 | 2009-04-02 | 319 |  |  | 2009-03-26 | 2009-03-27 | 5.71h | 37.71d | 0d |  | Marlize [70%] | 4h |  | 325 | MDSS028 |  |  |
| 321 | 5.5.1.4 | TC: Configure items relating to application rate | 5.71h | 2009-04-02 | 2009-04-03 | 320 |  |  | 2009-03-27 | 2009-03-30 | 5.71h | 37.71d | 0d |  | Marlize [70%] | 4h |  | 326 | MDSS106 |  |  |
| 322 | 5.5.1.5 | TC: IRS - CRUD | 5.71h | 2009-04-03 | 2009-04-03 | 321 |  |  | 2009-03-30 | 2009-03-30 | 5.71h | 37.71d | 0d |  | Marlize [70%] | 4h |  | 327 | MDSS027 |  |  |
| 323 | 5.5.1.6 | TC: IRS - dynamic query | 5.71h | 2009-04-03 | 2009-04-06 | 322 |  |  | 2009-03-30 | 2009-03-31 | 5.71h | 37.71d | 0d |  | Marlize [70%] | 4h |  | 328 | MDSS132 |  |  |
| 324 | 5.5.2 | **Larvaciding** | 20h | 2009-02-11 A | 2009-02-13 A |  | 100% |  | 2009-02-11 | 2009-02-13 | 20h |  |  |  |  | 4h | 4h | 329 |  |  |  |
| 325 | 5.5.2.1 | TC: larviciding - CRUD | 20h | 2009-02-11 A | 2009-02-13 A |  | 100% |  | 2009-02-11 | 2009-02-13 | 20h |  |  | start no earlier than 2009-02-11 | Lars [20%] | 4h | 4h | 330 | MDSS031 | 8 days |  |
| 326 | 5.5.3 | **ITN** | 80h | 2009-02-26 | 2009-03-12 |  |  |  | 2009-02-23 | 2009-03-06 | 70h | 78.25d |  |  |  | 32h |  | 331 |  |  |  |
| 327 | 5.5.3.1 | TC: ITN aggregated data - CRUD | 10h | 2009-02-26 | 2009-02-27 | 294, 331 |  |  | 2009-02-23 | 2009-02-24 | 10h | 78.25d | 0d |  | Sanika [40%] | 4h |  | 332 | MDSS080 | 5 days |  |
| 328 | 5.5.3.2 | TC: ITN aggregated data - query | 10h | 2009-03-02 | 2009-03-03 | 327 |  |  | 2009-02-25 | 2009-02-26 | 10h | 78.25d | 0d |  | Sanika [40%] | 4h |  | 333 | MDSS136 |  |  |
| 329 | 5.5.3.3 | TC: ITN facility distribution - CRUD | 10h | 2009-03-03 | 2009-03-04 | 328 |  |  | 2009-02-26 | 2009-02-27 | 10h | 78.25d | 0d |  | Sanika [40%] | 4h |  | 334 | MDSS030 | 5 days |  |
| 330 | 5.5.3.4 | TC: ITN community distribution - CRUD | 10h | 2009-03-04 | 2009-03-05 | 329 |  |  | 2009-02-27 | 2009-03-02 | 10h | 78.25d | 0d |  | Sanika [40%] | 4h |  | 335 | MDSS079 | 5 days |  |
| 331 | 5.5.3.5 | TC:Indicator survey query | 10h | 2009-03-05 | 2009-03-06 | 208, 330, 294 |  |  |  |  |  | 78.25d | 0d |  | Sanika [40%] | 4h |  | 307 | MDSS140 |  |  |
| 332 | 5.5.3.6 | TC: ITN by facility/community - query | 10h | 2009-03-09 | 2009-03-10 | 331 |  |  | 2009-03-02 | 2009-03-03 | 10h | 78.25d | 0d |  | Sanika [40%] | 4h |  | 336 | MDSS135 |  |  |
| 333 | 5.5.3.7 | TC: ITN by household - CRUD | 10h | 2009-03-10 | 2009-03-11 | 332 |  |  | 2009-03-04 | 2009-03-05 | 10h | 78.25d | 0d | start no earlier than 2009-02-09 | Sanika [40%] | 4h |  | 337 | MDSS082 | 5 days | 10 |
| 334 | 5.5.3.8 | TC: ITN by household - query | 10h | 2009-03-11 | 2009-03-12 | 333 |  |  | 2009-03-05 | 2009-03-06 | 10h | 78.25d |  | start no earlier than 2009-02-09 | Sanika [40%] | 4h |  | 338 | MDSS138 |  | 10 |
| 335 | 5.5.4 | **Intervention Planning** | 5.71h | 2009-04-06 | 2009-04-07 |  |  |  | 2009-03-31 | 2009-04-01 | 5.71h | 37.71d |  |  |  | 4h |  | 339 |  |  |  |
| 336 | 5.5.4.1 | TC: Intervention planning | 5.71h | 2009-04-06 | 2009-04-07 | 323 |  |  | 2009-03-31 | 2009-04-01 | 5.71h | 37.71d | 0d |  | Marlize [70%] | 4h |  | 340 | MDSS077 |  |  |
| 337 | 5.5.5 | **IPT** | 40h | 2009-02-13 A | 2009-02-20 A |  | 100% |  | 2009-02-13 | 2009-02-20 | 40h |  |  |  |  | 8h | 8h | 341 |  |  |  |
| 338 | 5.5.5.1 | TC: IPT aggregated - CRUD | 20h | 2009-02-13 A | 2009-02-17 A | 325 | 100% |  | 2009-02-13 | 2009-02-17 | 20h |  |  |  | Lars [20%] | 4h | 4h | 342 | MDSS069 |  |  |
| 339 | 5.5.5.2 | TC: IPT individual - CRUD | 20h | 2009-02-18 A | 2009-02-20 A | 338 | 100% |  | 2009-02-18 | 2009-02-20 | 20h |  |  |  | Lars [20%] | 4h | 4h | 343 | MDSS081 |  | 10 |

| ID | WBS | Task | Type | Duration | Start | Finish | Predecessors | Complete | Baseline start | Baseline finish | Baseline duration | Total slack | Free slack | Constraint | Resources | Work | Actual work | Cost | Baseline cost | Text4 | Text1 |
| --- | --- | --- | --- | --- | --- | --- | --- | --- | --- | --- | --- | --- | --- | --- | --- | --- | --- | --- | --- | --- | --- |
| 340 | 5.5.6 | **Stock Control** |  | 20h | 2009-02-20 A | 2009-02-24 A |  | 100% | 2009-02-20 | 2009-02-24 | 20h |  |  |  |  | 4h | 4h |  |  | 344 |  |
| 341 | 5.5.6.1 | TC: Stock Control |  | 20h | 2009-02-20 A | 2009-02-24 A | 339 | 100% | 2009-02-20 | 2009-02-24 | 20h |  |  |  | Lars [20%] | 4h | 4h |  |  | 345 | MDSS032 |
| 342 | 6 | Create standard queries and reports |  | 114.28h | 2009-04-14 | 2009-05-05 | 213 |  | 2009-04-08 | 2009-04-29 | 114.28h | 40.75d |  |  | Marlize [70%] | 80h |  |  |  | 346 |  |
| 343 | 7 | Receive all historical entomological data | milestone | 8h | 2009-03-06 | 2009-03-06 |  |  | 2009-05-04 | 2009-05-04 | 8h | 81d | 0d | start no earlier than 2009-03-06 | MRC | 8h |  |  |  | 347 |  |
| 344 | 8 | Import historical entomological data |  | 8h | 2009-03-09 | 2009-03-09 | 343 |  | 2009-05-05 | 2009-05-05 | 8h | 81d |  |  |  |  |  |  |  | 348 |  |
| 345 | 9 | Receive all historical IRS data | milestone | 8h | 2009-05-04 | 2009-05-04 |  |  | 2009-05-04 | 2009-05-04 | 8h | 40d | 0d | start no earlier than 2009-05-04 |  |  |  |  |  | 349 |  |
| 346 | 10 | Import all historical IRS data |  | 8h | 2009-05-05 | 2009-05-05 | 345 |  | 2009-05-05 | 2009-05-05 | 8h | 40d |  |  |  |  |  |  |  | 350 |  |
| 347 | 11 | Order MDSS Hardware | milestone | 0h | 2009-04-01 | 2009-04-01 |  |  | 2009-02-02 | 2009-02-02 | 0h | 65d |  | start no earlier than 2009-04-01 | Mike |  |  |  |  | 351 |  |
| 348 | 12 | Appoint MDSS Administrators | milestone | 0h | 2009-06-01 | 2009-06-01 |  |  | 2009-02-02 | 2009-02-02 | 0h | 22d |  | start no earlier than 2009-06-01 | Mike |  |  |  |  | 352 |  |
| 349 | 13 | Complete system translation into Portuguese |  | 20d | 2009-04-06 | 2009-05-01 |  |  | 2009-04-06 | 2009-05-01 | 20d | 42d |  | start no earlier than 2009-04-06 | Mike [5%] | 8h |  |  |  | 353 |  |
| 350 | 14 | Dev: Installation (minimal or full) |  | 40h | 2009-05-19 | 2009-05-26 | 281 |  | 2009-05-15 | 2009-05-22 | 40h | 25.25d |  |  | Justin | 40h |  | 4,600 | 4,600 | 354 | SYS12 |
| 351 | 15 | Complete Test and Fix Cycle |  | 20d | 2009-05-18 | 2009-06-12 |  |  | 2009-05-18 | 2009-06-12 | 20d | 10d | 0d | start no earlier than 2009-05-18 |  |  |  |  |  | 355 |  |
| 352 | 16 | Implementation planning |  | 16h | 2009-06-15 | 2009-06-16 | 351 |  | 2009-06-15 | 2009-06-16 | 16h | 10d |  |  |  | 16h |  |  |  | 356 |  |
| 353 | 17 | Project Buffer |  | 10d | 2009-06-16 | 2009-06-29 |  |  | 2009-06-16 | 2009-06-29 | 10d | 0d |  | start no earlier than 2009-06-16 |  | 80h |  |  |  | 357 |  |
| 354 | 18 | Ready for Pilot Roll-Out | milestone | 8h | 2009-06-30 | 2009-06-30 | 353 |  | 2009-06-30 | 2009-06-30 | 8h | 0d |  |  |  |  |  |  |  | 358 |  |
