# MDSS

Schedule from MS Project, 2009-02-02 to 2009-08-03, costs in USD, A marks actual dates.
Misty Heights
Test site is available

## Calendars

- Standard: Mon-Fri 08:00-12:00, 13:00-17:00; Sat-Sun off.

## Resources

| Resource | Group | Rate |
| --- | --- | --- |
| Nathan | Terra Frame | 115 |
| Thomas (Oz) | Terra Frame | 115 |
| Justin | Terra Frame | 115 |
| Darrell | Terra Frame | 115 |
| MRC | Supplier |  |
| Naifeh | Terra Frame |  |
| Marlize | Project |  |
| Mike | Project |  |
| Eric | Terra Frame |  |
| TBD | Terra Frame | 115 |
| Saul | Project |  |
| Sanika | Project |  |
| Lars | Project |  |
| Miguel | Project |  |
| Dave | Project |  |

## Schedule

| ID | WBS | Task | Type | Duration | Start | Finish | Predecessors | Complete | Remaining | Baseline start | Baseline finish | Baseline duration | Total slack | Free slack | Constraint | Resources | Work | Actual work | Cost | Baseline cost | Actual cost | Text1 | Text2 | Text4 | Text3 |
| --- | --- | --- | --- | --- | --- | --- | --- | --- | --- | --- | --- | --- | --- | --- | --- | --- | --- | --- | --- | --- | --- | --- | --- | --- | --- |
| 1 | 1 | **MDSS Implementation** |  | 130.65d? | 2009-02-02 A | 2009-08-03 |  | 75% | 33.31d? | 2009-02-02 | 2009-05-28 | 83.25d? | 0d |  |  |  | 4140.46h | 2768.06h | 237,659.25 | 257,416.04 | 131,721.27 |  |  |  |  |
| 2 | 1.1 | **Create Prototype (Entomology)** |  | 61d? | 2009-02-02 A | 2009-04-27 A |  | 100% |  | 2009-02-02 | 2009-03-12 | 28.23d? |  |  |  |  | 1338.6h | 1338.6h | 75,279.25 | 74,152.04 | 75,279.25 |  |  |  |  |
| 3 | 1.1.1 | **System requirements** |  | 61d? | 2009-02-02 A | 2009-04-27 A |  | 100% |  | 2009-02-02 | 2009-03-09 | 26d? |  |  |  |  | 775.4h | 775.4h | 45,471.25 | 31,372.04 | 45,471.25 |  |  |  |  |
| 4 | 1.1.1.1 | Dev: Ontology Schema MIRO |  | 15.5d | 2009-02-02 A | 2009-02-23 A |  | 100% |  | 2009-02-02 | 2009-02-09 | 6d |  |  |  | Thomas (Oz) [85%] | 105.4h | 105.4h | 12,121 | 4,692 | 12,121 | SYS08 | 5 days |  |  |
| 5 | 1.1.1.2 | Dev: Geography MOJO attributes (PostGIS phase 1) |  | 20d | 2009-02-02 A | 2009-02-27 A |  | 100% |  | 2009-02-02 | 2009-02-09 | 5.88d? |  |  | finish no earlier than 2009-02-24 | Nathan [85%] | 136h | 136h | 15,640.25 | 4,600.04 | 15,640.25 | SYS03-01 | 7 days |  |  |
| 6 | 1.1.1.3 | Dev: Geography functions integrated into the query API |  | 5d | 2009-03-02 A | 2009-03-06 A | 5 | 100% |  | 2009-02-09 | 2009-02-17 | 5.88d? |  |  | finish no earlier than 2009-03-06 | Nathan [85%] | 34h | 34h | 3,910 | 4,600 | 3,910 | SYS03-02 | 7 days |  |  |
| 7 | 1.1.1.4 | Dev: GIS visual tool integration |  | 8d | 2009-02-02 A | 2009-03-04 A |  | 100% |  | 2009-02-10 | 2009-02-19 | 7.06d? |  |  |  | Naifeh | 64h | 64h |  | 5,520 |  | SYS10 | 6 days |  |  |
| 8 | 1.1.1.5 | Dev: Geoserver integration |  | 8d | 2009-02-12 A | 2009-03-03 A |  | 100% |  | 2009-02-19 | 2009-03-02 | 7.06d? |  |  | finish no earlier than 2009-03-03 | Naifeh | 64h | 64h |  | 5,520 |  | SYS11 | 6 days |  |  |
| 9 | 1.1.1.6 | Dev: DHTML tree widget selection and integration |  | 8.5d | 2009-02-11 A | 2009-02-23 A |  | 100% |  | 2009-02-11 | 2009-02-17 | 5d? |  |  | start no earlier than 2009-02-11 | Naifeh | 68h | 68h |  |  |  | SYS02 | 5 days | 10 |  |
| 10 | 1.1.1.7 | Dev: import/export an XLS file with a pre-populated headers |  | 11d | 2009-02-11 A | 2009-02-25 A |  | 100% |  | 2009-02-11 | 2009-02-18 | 6d? |  |  | start no earlier than 2009-02-11 | Eric | 88h | 88h |  |  |  | SYS04-01 | 2 days | 11 |  |
| 11 | 1.1.1.8 | Dev: Import XLS file. Map column headers to fields of a class |  | 2d? | 2009-02-20 A | 2009-02-23 A | 10 | 100% |  | 2009-02-19 | 2009-02-20 | 2d? |  |  |  | Eric | 16h | 16h |  |  |  | SYS04-02 | 2 days | 12 |  |
| 12 | 1.1.1.9 | Dev: Represent query criteria in back-end |  | 6d? | 2009-03-09 A | 2009-03-16 A | 6 | 100% |  | 2009-02-25 | 2009-03-03 | 5d? |  |  | finish no earlier than 2009-03-16 | Nathan | 48h | 48h | 5,520 |  | 5,520 | SYS06 | 5 days | 14 |  |
| 13 | 1.1.1.10 | Dev: Save query criteria to the database |  | 9d | 2009-04-14 A | 2009-04-27 A |  | 100% |  | 2009-03-04 | 2009-03-04 | 1d? |  |  | finish no earlier than 2009-04-22 | Nathan | 72h | 72h | 8,280 |  | 8,280 | SYS06-03 | 1 day | 15 |  |
| 14 | 1.1.1.11 | Dev: Generic GIS visualisation and output requirements |  | 88h | 2009-04-13 A | 2009-04-27 A | 19 | 100% |  | 2009-03-02 | 2009-03-09 | 47.06h |  |  | finish no earlier than 2009-03-27 | Naifeh | 80h | 80h |  | 4,600 |  | MDSS143 |  | 16 |  |
| 15 | 1.1.2 | **Prototype Use cases** |  | 45.5d? | 2009-02-09 A | 2009-04-13 A |  | 100% |  | 2009-02-09 | 2009-03-12 | 23.23d? |  |  |  |  | 563.2h | 563.2h | 29,808 | 42,780 | 29,808 |  |  | 17 |  |
| 16 | 1.1.2.1 | **Search for a geo entity** |  | 35.35d? | 2009-02-20 A | 2009-04-10 A |  | 100% |  | 2009-02-20 | 2009-03-12 | 14.12d? |  |  |  |  | 168h | 168h |  | 11,040 |  | MDSS101 |  | 18 |  |
| 17 | 1.1.2.1.1 | Dev: Search for a geo entity - ontology tree |  | 9d | 2009-02-20 A | 2009-03-09 A |  | 100% |  | 2009-02-20 | 2009-02-26 | 4.71d? |  |  | finish no earlier than 2009-03-09 | Naifeh | 72h | 72h |  | 3,680 |  | MDSS111 | 4 days | 19 |  |
| 18 | 1.1.2.1.2 | Dev: Search for a geo entity |  | 2d? | 2009-03-17 A | 2009-03-18 A | 6, 17 | 100% |  | 2009-02-26 | 2009-03-03 | 2.35d? |  |  | finish no earlier than 2009-03-18 | Naifeh | 16h | 16h |  | 1,840 |  | MDSS101 |  | 20 |  |
| 19 | 1.1.2.1.3 | Polish MDSS111 and MDSS101 |  | 80h | 2009-03-23 A | 2009-04-10 A |  | 100% |  |  |  |  |  |  | finish no earlier than 2009-04-10 | Naifeh | 80h | 80h |  |  |  | MDSS101 |  | 376 |  |
| 20 | 1.1.2.2 | Investigate widget libraries |  | 16h | 2009-02-09 A | 2009-02-10 A |  | 100% |  | 2009-02-09 | 2009-02-10 | 16h |  |  | start no earlier than 2009-02-07 | Darrell | 16h | 16h | 1,840 | 1,840 | 1,840 |  |  | 24 |  |
| 21 | 1.1.2.3 | Dev: login to MDSS |  | 4h | 2009-02-11 A | 2009-02-11 A | 20 | 100% |  | 2009-02-11 | 2009-02-11 | 4h |  |  |  | Darrell | 4h | 4h | 460 | 460 | 460 | MDSS107 |  | 25 |  |
| 22 | 1.1.2.4 | Dev: BE - Submit a mosquito collection |  | 224h | 2009-02-09 A | 2009-03-18 A |  | 100% |  | 2009-02-09 | 2009-02-11 | 20h |  |  | start no earlier than 2009-02-07 | Justin [7.1%] | 16h | 16h | 1,840 | 1,840 | 1,840 | MDSS024 |  | 26 |  |
| 23 | 1.1.2.5 | Dev: GUI - Submit a mosquito collection |  | 20h | 2009-02-18 A | 2009-02-20 A | 21, 22 | 100% |  | 2009-02-11 | 2009-02-13 | 20h |  |  | start no earlier than 2009-02-18 | Darrell [80%] | 16h | 16h | 1,840 | 1,840 | 1,840 | MDSS024 |  | 27 |  |
| 24 | 1.1.2.6 | Dev: GUI - Adult discriminating dose assay |  | 20h | 2009-02-24 A | 2009-02-26 A | 35, 23 | 100% |  | 2009-02-25 | 2009-02-27 | 20h |  |  |  | Darrell [80%] | 16h | 16h | 1,840 | 1,840 | 1,840 | MDSS004 |  | 35 |  |
| 25 | 1.1.2.7 | Dev: BE - Submit collection points |  | 1.25d? | 2009-02-11 A | 2009-02-12 A | 22 | 100% |  | 2009-02-11 | 2009-02-12 | 1.25d? |  |  |  | Justin [80%] | 8h | 8h | 920 | 920 | 920 | MDSS016 |  | 28 |  |
| 26 | 1.1.2.8 | Dev: BE - Resistance Mechanisms |  | 5.75d | 2009-02-23 A | 2009-03-02 A | 25 | 100% |  | 2009-02-12 | 2009-02-17 | 2.5d? |  |  | finish no earlier than 2009-03-02 | Justin [80%] | 36.8h | 36.8h | 4,232 | 1,840 | 4,232 | MDSS012 |  | 30 |  |
| 27 | 1.1.2.9 | Dev: GUI - Resistance Mechanisms |  | 48h | 2009-03-03 A | 2009-03-10 A | 26, 24 | 100% |  | 2009-02-17 | 2009-02-24 | 40h |  |  | finish no earlier than 2009-03-06 | Darrell [200%] | 32h | 32h | 3,680 | 3,680 | 3,680 | MDSS012 |  | 31 |  |
| 28 | 1.1.2.10 | Dev: GUI - Submit collection points |  | 10h | 2009-03-23 A | 2009-03-24 A | 33 | 100% |  | 2009-02-16 | 2009-02-17 | 10h |  |  | start no earlier than 2009-02-24 | Darrell [80%] | 8h | 8h | 920 | 920 | 920 | MDSS016 |  | 29 |  |
| 29 | 1.1.2.11 | Dev: GUI - Efficacy assay |  | 5h | 2009-03-13 A | 2009-03-16 A | 36 | 100% |  | 2009-03-18 | 2009-03-23 | 20h |  |  | finish no earlier than 2009-03-13 | Darrell [80%] | 4h | 4h | 460 | 1,840 | 460 | MDSS025 |  | 51 |  |
| 30 | 1.1.2.12 | Dev: BE - Resistance cut-off values |  | 1.25d? | 2009-02-20 A | 2009-02-23 A |  | 100% |  | 2009-02-17 | 2009-02-18 | 1.25d? |  |  |  | Justin [80%] | 8h | 8h | 920 | 920 | 920 | MDSS009 |  | 32 |  |
| 31 | 1.1.2.13 | Dev: GUI - Resistance cut-off values |  | 8h | 2009-02-27 A | 2009-02-27 A | 30 | 100% |  | 2009-02-24 | 2009-02-25 | 10h |  |  | start no earlier than 2009-02-27 | Darrell | 8h | 8h | 920 | 920 | 920 | MDSS009 |  | 33 |  |
| 32 | 1.1.2.14 | Dev: BE - Adult knock down assay |  | 1.25d? | 2009-03-16 A | 2009-03-17 A | 29, 44 | 100% |  | 2009-03-05 | 2009-03-09 | 1.5d? |  |  |  | Justin [80%] | 8h | 8h | 920 | 1,104 | 920 | MDSS006 |  | 46 |  |
| 33 | 1.1.2.15 | Dev: GUI - Adult knock down assay |  | 10h | 2009-03-20 A | 2009-03-23 A | 32, 34 | 100% |  | 2009-03-13 | 2009-03-16 | 15h |  |  |  | Darrell [80%] | 8h | 8h | 920 | 1,380 | 920 | MDSS006 |  | 47 |  |
| 34 | 1.1.2.16 | Dev: GUI - Larvae discriminating dose assay |  | 10h | 2009-03-19 A | 2009-03-20 A |  | 100% |  | 2009-03-16 | 2009-03-18 | 15h |  |  | start no earlier than 2009-03-19 | Darrell [80%] | 8h | 8h | 920 | 1,380 | 920 | MDSS008 |  | 49 | 10 |
| 35 | 1.1.2.17 | Dev: BE - Adult discriminating dose assay |  | 1.25d? | 2009-02-23 A | 2009-02-24 A | 30 | 100% |  | 2009-02-18 | 2009-02-20 | 2.5d? |  |  |  | Justin [80%] | 8h | 8h | 920 | 1,840 | 920 | MDSS004 |  | 34 |  |
| 36 | 1.1.2.18 | Dev: BE - Efficacy assay |  | 2.5d? | 2009-03-11 A | 2009-03-13 A |  | 100% |  | 2009-03-10 | 2009-03-13 | 2.5d? |  |  | start no earlier than 2009-03-11 | Justin [80%] | 16h | 16h | 1,840 | 1,840 | 1,840 | MDSS025 |  | 50 |  |
| 37 | 1.1.2.19 | Dev: Configure import interfaces |  | 32h | 2009-02-24 A | 2009-02-27 A |  | 100% |  | 2009-02-23 | 2009-02-24 | 10h |  |  | start no earlier than 2009-02-24 | Eric [50%] | 16h | 16h |  | 920 |  | MDSS100 |  | 36 |  |
| 38 | 1.1.2.20 | Dev: BE - Entomology dynamic query |  | 5d | 2009-03-23 A | 2009-03-27 A | 35 | 100% |  | 2009-02-24 | 2009-02-26 | 2.5d? |  |  | finish no earlier than 2009-03-27 | Naifeh | 40h | 40h |  | 1,840 |  | MDSS145 |  | 38 |  |
| 39 | 1.1.2.21 | Dev: Enquiry integration with selected reporting tool |  | 4d? | 2009-03-06 A | 2009-03-11 A | 26 | 100% |  | 2009-02-26 | 2009-03-04 | 4d? |  |  | finish no earlier than 2009-03-11 | Justin | 32h | 32h | 3,680 | 3,680 | 3,680 | SYS09 |  | 40 |  |
| 40 | 1.1.2.22 | Dev: Create formatted dynamic reports |  | 8h | 2009-03-12 A | 2009-03-12 A | 39 | 100% |  |  |  |  |  |  | start no earlier than 2009-03-12 | Justin [80%] | 6.4h | 6.4h | 736 |  | 736 | MDSS062 |  | 360 |  |
| 41 | 1.1.2.23 | Dev: MO Importer |  | 40h | 2009-03-02 A | 2009-03-06 A |  | 100% |  |  |  |  |  |  | start no earlier than 2009-03-02 | Eric | 40h | 40h |  |  |  |  |  | 359 |  |
| 42 | 1.1.2.24 | Dev: change visibility of fields on GUI |  | 40h | 2009-04-06 A | 2009-04-13 A | 141 | 100% |  | 2009-03-05 | 2009-03-11 | 32h |  |  | start no earlier than 2009-04-06 | Eric | 40h | 40h |  | 3,680 |  | MDSS117 |  | 41 |  |
| 43 | 1.2 | Required delivery of prototype | milestone | 8h | 2009-03-09 A | 2009-03-09 A |  | 100% |  | 2009-03-02 | 2009-03-02 | 8h |  |  | start no earlier than 2009-03-09 |  |  |  |  |  |  |  |  | 43 |  |
| 44 | 1.3 | Dev: BE - Larvae discriminating dose assay |  | 1.25d? | 2009-03-13 A | 2009-03-16 A | 36 | 100% |  | 2009-03-09 | 2009-03-10 | 1.5d? |  |  | finish no earlier than 2009-03-13 | Justin [80%] | 8h | 8h | 920 | 1,104 | 920 | MDSS008 |  | 48 | 10 |
| 45 | 1.4 | Dev: Entomology Resistance (bioassay) dynamic query |  | 40h | 2009-06-17 | 2009-06-23 | 152 |  |  | 2009-03-03 | 2009-03-05 | 20h | 9.15d | 0d | start no earlier than 2009-06-01 | Darrell | 40h |  | 4,600 | 1,840 |  | MDSS033 |  | 39 |  |
| 46 | 1.5 | Dev: Entomology (biochem/Mol assay) dynamic query |  | 40h | 2009-06-29 | 2009-07-03 | 156 |  |  |  |  |  | 5.65d | 0d | start no earlier than 2009-06-10 | Naifeh | 40h |  |  |  |  | MDSS145 |  | 377 |  |
| 47 | 1.6 | CR: BE - Submit Collection Points |  | 4h | 2009-03-18 A | 2009-03-18 A | 32 | 100% |  |  |  |  |  |  |  | Justin | 4h | 4h | 460 |  | 460 | MDSS016 |  | 361 |  |
| 48 | 1.7 | CR: BE - Mechanisms |  | 4h | 2009-03-18 A | 2009-03-18 A | 47 | 100% |  |  |  |  |  |  |  | Justin | 4h | 4h | 460 |  | 460 | MDSS012 |  | 362 |  |
| 49 | 1.8 | CR: GUI - Mechanisms |  | 4h | 2009-03-24 A | 2009-03-25 A | 48, 28 | 100% |  |  |  |  |  |  |  | Darrell | 4h | 4h | 460 |  | 460 | MDSS012 |  | 363 |  |
| 50 | 1.9 | CR: BE - Resistance cut-off values |  | 4h | 2009-03-19 A | 2009-03-19 A | 48 | 100% |  |  |  |  |  |  |  | Justin | 4h | 4h | 460 |  | 460 | MDSS009 |  | 364 |  |
| 51 | 1.10 | CR: GUI - Resistance cut-off values |  | 4h | 2009-03-25 A | 2009-03-25 A | 50, 49 | 100% |  |  |  |  |  |  |  | Darrell | 4h | 4h | 460 |  | 460 | MDSS009 |  | 365 |  |

| ID | WBS | Task | Type | Duration | Start | Finish | Predecessors | Complete | Remaining | Baseline start | Baseline finish | Baseline duration | Total slack | Constraint | Resources | Work | Actual work | Cost | Actual cost | Text4 |
| --- | --- | --- | --- | --- | --- | --- | --- | --- | --- | --- | --- | --- | --- | --- | --- | --- | --- | --- | --- | --- |
| 52 | 1.11 | **Aquire Geo Data** |  | 22d? | 2009-03-24 A | 2009-04-22 |  | 87% | 2.78d? | 2009-02-10 | 2009-02-24 | 11d? | 72.65d |  |  |  |  |  |  | 52 |
| 53 | 1 | **Mozambique** |  | 0d | 2009-03-24 A | 2009-03-24 |  |  | 0d | 2009-02-10 | 2009-02-24 | 11d? | 94.65d |  |  |  |  |  |  | 53 |
| 54 | 1.1 | Priority 1: Province Boundaries | milestone | 0h | 2009-03-24 A | 2009-03-24 A |  | 100% |  | 2009-02-10 | 2009-02-23 | 10d |  | start no earlier than 2009-03-24 |  |  |  |  |  | 54 |
| 55 | 1.2 | Priority 1: District Boundaries | milestone | 0h | 2009-03-24 A | 2009-03-24 A |  | 100% |  | 2009-02-10 | 2009-02-13 | 4d? |  | start no earlier than 2009-03-24 |  |  |  |  |  | 57 |
| 56 | 1.3 | Priority 1: Administrative Post Boundaries | milestone | 0h | 2009-03-24 A | 2009-03-24 A |  | 100% |  | 2009-02-10 | 2009-02-13 | 4d? |  | start no earlier than 2009-03-24 |  |  |  |  |  | 60 |
| 57 | 1.4 | Priority 1: Locality Boundaries | milestone | 0h | 2009-03-24 A | 2009-03-24 A |  | 100% |  | 2009-02-10 | 2009-02-13 | 4d? |  | start no earlier than 2009-03-24 |  |  |  |  |  | 63 |
| 58 | 1.5 | Priority 1: Village Points | milestone | 0h | 2009-03-24 A | 2009-03-24 A |  | 100% |  | 2009-02-10 | 2009-02-23 | 10d? |  | start no earlier than 2009-03-24 |  |  |  |  |  | 66 |
| 59 | 1.6 | Priority 1: Health Facility Points | milestone | 0h | 2009-03-24 A | 2009-03-24 A |  | 100% |  | 2009-02-10 | 2009-02-24 | 11d? |  | start no earlier than 2009-03-24 |  |  |  |  |  | 69 |
| 60 | 1.7 | Priority 1: Sentinel Site Points | milestone | 0h | 2009-03-24 A | 2009-03-24 A |  | 100% |  | 2009-02-10 | 2009-02-16 | 5d? |  | start no earlier than 2009-03-24 |  |  |  |  |  | 72 |
| 61 | 1.8 | Priority 1: Window Trap Points | milestone | 0h | 2009-03-24 | 2009-03-24 |  |  |  | 2009-02-10 | 2009-02-16 | 5d? | 94.65d | start no earlier than 2009-03-24 |  |  |  |  |  | 75 |
| 62 | 2 | **Malawi** |  | 1d | 2009-03-31 A | 2009-03-31 |  | 86% | 0.14d | 2009-02-10 | 2009-02-23 | 10d? | 88.65d |  |  |  |  |  |  | 78 |
| 63 | 2.1 | Priority 1: Province / Region Boundaries |  | 1d | 2009-03-31 A | 2009-03-31 A |  | 100% |  | 2009-02-10 | 2009-02-23 | 10d? |  | start no earlier than 2009-03-31 |  |  |  |  |  | 79 |
| 64 | 2.2 | Priority 1: District Boundaries | milestone | 1d | 2009-03-31 A | 2009-03-31 A |  | 100% |  | 2009-02-10 | 2009-02-23 | 10d? |  | start no earlier than 2009-03-31 |  |  |  |  |  | 82 |
| 65 | 2.3 | Priority 1: Traditional Authority Boundaries | milestone | 1d | 2009-03-31 A | 2009-03-31 A |  | 100% |  | 2009-02-10 | 2009-02-23 | 10d? |  | start no earlier than 2009-03-31 |  |  |  |  |  | 85 |
| 66 | 2.4 | Priority 1: Village Points | milestone | 1d | 2009-03-31 A | 2009-03-31 A |  | 100% |  | 2009-02-10 | 2009-02-23 | 10d? |  | start no earlier than 2009-03-31 |  |  |  |  |  | 88 |
| 67 | 2.5 | Priority 1: Health Facility Points | milestone | 1d | 2009-03-31 A | 2009-03-31 A |  | 100% |  | 2009-02-10 | 2009-02-23 | 10d? |  | start no earlier than 2009-03-31 |  |  |  |  |  | 91 |
| 68 | 2.6 | Priority 1: Sentinel Site Points | milestone | 1d | 2009-03-31 A | 2009-03-31 A |  | 100% |  | 2009-02-10 | 2009-02-19 | 8d? |  | start no earlier than 2009-03-31 |  |  |  |  |  | 94 |
| 69 | 2.7 | Priority 1: Window Trap Points | milestone | 1d | 2009-03-31 | 2009-03-31 |  |  |  | 2009-02-10 | 2009-02-17 | 6d? | 88.65d | start no earlier than 2009-03-31 |  |  |  |  |  | 97 |
| 70 | 3 | **Zambia** |  | 10d? | 2009-04-09 A | 2009-04-22 |  | 88% | 1.25d? | 2009-02-10 | 2009-02-23 | 10d? | 72.65d |  |  |  |  |  |  | 100 |
| 71 | 3.1 | Priority 1: Province Boundaries | milestone | 10d? | 2009-04-09 A | 2009-04-22 A |  | 100% |  | 2009-02-10 | 2009-02-23 | 10d? |  | start no earlier than 2009-04-09 |  |  |  |  |  | 101 |
| 72 | 3.2 | Priority 1: District Boundaries | milestone | 10d? | 2009-04-09 A | 2009-04-22 A |  | 100% |  | 2009-02-10 | 2009-02-23 | 10d? |  | start no earlier than 2009-04-09 |  |  |  |  |  | 104 |
| 73 | 3.3 | Priority 1: Constituency Boundaries | milestone | 10d? | 2009-04-09 A | 2009-04-22 A |  | 100% |  | 2009-02-10 | 2009-02-23 | 10d? |  | start no earlier than 2009-04-09 |  |  |  |  |  | 107 |
| 74 | 3.4 | Priority 1: Ward Boundaries | milestone | 10d? | 2009-04-09 A | 2009-04-22 A |  | 100% |  | 2009-02-10 | 2009-02-23 | 10d? |  | start no earlier than 2009-04-09 |  |  |  |  |  | 110 |
| 75 | 3.5 | Priority 1: Village Points | milestone | 10d? | 2009-04-09 A | 2009-04-22 A |  | 100% |  | 2009-02-10 | 2009-02-23 | 10d? |  | start no earlier than 2009-04-09 |  |  |  |  |  | 113 |
| 76 | 3.6 | Priority 1: Health Facility Points | milestone | 10d? | 2009-04-09 A | 2009-04-22 A |  | 100% |  | 2009-02-10 | 2009-02-20 | 9d? |  | start no earlier than 2009-04-09 |  |  |  |  |  | 116 |
| 77 | 3.7 | Priority 1: Sentinel Site Points | milestone | 10d? | 2009-04-09 A | 2009-04-22 A |  | 100% |  | 2009-02-10 | 2009-02-20 | 9d? |  | start no earlier than 2009-04-09 |  |  |  |  |  | 119 |
| 78 | 3.8 | Priority 1: Window Trap Points | milestone | 10d? | 2009-04-09 | 2009-04-22 |  |  |  | 2009-02-10 | 2009-02-20 | 9d? | 72.65d | start no earlier than 2009-04-09 |  |  |  |  |  | 122 |
| 79 | 1.12 | Deliver Population data | milestone | 0h | 2009-04-09 A | 2009-04-09 A |  | 100% |  | 2009-02-24 | 2009-02-24 | 0h |  | start no earlier than 2009-04-09 | MRC |  |  |  |  | 125 |
| 80 | 1.13 | Import Geo data into MDSS schema |  | 28.24h | 2009-04-09 A | 2009-04-14 A | 79 | 100% |  | 2009-02-25 | 2009-02-25 | 8h |  |  | Nathan [85%] | 24h | 24h | 2,760 | 2,760 | 126 |
| 81 | 1.14 | Deliver entomology data to be imported |  | 84h | 2009-02-18 A | 2009-03-04 A |  | 100% |  | 2009-02-20 | 2009-02-20 | 0h |  | start no earlier than 2009-02-18 | Mike | 64h | 64h |  |  | 127 |

| ID | WBS | Task | Type | Duration | Start | Finish | Predecessors | Complete | Baseline start | Baseline finish | Baseline duration | Constraint | Deadline | Resources | Work | Actual work | Text4 | Text1 |
| --- | --- | --- | --- | --- | --- | --- | --- | --- | --- | --- | --- | --- | --- | --- | --- | --- | --- | --- |
| 82 | 1.15 | **Prototype Test Cases** |  | 2.86d? | 2009-02-23 A | 2009-02-25 A |  | 100% | 2009-02-11 | 2009-02-13 | 2.86d? |  |  |  | 16h | 16h | 128 |  |
| 83 | 1.15.1 | TC: Geo Tree |  | 1.43d? | 2009-02-23 A | 2009-02-24 A |  | 100% | 2009-02-11 | 2009-02-12 | 1.43d? | start no earlier than 2009-02-21 |  | Marlize [70%] | 8h | 8h | 129 | MDSS111 |
| 84 | 1.15.2 | TC: Searching for a geo entity |  | 11.43h | 2009-02-24 A | 2009-02-25 A | 83 | 100% | 2009-02-12 | 2009-02-13 | 11.43h |  |  | Marlize [70%] | 8h | 8h | 130 | MDSS101 |
| 85 | 1.16 | Create test cases for entomology prototype |  | 88h | 2009-02-16 A | 2009-03-02 A |  | 100% | 2009-02-11 | 2009-02-20 | 64h | finish no earlier than 2009-03-02 |  | Mike [50%] | 32h | 32h | 131 |  |
| 86 | 1.17 | Test defect logging procedures |  | 0.71d? | 2009-03-04 A | 2009-03-04 A | 131 | 100% | 2009-02-24 | 2009-02-25 | 0.71d? | start no earlier than 2009-03-04 |  | Marlize [70%] | 4h | 4h | 132 |  |
| 87 | 1.18 | Prepare entomology test data |  | 5.72h | 2009-03-06 A | 2009-03-06 A | 81, 88 | 100% | 2009-02-27 | 2009-02-27 | 5.71h |  |  | Marlize [69.9%] | 4h | 4h | 133 |  |
| 88 | 1.19 | Learn BIRT report writer |  | 11.43h | 2009-03-19 A | 2009-03-20 A | 86 | 100% | 2009-02-25 | 2009-02-27 | 11.43h | start no earlier than 2009-03-19 |  | Marlize [70%] | 8h | 8h | 134 |  |
| 89 | 1.20 | **Test Prototype Submit Change Requests** |  | 18.15d? | 2009-03-16 A | 2009-04-09 A |  | 100% | 2009-03-02 | 2009-03-20 | 13.57d? |  |  |  | 65.06h | 65.06h | 135 |  |
| 90 | 1.20.1 | **Test: Geo entity search and maintanance** |  | 16.72d? | 2009-03-17 A | 2009-04-09 A |  | 100% | 2009-03-02 | 2009-03-12 | 7.15d? |  |  |  | 44.02h | 44.02h | 136 |  |
| 91 | 1.20.1.1 | Test: login to MDSS | milestone | 0h | 2009-03-17 A | 2009-03-17 A | 87 | 100% | 2009-03-02 | 2009-03-02 | 0h | start no earlier than 2009-03-09 | 2009-03-08 | Marlize [70%] |  |  | 137 | MDSS107 |
| 92 | 1.20.1.2 | Test: Search for a geo entity - tree |  | 0.36d? | 2009-03-30 A | 2009-03-30 A | 91, 135 | 100% | 2009-03-03 | 2009-03-03 | 0.36d? | start no earlier than 2009-03-03 |  | Marlize [70%] | 2h | 2h | 138 | MDSS111 |
| 93 | 1.20.1.3 | Submit defects: Search for a geo entity - tree |  | 0.71d? | 2009-03-30 A | 2009-03-31 A | 92 | 100% | 2009-03-03 | 2009-03-04 | 0.71d? |  |  | Marlize [70%] | 4h | 4h | 139 | MDSS111 |
| 94 | 1.20.1.4 | Test: create a geo entity |  | 2.86h | 2009-03-31 A | 2009-03-31 A | 93 | 100% | 2009-03-04 | 2009-03-04 | 2.86h |  |  | Marlize [70%] | 2h | 2h | 140 | MDSS101 |
| 95 | 1.20.1.5 | Submit defects: create a geo entity |  | 5.71h | 2009-03-31 A | 2009-04-01 A | 94 | 100% | 2009-03-04 | 2009-03-05 | 5.71h |  |  | Marlize [70%] | 4h | 4h | 141 | MDSS101 |
| 96 | 1.20.1.6 | Test: Search for a geo entity - filtered |  | 0.36d? | 2009-04-01 A | 2009-04-01 A | 95 | 100% | 2009-03-05 | 2009-03-05 | 0.36d? |  |  | Marlize [70%] | 2h | 2h | 142 | MDSS101 |
| 97 | 1.20.1.7 | Submit defects: Search for a geo entity - filtered |  | 0.36d | 2009-04-01 A | 2009-04-02 A | 96 | 100% | 2009-03-05 | 2009-03-05 | 0.36d |  |  | Marlize [70%] | 2.02h | 2.02h | 143 | MDSS101 |
| 98 | 1.20.1.8 | Test: Search for a geo entity - Hierarchy table |  | 1.43d? | 2009-04-02 A | 2009-04-03 A | 97 | 100% | 2009-03-05 | 2009-03-09 | 1.43d? |  |  | Marlize [70%] | 8h | 8h | 144 | MDSS101 |
| 99 | 1.20.1.9 | TC: IRS - dynamic query |  | 5.72h | 2009-04-03 A | 2009-04-06 A | 98 | 100% | 2009-03-30 | 2009-03-31 | 5.71h |  |  | Marlize [69.9%] | 4h | 4h | 328 | MDSS132 |
| 100 | 1.20.1.10 | Submit defects: Search for a geo entity - Hierarchy table |  | 0.71d? | 2009-04-06 A | 2009-04-07 A | 99 | 100% | 2009-03-09 | 2009-03-10 | 0.71d? |  |  | Marlize [70%] | 4h | 4h | 145 | MDSS101 |
| 101 | 1.20.1.11 | Test: Search for a geo entity - combo boxes |  | 0.36d? | 2009-04-07 A | 2009-04-07 A | 100 | 100% | 2009-03-10 | 2009-03-10 | 0.36d? |  |  | Marlize [70%] | 2h | 2h | 146 | MDSS101 |
| 102 | 1.20.1.12 | Submit defects: Search for a geo entity - combo boxes |  | 0.36d? | 2009-04-07 A | 2009-04-07 A | 101 | 100% | 2009-03-10 | 2009-03-10 | 0.36d? |  |  | Marlize [70%] | 2h | 2h | 147 | MDSS101 |
| 103 | 1.20.1.13 | Test: Call 101 from 024, 016, 025 |  | 0.36d? | 2009-04-07 A | 2009-04-08 A | 102 | 100% | 2009-03-10 | 2009-03-11 | 0.36d? |  |  | Marlize [70%] | 2h | 2h | 148 | MDSS101 |
| 104 | 1.20.1.14 | Submit defects: Call 101 from 024, 016, 025 |  | 0.36d? | 2009-04-08 A | 2009-04-08 A | 103 | 100% | 2009-03-11 | 2009-03-11 | 0.36d? |  |  | Marlize [70%] | 2h | 2h | 149 | MDSS101 |
| 105 | 1.20.1.15 | Write change request MDSS101, MDSS111 |  | 0.71d? | 2009-04-08 A | 2009-04-09 A | 104 | 100% | 2009-03-11 | 2009-03-12 | 0.71d? |  |  | Marlize [70%] | 4h | 4h | 150 | MDSS101 |
| 106 | 1.20.2 | Test: Resistance cut-off values |  | 1h | 2009-03-16 A | 2009-03-16 A |  | 100% | 2009-03-13 | 2009-03-13 | 1h | start no earlier than 2009-03-14 |  | Mike | 1h | 1h | 179 | MDSS009 |
| 107 | 1.20.3 | Submit defects: Resistance cut-off values |  | 1h | 2009-03-16 A | 2009-03-16 A | 106 | 100% | 2009-03-16 | 2009-03-16 | 1h |  |  | Mike | 1h | 1h | 180 | MDSS009 |
| 108 | 1.20.4 | Test:Species identification |  | 1h | 2009-03-16 A | 2009-03-16 A | 107 | 100% | 2009-03-10 | 2009-03-10 | 1h |  |  | Mike | 1h | 1h | 162 | MDSS012 |
| 109 | 1.20.5 | Submit defects: Species identification |  | 1h | 2009-03-16 A | 2009-03-16 A | 108 | 100% | 2009-03-11 | 2009-03-11 | 1h |  |  | Mike | 1h | 1h | 163 | MDSS012 |
| 110 | 1.20.6 | Write change request: Mechanisms |  | 1h | 2009-03-16 A | 2009-03-16 A | 109 | 100% | 2009-03-12 | 2009-03-12 | 4h |  |  | Mike | 1h | 1h | 172 | MDSS012 |
| 111 | 1.20.7 | Test: Submit a mosquito collection |  | 0.13d? | 2009-03-16 A | 2009-03-16 A | 110 | 100% | 2009-03-09 | 2009-03-09 | 0.12d? |  |  | Mike | 1.04h | 1.04h | 153 | MDSS024 |
| 112 | 1.20.8 | Submit defects: Submit a mosquito collection |  | 1h | 2009-03-16 A | 2009-03-16 A | 111 | 100% | 2009-03-09 | 2009-03-09 | 2h |  |  | Mike | 1h | 1h | 154 | MDSS024 |
| 113 | 1.20.9 | Write change request: Collections |  | 1h | 2009-03-23 A | 2009-03-23 A | 112 | 100% | 2009-03-10 | 2009-03-10 | 4h | finish no earlier than 2009-03-23 |  | Miguel | 1h | 1h | 159 | MDSS024 |
| 114 | 1.20.10 | Test: search/update/delete record |  | 1h | 2009-03-17 A | 2009-03-17 A | 113 | 100% | 2009-03-09 | 2009-03-09 | 1h |  |  | Mike | 1h | 1h | 155 | MDSS75 |
| 115 | 1.20.11 | Submit defects: search/update/delete |  | 1h | 2009-03-17 A | 2009-03-17 A | 114 | 100% | 2009-03-09 | 2009-03-09 | 2h |  |  | Mike | 1h | 1h | 156 |  |
| 116 | 1.20.12 | Test: Efficacy assay |  | 0.12d? | 2009-03-17 A | 2009-03-17 A | 115 | 100% | 2009-03-16 | 2009-03-16 | 0.12d? |  |  | Mike | 1h | 1h | 182 | MDSS025 |
| 117 | 1.20.13 | Submit defects: Efficacy assay |  | 1h | 2009-03-17 A | 2009-03-17 A | 116 | 100% | 2009-03-16 | 2009-03-16 | 1h |  |  | Mike | 1h | 1h | 183 | MDSS025 |
| 118 | 1.20.14 | Write change request: Efficacy assay |  | 1h | 2009-03-23 A | 2009-03-23 A | 117 | 100% | 2009-03-16 | 2009-03-17 | 2h | finish no earlier than 2009-03-23 |  | Miguel | 1h | 1h | 184 | MDSS025 |
| 119 | 1.20.15 | Test: Adult discriminating dose assay |  | 0.12d? | 2009-03-17 A | 2009-03-17 A | 118 | 100% | 2009-03-12 | 2009-03-13 | 0.25d? |  |  | Mike | 1h | 1h | 173 | MDSS004 |
| 120 | 1.20.16 | Submit defects: Adult discriminating dose assay |  | 1h | 2009-03-17 A | 2009-03-17 A | 119 | 100% | 2009-03-13 | 2009-03-13 | 2h |  |  | Mike | 1h | 1h | 174 | MDSS004 |
| 121 | 1.20.17 | Test: Adult knock down assay |  | 0.12d? | 2009-03-25 A | 2009-03-25 A | 120 | 100% | 2009-03-13 | 2009-03-13 | 0.12d? | start no earlier than 2009-03-25 |  | Mike | 1h | 1h | 177 | MDSS006 |
| 122 | 1.20.18 | Submit defects: Adult knock down assay |  | 1h | 2009-03-25 A | 2009-03-25 A | 121 | 100% | 2009-03-13 | 2009-03-13 | 1h |  |  | Mike | 1h | 1h | 178 | MDSS006 |
| 123 | 1.20.19 | Test: Larvae discriminating dose assay |  | 0.12d? | 2009-03-25 A | 2009-03-25 A | 122 | 100% | 2009-03-13 | 2009-03-13 | 0.12d? |  |  | Mike | 1h | 1h | 175 | MDSS008 |
| 124 | 1.20.20 | Submit defects: Larvae discriminating dose assay |  | 1h | 2009-03-25 A | 2009-03-25 A | 123 | 100% | 2009-03-13 | 2009-03-13 | 1h |  |  | Mike | 1h | 1h | 176 | MDSS008 |
| 125 | 1.20.21 | Test: Submit collection points |  | 1h | 2009-03-25 A | 2009-03-25 A | 124 | 100% | 2009-03-09 | 2009-03-09 | 1h |  |  | Mike | 1h | 1h | 157 | MDSS016 |
| 126 | 1.20.22 | Submit defects: Submit collection points |  | 1h | 2009-03-25 A | 2009-03-25 A | 125 | 100% | 2009-03-09 | 2009-03-09 | 1h |  |  | Mike | 1h | 1h | 158 | MDSS016 |

| ID | WBS | Task | Duration | Start | Finish | Predecessors | Complete | Remaining | Baseline start | Baseline finish | Baseline duration | Total slack | Free slack | Constraint | Resources | Work | Actual work | Cost | Baseline cost | Actual cost | Text4 | Text1 |
| --- | --- | --- | --- | --- | --- | --- | --- | --- | --- | --- | --- | --- | --- | --- | --- | --- | --- | --- | --- | --- | --- | --- |
| 127 | 1.21 | **Finalise Query Use Cases** | 28.43d | 2009-02-23 A | 2009-04-02 A |  | 100% |  | 2009-02-13 | 2009-04-08 | 38.11d |  |  |  |  | 77.6h | 77.6h |  |  |  | 205 |  |
| 128 | 1.21.1 | UC: Individual Cases - query | 11.43h | 2009-02-23 A | 2009-02-24 A |  | 100% |  | 2009-02-18 | 2009-02-20 | 11.43h |  |  | start no earlier than 2009-02-21 | Miguel [70%] | 8h | 8h |  |  |  | 208 | MDSS128 |
| 129 | 1.21.2 | UC: Aggregated Cases - query | 11.43h | 2009-02-25 A | 2009-02-27 A | 84 | 100% |  | 2009-02-13 | 2009-02-17 | 11.43h |  |  | start no earlier than 2009-02-24 | Miguel [70%] | 8h | 8h |  |  |  | 206 | MDSS129 |
| 130 | 1.21.3 | UC: Indicator survey - query | 11.43h | 2009-03-03 A | 2009-03-04 A | 129 | 100% |  | 2009-02-17 | 2009-02-18 | 11.43h |  |  | start no earlier than 2009-03-03 | Miguel [70%] | 8h | 8h |  |  |  | 207 | MDSS140 |
| 131 | 1.21.4 | UC: IRS - query | 17.14h | 2009-03-12 A | 2009-03-16 A | 128, 84 | 100% |  | 2009-02-20 | 2009-02-24 | 22.86h |  |  | finish no earlier than 2009-03-16 | Marlize [93.3%] | 16h | 16h |  |  |  | 209 | MDSS132 |
| 132 | 1.21.5 | UC: ITN Facility distribution - query | 11.43h | 2009-03-23 A | 2009-03-24 A |  | 100% |  | 2009-04-01 | 2009-04-02 | 11.43h |  |  | start no earlier than 2009-03-23 | Marlize [70%] | 8h | 8h |  |  |  | 210 | MDSS135 |
| 133 | 1.21.6 | UC: ITN Community distribution - query | 8h | 2009-03-24 A | 2009-03-25 A | 132 | 100% |  |  |  |  |  |  |  | Marlize [70%] | 5.6h | 5.6h |  |  |  | 379 | MDSS137 |
| 134 | 1.21.7 | UC: ITN household use - query | 11.43h | 2009-03-25 A | 2009-03-26 A | 133 | 100% |  | 2009-04-02 | 2009-04-06 | 11.43h |  |  |  | Marlize [70%] | 8h | 8h |  |  |  | 211 | MDSS138 |
| 135 | 1.21.8 | UC: IPT individual - query | 11.43h | 2009-03-26 A | 2009-03-30 A | 134 | 100% |  | 2009-04-06 | 2009-04-07 | 11.43h |  |  |  | Marlize [70%] | 8h | 8h |  |  |  | 212 | MDSS130 |
| 136 | 1.21.9 | UC: IPT aggregated - query | 11.43h | 2009-04-01 A | 2009-04-02 A | 135 | 100% |  | 2009-04-07 | 2009-04-08 | 11.43h |  |  | start no earlier than 2009-04-01 | Marlize [70%] | 8h | 8h |  |  |  | 213 | MDSS131 |
| 137 | 1.22 | **Complete Development** | 96d? | 2009-03-09 A | 2009-07-20 |  | 61% | 37.5d? | 2009-03-02 | 2009-05-28 | 63.25d? | 9.65d |  |  |  | 1624h | 915.6h | 93,840 | 172,960 | 50,462.02 | 214 |  |
| 138 | 1.22.1 | **Generic Development** | 96d | 2009-03-09 A | 2009-07-20 |  | 67% | 31.45d | 2009-03-05 | 2009-04-14 | 28.76d? | 9.65d |  |  |  | 456h | 268.8h | 26,680 | 31,280 | 15,640 | 215 |  |
| 139 | 1.22.1.1 | Dev: Reconstruct saved query | 110.49h | 2009-04-16 A | 2009-05-05 A | 13SS | 100% |  | 2009-03-12 | 2009-03-20 | 47.06h |  |  | finish no earlier than 2009-04-22 | Nathan [200%] | 104h | 104h | 11,960 | 4,600 | 11,960 | 216 | SYS06-4 |
| 140 | 1.22.1.2 | Dev: enter/maintain people in the system | 64h | 2009-04-16 A | 2009-04-27 A | 42 | 100% |  | 2009-03-16 | 2009-03-19 | 18.82h |  |  | start no earlier than 2009-04-16 | Eric | 64h | 64h |  | 1,840 |  | 222 | MDSS114 |
| 141 | 1.22.1.3 | Dev: CRUD on localisable fields | 164h | 2009-03-09 A | 2009-04-06 A | 37 | 100% |  | 2009-03-05 | 2009-03-12 | 48h |  |  | finish no earlier than 2009-03-30 | Eric | 48h | 48h |  |  |  | 227 | SYS01-2 |
| 142 | 1.22.1.4 | Change system geo root | 8h | 2009-07-20 | 2009-07-20 | 191 |  |  | 2009-04-01 | 2009-04-03 | 20h | 9.65d |  | start no earlier than 2009-06-11 | Naifeh | 8h |  |  | 1,840 |  | 230 | MDSS122 |
| 143 | 1.22.1.5 | Change geo root by user | 16h | 2009-06-24 | 2009-06-25 | 45 |  |  |  |  |  | 9.15d | 0d |  | Darrell | 16h |  | 1,840 |  |  | 391 |  |
| 144 | 1.22.1.6 | Modify 101 to accept universals | 8h | 2009-05-29 A | 2009-05-29 A |  | 100% |  |  |  |  |  |  | start no earlier than 2009-05-29 | Naifeh | 8h | 8h |  |  |  | 392 |  |
| 145 | 1.22.1.7 | Modify 101 to follow spray hierarchy | 8h | 2009-05-29 A | 2009-05-29 A |  | 100% |  |  |  |  |  |  | start no earlier than 2009-05-29 | Naifeh | 8h | 8h |  |  |  | 393 |  |
| 146 | 1.22.1.8 | Multiple geo entity select | 40h | 2009-06-01 A | 2009-06-05 |  | 60% | 16h |  |  |  | 5.65d | 0d | start no earlier than 2009-06-01 | Naifeh [20%] | 8h | 4.8h |  |  |  | 394 |  |
| 147 | 1.22.1.9 | Create initial views for export | 32h | 2009-05-26 A | 2009-05-29 A |  | 100% |  |  |  |  |  |  | start no earlier than 2009-05-26 | Justin | 32h | 32h | 3,680 |  | 3,680 | 395 |  |
| 148 | 1.22.1.10 | Integrate BIRT | 64h | 2009-06-01 | 2009-06-10 | 147 |  |  |  |  |  | 13.15d | 0d |  | Justin | 64h |  | 7,360 |  |  | 396 |  |
| 149 | 1.22.1.11 | Additional views for export | 80h | 2009-06-08 | 2009-06-19 | 178 |  |  |  |  |  | 30.65d |  | start no earlier than 2009-06-05 | Eric | 80h |  |  |  |  | 397 |  |
| 150 | 1.22.1.12 | Fix GUI user/role/permissions admin | 16h | 2009-06-08 | 2009-06-09 | 151 |  |  |  |  |  | 9.15d | 0d | start no earlier than 2009-06-01 | Darrell | 16h |  | 1,840 |  |  | 398 |  |
| 151 | 1.22.2 | Dev: Entomology Efficacy dynamic query | 40h | 2009-06-01 | 2009-06-05 | 175 |  |  |  |  |  | 9.15d | 0d | start no earlier than 2009-06-01 | Darrell | 40h |  | 4,600 |  |  | 378 | MDSS147 |
| 152 | 1.22.3 | Dev: Queries - Group by season | 40h | 2009-06-10 | 2009-06-16 | 150 |  |  |  |  |  | 9.15d | 0d |  | Darrell | 40h |  | 4,600 |  |  | 399 | MDSS147 |

| ID | WBS | Task | Duration | Start | Finish | Predecessors | Complete | Remaining | Baseline start | Baseline finish | Baseline duration | Total slack | Free slack | Constraint | Resources | Work | Actual work | Cost | Baseline cost | Actual cost | Text4 | Text1 | Text2 |
| --- | --- | --- | --- | --- | --- | --- | --- | --- | --- | --- | --- | --- | --- | --- | --- | --- | --- | --- | --- | --- | --- | --- | --- |
| 153 | 1.22.4 | **Indicator survey** | 56d | 2009-04-10 A | 2009-06-26 |  | 55% | 25.45d | 2009-03-19 | 2009-03-31 | 8d | 5.65d |  |  |  | 88h | 48h | 5,520 | 8,280 | 5,520 | 231 |  |  |
| 154 | 1.22.4.1 | Dev: BE - Indicator survey - CRUD | 16h | 2009-04-10 A | 2009-04-13 A | 158 | 100% |  |  |  |  |  |  | start no earlier than 2009-04-10 | Justin | 16h | 16h | 1,840 |  | 1,840 | 367 | MDSS026 |  |
| 155 | 1.22.4.2 | Dev: GUI - Indicator survey - CRUD | 32h | 2009-04-15 A | 2009-04-20 A | 154, 159 | 100% |  | 2009-03-24 | 2009-03-31 | 40h |  |  | finish no earlier than 2009-03-30 | Darrell | 32h | 32h | 3,680 | 3,680 | 3,680 | 232 | MDSS026 |  |
| 156 | 1.22.4.3 | Dev - Indicator survey - dynamic query | 40h | 2009-06-22 | 2009-06-26 | 171 |  |  | 2009-03-19 | 2009-03-27 | 50h | 5.65d | 0d | start no earlier than 2009-06-01 | Naifeh | 40h |  |  | 4,600 |  | 233 | MDSS140 |  |
| 157 | 1.22.5 | **Case Surveilance** | 35d | 2009-03-30 A | 2009-05-15 A |  | 100% |  | 2009-03-02 | 2009-05-07 | 48.25d |  |  |  |  | 88h | 88h | 3,680 | 51,520 | 3,680 | 234 |  |  |
| 158 | 1.22.5.1 | Dev: BE - aggregated cases - CRUD | 48h | 2009-03-30 A | 2009-04-06 A | 50 | 100% |  | 2009-03-02 | 2009-03-06 | 40h |  |  | start no earlier than 2009-03-30 | Justin [33.3%] | 16h | 16h | 1,840 | 4,600 | 1,840 | 235 | MDSS002 | 5 days |
| 159 | 1.22.5.2 | Dev: GUI - aggregated cases - CRUD | 16h | 2009-04-13 A | 2009-04-14 A | 158, 51 | 100% |  |  |  |  |  |  | start no earlier than 2009-04-13 | Darrell | 16h | 16h | 1,840 |  | 1,840 | 368 | MDSS002 |  |
| 160 | 1.22.5.3 | Dev: aggregated cases - dynamic query | 104h | 2009-04-29 A | 2009-05-15 A | 129, 14 | 100% |  | 2009-03-09 | 2009-03-13 | 40h |  |  | start no earlier than 2009-04-29 | Naifeh | 56h | 56h |  | 4,600 |  | 237 | MDSS129 | 5 days |
| 161 | 1.22.6 | **Intervention monitoring** | 69d? | 2009-04-14 A | 2009-07-17 |  | 56% | 30.48d? | 2009-03-27 | 2009-05-28 | 43.75d | 9.65d |  |  |  | 912h | 510.8h | 48,760 | 75,440 | 25,622.02 | 247 |  |  |
| 162 | 1.22.6.1 | **IRS** | 69d | 2009-04-14 A | 2009-07-17 |  | 74% | 17.66d | 2009-03-27 | 2009-05-21 | 38.75d | 5.65d |  |  |  | 344h | 240h | 17,480 | 28,520 | 14,720 | 248 |  |  |
| 163 | 1.22.6.1.1 | Dev: enter/maintain spray team member | 64h | 2009-04-16 A | 2009-04-27 A | 140SS | 100% |  | 2009-04-22 | 2009-04-27 | 32h |  |  | start no earlier than 2009-03-20 | Eric | 64h | 64h |  | 3,680 |  | 249 | MDSS113 |  |
| 164 | 1.22.6.1.2 | Dev: enter/maintain IRS teams | 72h | 2009-04-28 A | 2009-05-08 A | 163 | 100% |  | 2009-04-28 | 2009-05-01 | 32h |  |  |  | Eric | 48h | 48h |  | 3,680 |  | 250 | MDSS141 |  |
| 165 | 1.22.6.1.3 | Dev: BE - input or modify IRS targets | 24h | 2009-04-17 A | 2009-04-27 A |  | 100% |  | 2009-03-27 | 2009-04-02 | 30h |  |  | start no earlier than 2009-04-17 | Justin [123.1%] | 24h | 24h | 2,760 | 2,760 | 2,760 | 251 | MDSS028 |  |
| 166 | 1.22.6.1.4 | Dev: GUI - input or modify IRS targets | 24h | 2009-04-28 A | 2009-04-30 A | 165 | 100% |  | 2009-05-07 | 2009-05-12 | 30h |  |  | start no earlier than 2009-04-01 | Darrell | 24h | 24h | 2,760 | 2,760 | 2,760 | 252 | MDSS028 |  |
| 167 | 1.22.6.1.5 | Dev: BE - Configure items relating to application rate | 24h | 2009-04-28 A | 2009-04-30 A | 165, 169 | 100% |  | 2009-04-02 | 2009-04-10 | 50h |  |  |  | Justin | 24h | 24h | 2,760 | 4,600 | 2,760 | 253 | MDSS106 |  |
| 168 | 1.22.6.1.6 | Dev: GUI - Configure items relating to application rate | 16h | 2009-05-01 A | 2009-05-04 A | 166, 167 | 100% |  | 2009-05-13 | 2009-05-15 | 20h |  |  |  | Darrell | 16h | 16h | 1,840 | 1,840 | 1,840 | 254 | MDSS106 |  |
| 169 | 1.22.6.1.7 | Dev: BE - IRS - CRUD | 30.4h | 2009-04-14 A | 2009-04-27 A | 154 | 100% |  | 2009-04-14 | 2009-04-20 | 28.23h |  |  | start no earlier than 2009-03-23 | Justin | 24h | 24h | 2,760 | 2,760 | 2,760 | 255 | MDSS027 |  |
| 170 | 1.22.6.1.8 | Dev: GUI - IRS - CRUD | 48h | 2009-04-28 A | 2009-05-05 A | 169 | 100% |  |  |  |  |  |  | start no earlier than 2009-04-10 | Darrell | 16h | 16h | 1,840 |  | 1,840 | 370 | MDSS027 |  |
| 171 | 1.22.6.1.9 | Dev: IRS - dynamic query | 80h | 2009-06-08 | 2009-06-19 | 131, 160, 146 |  |  | 2009-04-10 | 2009-04-17 | 40h | 5.65d | 0d | start no earlier than 2009-06-01 | Naifeh | 80h |  |  | 3,680 |  | 257 | MDSS132 |  |
| 172 | 1.22.6.1.10 | Change IRS targets according to new spec | 24h | 2009-07-15 | 2009-07-17 | 190 |  |  |  |  |  | 5.65d | 0d | start no earlier than 2009-06-29 | Darrell | 24h |  | 2,760 |  |  | 400 | MDSS028 |  |
| 173 | 1.22.6.2 | **MDSS Stabilisation** | 35.65d | 2009-05-04 A | 2009-06-22 |  | 54% | 16.54d |  |  |  | 20d |  |  |  | 384h | 230.8h | 23,920 |  | 10,902.02 | 381 |  |  |
| 174 | 1.22.6.2.1 | Ticket resolution | 40h | 2009-05-04 A | 2009-05-08 A |  | 100% |  |  |  |  |  |  | start no earlier than 2009-05-04 | Darrell; Justin | 80h | 80h | 9,200 |  | 9,200 | 382 |  |  |
| 175 | 1.22.6.2.2 | Menu Structure | 8h | 2009-05-29 A | 2009-05-29 A |  | 100% |  |  |  |  |  |  | start no earlier than 2009-05-29 | Darrell | 8h | 8h | 920 |  | 920 | 387 |  |  |
| 176 | 1.22.6.2.3 | Dev: maintain catalogues - All | 40h | 2009-05-25 A | 2009-05-29 A |  | 100% |  |  |  |  |  |  | start no earlier than 2009-05-25 | Eric | 32h | 32h |  |  |  | 389 | MDSS103 |  |
| 177 | 1.22.6.2.4 | Complete GUI Admin screens for all screens | 40h | 2009-05-25 A | 2009-05-29 A |  | 100% |  |  |  |  |  |  | start no earlier than 2009-05-25 | Eric | 40h | 40h |  |  |  | 390 | MDSS117 |  |
| 178 | 1.22.6.2.5 | Import geo entities through tree | 40h | 2009-06-01 | 2009-06-05 | 177 |  |  |  |  |  | 30.65d | 0d |  | Eric | 40h |  |  |  |  | 401 |  |  |
| 179 | 1.22.6.2.6 | Dev: Epi week - set or change | 16h | 2009-05-18 A | 2009-05-19 A | 164, 187 | 100% |  | 2009-03-09 | 2009-03-12 | 18.82h |  |  | start no earlier than 2009-03-17 | Eric | 16h | 16h |  | 1,840 |  | 220 | MDSS119 | 2 days |
| 180 | 1.22.6.2.7 | Dev: define season start and end dates | 16h | 2009-05-20 A | 2009-05-21 A | 179 | 100% |  | 2009-03-12 | 2009-03-16 | 18.82h |  |  | start no earlier than 2009-04-13 | Eric | 16h | 16h |  | 1,840 |  | 221 | MDSS127 | 2 days |
| 181 | 1.22.6.2.8 | Finalise export/import routines | 32h | 2009-05-22 A | 2009-05-27 A | 180 | 100% |  |  |  |  |  |  |  | Eric | 32h | 32h |  |  |  | 383 |  |  |
| 182 | 1.22.6.2.9 | Dev: create synonyms for imported Geo entities | 141.18h | 2009-05-28 A | 2009-06-22 | 181 | 6% | 133.18h | 2009-03-13 | 2009-03-19 | 32h | 0d |  |  | Nathan [85%] | 120h | 6.8h | 13,800 | 3,680 | 782.02 | 223 | MDSS112 |  |

| ID | WBS | Task | Type | Duration | Start | Finish | Predecessors | Complete | Remaining | Baseline start | Baseline finish | Baseline duration | Total slack | Free slack | Constraint | Resources | Work | Actual work | Cost | Baseline cost | Text4 | Text1 | Text2 | Text3 |
| --- | --- | --- | --- | --- | --- | --- | --- | --- | --- | --- | --- | --- | --- | --- | --- | --- | --- | --- | --- | --- | --- | --- | --- | --- |
| 183 | 1.22.6.3 | **IPT** |  | 40d? | 2009-05-18 A | 2009-07-10 |  | 33% | 26.67d? | 2009-04-23 | 2009-05-28 | 25d | 5.65d |  |  |  | 112h | 40h | 3,680 | 14,720 | 271 |  |  |  |
| 184 | 1.22.6.3.1 | Dev: BE - IPT aggregated - CRUD |  | 20h | 2009-06-11 | 2009-06-15 | 148 |  |  | 2009-04-23 | 2009-04-27 | 20h | 13.15d | 0d | start no earlier than 2009-06-08 | Justin [80%] | 16h |  | 1,840 | 1,840 | 272 | MDSS069 |  |  |
| 185 | 1.22.6.3.2 | Dev: GUI - IPT aggregated - CRUD |  | 20h | 2009-06-26 | 2009-06-30 | 184, 143 |  |  | 2009-05-21 | 2009-05-25 | 20h | 9.15d | 0d |  | Darrell [80%] | 16h |  | 1,840 | 1,840 | 273 | MDSS069 |  |  |
| 186 | 1.22.6.3.3 | Dev: IPT aggregated - query |  | 40h | 2009-07-06 | 2009-07-10 | 185, 46 |  |  | 2009-04-27 | 2009-05-04 | 40h | 5.65d | 0d |  | Naifeh | 40h |  |  | 3,680 | 274 | MDSS131 |  |  |
| 187 | 1.22.6.3.4 | Dev: user Admin Screen for Role assignment |  | 5d? | 2009-05-18 A | 2009-05-22 A | 177 | 100% |  | 2009-04-02 | 2009-04-06 | 2.35d? |  |  | start no earlier than 2009-05-18 | Eric | 40h | 40h |  | 1,840 | 225 | MDSS142 | 2 days |  |
| 188 | 1.22.6.4 | **ITN** |  | 24.5d | 2009-06-15 | 2009-07-17 |  |  |  | 2009-04-17 | 2009-05-22 | 25.53d | 9.65d |  |  |  | 72h |  | 3,680 | 23,000 | 260 |  |  |  |
| 189 | 1.22.6.4.1 | Dev: BE - ITN aggregated data - CRUD |  | 16h | 2009-06-15 | 2009-06-17 | 184 |  |  | 2009-04-17 | 2009-04-27 | 47.06h | 13.15d | 0d | start no earlier than 2009-06-08 | Justin | 16h |  | 1,840 | 4,600 | 261 | MDSS080 | 5 days |  |
| 190 | 1.22.6.4.2 | Dev: GUI - ITN aggregated data - CRUD |  | 16h | 2009-07-13 | 2009-07-14 | 189, 186, 192 |  |  |  |  |  | 5.65d | 0d | start no earlier than 2009-07-05 | Darrell | 16h |  | 1,840 |  | 372 | MDSS080 |  |  |
| 191 | 1.22.6.4.3 | Dev: ITN aggregated data - query |  | 40h | 2009-07-13 | 2009-07-17 | 186 |  |  | 2009-04-27 | 2009-04-28 | 8h | 9.65d | 0d | start no earlier than 2009-06-03 | Naifeh | 40h |  |  |  | 262 | MDSS136 |  |  |
| 192 | 1.23 | geo data import for all countries |  | 24h | 2009-06-30 | 2009-07-03 | 185 |  |  |  |  |  | 11.15d | 2d | start no earlier than 2009-06-30 | Darrell | 24h |  | 2,760 |  | 402 |  |  |  |
| 193 | 1.24 | Final ticket resolution |  | 40h | 2009-07-20 | 2009-07-24 | 172 |  |  |  |  |  | 5.65d |  | start no earlier than 2009-07-15 | Darrell; Justin | 80h |  | 9,200 |  | 403 |  |  |  |
| 194 | 1.25 | Dev: Backup the data and configuration file |  | 80h | 2009-06-22 | 2009-07-06 | 182 |  |  | 2009-05-15 | 2009-05-21 | 40h | 0d |  | start no earlier than 2009-06-01 | Nathan | 80h |  | 9,200 | 4,600 | 280 | MDSS065 |  |  |
| 195 | 1.26 | Dev: Synchronise data between systems |  | 160h | 2009-07-06 | 2009-08-03 | 194 |  |  |  |  |  | 0d |  |  | Nathan | 160h |  | 18,400 |  | 384 |  |  |  |
| 196 | 1.27 | Dev: Heavy client MDSS Admin |  | 40h | 2009-06-17 | 2009-06-24 | 189 |  |  |  |  |  | 13.15d | 0d |  | Justin | 40h |  | 4,600 |  | 404 |  |  |  |
| 197 | 1.28 | Dev: Installation (minimal or full) |  | 120h | 2009-06-24 | 2009-07-15 | 196 |  |  | 2009-05-15 | 2009-05-22 | 40h | 13.15d |  | start no earlier than 2009-06-22 | Justin | 120h |  | 13,800 | 4,600 | 354 | SYS12 |  |  |
| 198 | 1.29 | Dev: Select the user language | milestone | 0h | 2009-02-02 A | 2009-02-02 A |  | 100% |  | 2009-02-02 | 2009-02-02 | 0h |  |  |  |  |  |  |  |  | 281 | MDSS118 |  |  |
| 199 | 1.30 | **Complete Test Cases** |  | 39.5d? | 2009-02-11 A | 2009-04-07 A |  | 100% |  | 2009-02-11 | 2009-04-01 | 35.25d? |  |  |  |  | 191.2h | 191.2h |  |  | 283 |  |  |  |
| 200 | 1.30.1 | **Entomology** |  | 3d? | 2009-03-11 A | 2009-03-13 A |  | 100% |  | 2009-03-17 | 2009-03-23 | 4d? |  |  |  |  | 12h | 12h |  |  | 284 |  |  |  |
| 201 | 1.30.1.1 | TC: Adult knock down assay |  | 1d? | 2009-03-11 A | 2009-03-11 A |  | 100% |  | 2009-03-18 | 2009-03-19 | 1d? |  |  | start no earlier than 2009-03-11 | Mike [50%] | 4h | 4h |  |  | 286 | MDSS006 |  |  |
| 202 | 1.30.1.2 | TC: Larvae discriminating dose assay |  | 1d? | 2009-03-12 A | 2009-03-12 A | 201 | 100% |  | 2009-03-19 | 2009-03-20 | 1d? |  |  |  | Mike [50%] | 4h | 4h |  |  | 287 | MDSS008 |  | 10 |
| 203 | 1.30.1.3 | TC: Efficacy assay |  | 1d? | 2009-03-13 A | 2009-03-13 A | 202 | 100% |  | 2009-03-20 | 2009-03-23 | 1d? |  |  |  | Mike [50%] | 4h | 4h |  |  | 288 | MDSS025 |  |  |
| 204 | 1.30.2 | **System** |  | 18d | 2009-02-11 A | 2009-03-06 A |  | 100% |  | 2009-02-11 | 2009-02-26 | 11.25d |  |  |  |  | 48h | 48h |  |  | 289 |  |  |  |
| 205 | 1.30.2.1 | TC: Configure system variables |  | 10h | 2009-02-12 A | 2009-02-13 A | 218 | 100% |  | 2009-02-12 | 2009-02-13 | 10h |  |  | start no earlier than 2009-02-11 | Sanika [40%] | 4h | 4h |  |  | 290 | MDSS109 | 1 day |  |
| 206 | 1.30.2.2 | TC: maintain catalogues |  | 10h | 2009-02-13 A | 2009-02-16 A | 205 | 100% |  | 2009-02-13 | 2009-02-16 | 10h |  |  |  | Sanika [40%] | 4h | 4h |  |  | 291 | MDSS103 |  |  |
| 207 | 1.30.2.3 | TC: Epi week - set or change |  | 10h | 2009-02-16 A | 2009-02-17 A | 206 | 100% |  | 2009-02-16 | 2009-02-17 | 10h |  |  |  | Sanika [40%] | 4h | 4h |  |  | 292 | MDSS119 | 2 days |  |
| 208 | 1.30.2.4 | TC: define season start and end dates |  | 10h | 2009-02-23 A | 2009-02-24 A | 207 | 100% |  | 2009-02-18 | 2009-02-19 | 10h |  |  | start no earlier than 2009-02-21 | Sanika [40%] | 4h | 4h |  |  | 293 | MDSS127 | 2 days |  |
| 209 | 1.30.2.5 | TC: enter/maintain people in the system |  | 10h | 2009-02-24 A | 2009-02-25 A | 208 | 100% |  | 2009-02-19 | 2009-02-20 | 10h |  |  | start no earlier than 2009-02-21 | Sanika [40%] | 4h | 4h |  |  | 294 | MDSS114 |  |  |
| 210 | 1.30.2.6 | TC: create synonyms for imported Geo entities |  | 10h | 2009-02-25 A | 2009-02-26 A | 209 | 100% |  | 2009-02-20 | 2009-02-23 | 10h |  |  |  | Sanika [40%] | 4h | 4h |  |  | 295 | MDSS112 |  |  |
| 211 | 1.30.2.7 | TC: User Admin Screen for account management |  | 10h | 2009-02-11 A | 2009-02-12 A |  | 100% |  | 2009-02-11 | 2009-02-12 | 10h |  |  | start no earlier than 2009-02-11 | Saul [40%] | 4h | 4h |  |  | 296 | MDSS142 | 3 days |  |
| 212 | 1.30.2.8 | TC: user Admin Screen for Role assignment |  | 10h | 2009-02-12 A | 2009-02-13 A | 211 | 100% |  | 2009-02-12 | 2009-02-13 | 10h |  |  | start no earlier than 2009-02-01 | Saul [40%] | 4h | 4h |  |  | 297 | MDSS144 | 2 days |  |
| 213 | 1.30.2.9 | TC: Change date/time format |  | 10h | 2009-03-02 A | 2009-03-03 A | 212 | 100% |  | 2009-02-19 | 2009-02-20 | 10h |  |  | start no earlier than 2009-03-02 | Saul [40%] | 4h | 4h |  |  | 301 | MDSS120 |  |  |
| 214 | 1.30.2.10 | TC: Change geo root |  | 10h | 2009-03-03 A | 2009-03-04 A | 213 | 100% |  | 2009-02-20 | 2009-02-23 | 10h |  |  |  | Saul [40%] | 4h | 4h |  |  | 302 | MDSS122 |  |  |
| 215 | 1.30.2.11 | TC: Select the user language |  | 10h | 2009-03-04 A | 2009-03-05 A | 214 | 100% |  | 2009-02-23 | 2009-02-24 | 10h |  |  |  | Saul [40%] | 4h | 4h |  |  | 303 | MDSS118 |  |  |
| 216 | 1.30.2.12 | TC: Change date/time format |  | 10h | 2009-03-05 A | 2009-03-06 A | 215 | 100% |  | 2009-02-25 | 2009-02-26 | 10h |  |  |  | Saul [40%] | 4h | 4h |  |  | 304 | MDSS120 |  |  |

| ID | WBS | Task | Duration | Start | Finish | Predecessors | Complete | Baseline start | Baseline finish | Baseline duration | Constraint | Resources | Work | Actual work | Text4 | Text1 | Text2 | Text3 |
| --- | --- | --- | --- | --- | --- | --- | --- | --- | --- | --- | --- | --- | --- | --- | --- | --- | --- | --- |
| 217 | 1.30.3 | **Indicator Survey** | 1.25d | 2009-02-11 A | 2009-02-12 A |  | 100% | 2009-02-11 | 2009-02-12 | 1.25d |  |  | 4h | 4h | 305 |  |  |  |
| 218 | 1.30.3.1 | TC: Indicator survey - CRUD | 10h | 2009-02-11 A | 2009-02-12 A |  | 100% | 2009-02-11 | 2009-02-12 | 10h | start no earlier than 2009-02-11 | Sanika [40%] | 4h | 4h | 306 | MDSS026 |  |  |
| 219 | 1.30.4 | **Case Surveilance** | 154h | 2009-03-11 A | 2009-04-07 A |  | 100% | 2009-03-12 | 2009-03-25 | 68.58h |  |  | 36h | 36h | 308 |  |  |  |
| 220 | 1.30.4.1 | TC: aggregated cases - CRUD | 8h | 2009-03-11 A | 2009-03-12 A | 248 | 100% | 2009-03-12 | 2009-03-13 | 5.71h | start no earlier than 2009-03-10 | Dave [50%] | 4h | 4h | 309 | MDSS002 | 5 days |  |
| 221 | 1.30.4.2 | TC: calculate CFR | 8h | 2009-03-12 A | 2009-03-13 A | 220 | 100% | 2009-03-13 | 2009-03-16 | 5.71h |  | Dave [50%] | 4h | 4h | 310 | MDSS087 | 4 days |  |
| 222 | 1.30.4.3 | TC: aggregated cases - dynamic query | 8h | 2009-03-13 A | 2009-03-16 A | 221 | 100% | 2009-03-16 | 2009-03-16 | 5.71h |  | Dave [50%] | 4h | 4h | 311 | MDSS129 | 5 days |  |
| 223 | 1.30.4.4 | TC: Input or modify population data | 8h | 2009-03-16 A | 2009-03-17 A | 222 | 100% | 2009-03-16 | 2009-03-17 | 5.71h | start no earlier than 2009-02-01 | Dave [50%] | 4h | 4h | 312 | MDSS003 | 4 days |  |
| 224 | 1.30.4.5 | TC: Import population or annual growth rate data | 8h | 2009-03-17 A | 2009-03-18 A | 223 | 100% | 2009-03-17 | 2009-03-18 | 5.71h |  | Dave [50%] | 4h | 4h | 313 | MDSS083 |  |  |
| 225 | 1.30.4.6 | TC: input/modify outbreak thresholds | 8h | 2009-03-18 A | 2009-03-19 A | 224 | 100% | 2009-03-18 | 2009-03-18 | 5.71h |  | Dave [50%] | 4h | 4h | 314 | MDSS105 | 5 days |  |
| 226 | 1.30.4.7 | TC :import outbreak thresholds | 8h | 2009-03-19 A | 2009-03-20 A | 225 | 100% | 2009-03-18 | 2009-03-19 | 5.71h |  | Dave [50%] | 4h | 4h | 315 | MDSS085 | 5 days |  |
| 227 | 1.30.4.8 | TC: Calculate annual or seasonal population | 8h | 2009-03-20 A | 2009-03-23 A | 226 | 100% | 2009-03-19 | 2009-03-20 | 5.71h |  | Dave [50%] | 4h | 4h | 316 | MDSS073 | 5 days |  |
| 228 | 1.30.4.9 | TC: individual case - query | 4h | 2009-04-07 A | 2009-04-07 A |  | 100% | 2009-03-24 | 2009-03-25 | 5.71h | start no earlier than 2009-04-07 | Dave | 4h | 4h | 320 | MDSS128 | 5 days |  |
| 229 | 1.30.5 | **Intervention monitoring** | 309.72h | 2009-02-11 A | 2009-04-06 A |  | 100% | 2009-02-11 | 2009-04-01 | 282.04h |  |  | 91.2h | 91.2h | 321 |  |  |  |
| 230 | 1.30.5.1 | **IRS** | 114h | 2009-03-16 A | 2009-04-03 A |  | 100% | 2009-03-25 | 2009-03-31 | 34.29h |  |  | 44h | 44h | 322 |  |  |  |
| 231 | 1.30.5.1.1 | TC: enter/maintain spray team member | 8h | 2009-03-16 A | 2009-03-16 A |  | 100% | 2009-03-25 | 2009-03-25 | 5.71h | start no earlier than 2009-03-16 | Saul [50%] | 4h | 4h | 323 | MDSS113 |  |  |
| 232 | 1.30.5.1.2 | TC: enter/maintain IRS teams | 8h | 2009-03-17 A | 2009-03-17 A | 231 | 100% | 2009-03-25 | 2009-03-26 | 5.71h |  | Saul [50%] | 4h | 4h | 324 | MDSS141 |  |  |
| 233 | 1.30.5.1.3 | TC:Indicator survey query | 8h | 2009-03-25 A | 2009-03-25 A | 227, 232 | 100% |  |  |  | start no earlier than 2009-03-25 | Dave [50%] | 4h | 4h | 307 | MDSS140 |  |  |
| 234 | 1.30.5.1.4 | TC: ITN aggregated data - query | 8h | 2009-03-30 A | 2009-03-30 A | 233, 132 | 100% | 2009-02-25 | 2009-02-26 | 10h | start no earlier than 2009-03-30 | Dave [50%] | 4h | 4h | 333 | MDSS136 |  |  |
| 235 | 1.30.5.1.5 | TC: ITN by facility - query | 8h | 2009-03-31 A | 2009-03-31 A | 234, 134 | 100% | 2009-03-02 | 2009-03-03 | 10h |  | Dave [50%] | 4h | 4h | 336 | MDSS135 |  |  |
| 236 | 1.30.5.1.6 | TC: ITN by community - query | 8h | 2009-04-01 A | 2009-04-01 A | 235 | 100% |  |  |  |  | Dave [50%] | 4h | 4h | 385 | MDSS137 |  |  |
| 237 | 1.30.5.1.7 | TC: ITN by household - query | 10h | 2009-04-02 A | 2009-04-03 A | 236 | 100% | 2009-03-05 | 2009-03-06 | 10h | start no earlier than 2009-02-09 | Sanika [40%] | 4h | 4h | 338 | MDSS138 |  | 10 |
| 238 | 1.30.5.1.8 | TC: individual cases - CRUD | 16h | 2009-03-24 A | 2009-03-25 A |  | 100% | 2009-03-23 | 2009-03-23 | 5.71h | finish no earlier than 2009-03-25 | Sanika [25%] | 4h | 4h | 318 | MDSS001 | 5 days |  |
| 239 | 1.30.5.1.9 | TC: input or modify IRS targets | 8h | 2009-03-17 A | 2009-03-17 A |  | 100% | 2009-03-26 | 2009-03-27 | 5.71h | start no earlier than 2009-03-17 | Saul [50%] | 4h | 4h | 325 | MDSS028 |  |  |
| 240 | 1.30.5.1.10 | TC: Configure items relating to application rate | 8h | 2009-03-18 A | 2009-03-18 A | 239 | 100% | 2009-03-27 | 2009-03-30 | 5.71h |  | Saul [50%] | 4h | 4h | 326 | MDSS106 |  |  |
| 241 | 1.30.5.1.11 | TC: IRS - CRUD | 8h | 2009-03-25 A | 2009-03-25 A | 240 | 100% | 2009-03-30 | 2009-03-30 | 5.71h | start no earlier than 2009-03-25 | Saul [50%] | 4h | 4h | 327 | MDSS027 |  |  |

| ID | WBS | Task | Type | Duration | Start | Finish | Predecessors | Complete | Baseline start | Baseline finish | Baseline duration | Total slack | Constraint | Resources | Work | Actual work | Text4 | Text1 | Text2 | Text3 |
| --- | --- | --- | --- | --- | --- | --- | --- | --- | --- | --- | --- | --- | --- | --- | --- | --- | --- | --- | --- | --- |
| 242 | 1.30.5.2 | **Larvaciding** |  | 20h | 2009-02-11 A | 2009-02-13 A |  | 100% | 2009-02-11 | 2009-02-13 | 20h |  |  |  | 4h | 4h | 329 |  |  |  |
| 243 | 1.30.5.2.1 | TC: larviciding - CRUD |  | 20h | 2009-02-11 A | 2009-02-13 A |  | 100% | 2009-02-11 | 2009-02-13 | 20h |  | start no earlier than 2009-02-11 | Lars [20%] | 4h | 4h | 330 | MDSS031 | 8 days |  |
| 244 | 1.30.5.3 | **ITN** |  | 170h | 2009-02-26 A | 2009-03-27 A |  | 100% | 2009-02-23 | 2009-03-06 | 70h |  |  |  | 27.2h | 27.2h | 331 |  |  |  |
| 245 | 1.30.5.3.1 | TC: ITN aggregated data - CRUD |  | 10h | 2009-02-26 A | 2009-02-27 A | 210 | 100% | 2009-02-23 | 2009-02-24 | 10h |  |  | Sanika [40%] | 4h | 4h | 332 | MDSS080 | 5 days |  |
| 246 | 1.30.5.3.2 | TC: ITN facility distribution - CRUD |  | 10h | 2009-03-02 A | 2009-03-03 A | 245 | 100% | 2009-02-26 | 2009-02-27 | 10h |  |  | Sanika [40%] | 4h | 4h | 334 | MDSS030 | 5 days |  |
| 247 | 1.30.5.3.3 | TC: ITN community distribution - CRUD |  | 10h | 2009-03-03 A | 2009-03-04 A | 246 | 100% | 2009-02-27 | 2009-03-02 | 10h |  |  | Sanika [40%] | 4h | 4h | 335 | MDSS079 | 5 days |  |
| 248 | 1.30.5.3.4 | TC: ITN by household - CRUD |  | 10h | 2009-03-10 A | 2009-03-11 A | 247 | 100% | 2009-03-04 | 2009-03-05 | 10h |  | start no earlier than 2009-03-10 | Dave [40%] | 4h | 4h | 337 | MDSS082 | 5 days | 10 |
| 249 | 1.30.5.3.5 | TC: Change visibility of a GUI field |  | 8h | 2009-03-05 A | 2009-03-06 A |  | 100% |  |  |  |  |  | Sanika [40%] | 3.2h | 3.2h | 366 | MDSS117 |  |  |
| 250 | 1.30.5.3.6 | TC: calculate incidence |  | 8h | 2009-03-26 A | 2009-03-26 A | 241 | 100% | 2009-03-20 | 2009-03-23 | 5.71h |  |  | Saul [50%] | 4h | 4h | 317 | MDSS086 | 5 days |  |
| 251 | 1.30.5.3.7 | TC: Outbreak notification |  | 8h | 2009-03-27 A | 2009-03-27 A | 250 | 100% | 2009-03-23 | 2009-03-24 | 5.71h |  |  | Saul [50%] | 4h | 4h | 319 | MDSS124 | 5 days |  |
| 252 | 1.30.5.4 | **Intervention Planning** |  | 5.72h | 2009-04-06 A | 2009-04-06 A |  | 100% | 2009-03-31 | 2009-04-01 | 5.71h |  |  |  | 4h | 4h | 339 |  |  |  |
| 253 | 1.30.5.4.1 | TC: Intervention planning |  | 5.72h | 2009-04-06 A | 2009-04-06 A |  | 100% | 2009-03-31 | 2009-04-01 | 5.71h |  | start no earlier than 2009-04-06 | Dave [69.9%] | 4h | 4h | 340 | MDSS077 |  |  |
| 254 | 1.30.5.5 | **IPT** |  | 40h | 2009-02-13 A | 2009-02-20 A |  | 100% | 2009-02-13 | 2009-02-20 | 40h |  |  |  | 8h | 8h | 341 |  |  |  |
| 255 | 1.30.5.5.1 | TC: IPT aggregated - CRUD |  | 20h | 2009-02-13 A | 2009-02-17 A | 243 | 100% | 2009-02-13 | 2009-02-17 | 20h |  |  | Lars [20%] | 4h | 4h | 342 | MDSS069 |  |  |
| 256 | 1.30.5.5.2 | TC: IPT individual - CRUD |  | 20h | 2009-02-18 A | 2009-02-20 A | 255 | 100% | 2009-02-18 | 2009-02-20 | 20h |  |  | Lars [20%] | 4h | 4h | 343 | MDSS081 |  | 10 |
| 257 | 1.30.5.6 | **Stock Control** |  | 20h | 2009-02-20 A | 2009-02-24 A |  | 100% | 2009-02-20 | 2009-02-24 | 20h |  |  |  | 4h | 4h | 344 |  |  |  |
| 258 | 1.30.5.6.1 | TC: Stock Control |  | 20h | 2009-02-20 A | 2009-02-24 A | 256 | 100% | 2009-02-20 | 2009-02-24 | 20h |  |  | Lars [20%] | 4h | 4h | 345 | MDSS032 |  |  |
| 259 | 1.31 | Create standard queries and reports |  | 114.28h | 2009-07-01 | 2009-07-21 | 253 |  | 2009-04-08 | 2009-04-29 | 114.28h | 9.36d | start no earlier than 2009-07-01 | Marlize [70%] | 80h |  | 346 |  |  |  |
| 260 | 1.32 | Order MDSS Hardware | milestone | 0h | 2009-06-30 | 2009-06-30 |  |  | 2009-02-02 | 2009-02-02 | 0h | 24.65d | start no earlier than 2009-06-30 | Marlize [70%] |  |  | 351 |  |  |  |
| 261 | 1.33 | Ready for Pilot Roll-Out | milestone | 8h | 2009-07-31 | 2009-07-31 |  |  | 2009-06-30 | 2009-06-30 | 8h | 0.65d | start no earlier than 2009-07-31 |  |  |  | 358 |  |  |  |
