# 09 02 05 oz MDSS

Schedule from MS Project, 2009-02-02 to 2009-03-25, costs in USD.
Misty Heights

## Calendars

- Standard: Mon-Fri 08:00-12:00, 13:00-17:00; Sat-Sun off.

## Resources

| Resource | Group | Rate |
| --- | --- | --- |
| Nathan | Terra Frame | 115 |
| Thomas (Oz) | Terra Frame | 115 |
| Justin | Terra Frame | 115 |
| Darrell | Terra Frame | 115 |
| MRC | Supplier |  |
| External TF | Terra Frame |  |
| Marlize | Project |  |
| Mike | Project |  |

## Schedule

| ID | WBS | Task | Type | Duration | Start | Finish | Predecessors | Total slack | Free slack | Constraint | Resources | Work | Cost | Text1 | Text2 |
| --- | --- | --- | --- | --- | --- | --- | --- | --- | --- | --- | --- | --- | --- | --- | --- |
| 1 | 1 | **MDSS Implementation** |  | 37.47d? | 2009-02-02 08:00 | 2009-03-25 11:45 |  | 0d |  |  |  | 1805.02h | 97,060 |  |  |
| 2 | 1.1 | **Create Prototype (Entomology)** |  | 36.47d? | 2009-02-02 08:00 | 2009-03-24 11:45 |  | 0d |  |  |  | 972h | 86,940 |  |  |
| 3 | 1.1.1 | **System requirements** |  | 20d? | 2009-02-02 08:00 | 2009-02-27 16:59 |  | 0d |  |  |  | 520h | 34,960 |  |  |
| 4 | 1.1.1.1 | Dev: Ontology Schema and implementation for MIRO |  | 5.88d? | 2009-02-02 08:00 | 2009-02-09 16:03 |  | 81.29d | 0d |  | Thomas (Oz) [85%] | 40h | 4,600 | SYS08 | 5 days |
| 5 | 1.1.1.2 | Dev: Geography MOJO attributes (PostGIS phase 1) |  | 8.24d? | 2009-02-02 08:00 | 2009-02-12 09:52 |  | 0d |  |  | Nathan [85%] | 56h | 6,440 | SYS03-01 | 7 days |
| 6 | 1.1.1.3 | Dev: Geography functions integrated into the query API |  | 8.24d? | 2009-02-12 09:52 | 2009-02-24 11:45 | 5 | 0d |  |  | Nathan [85%] | 56h | 6,440 | SYS03-02 | 7 days |
| 7 | 1.1.1.4 | Dev: Enquiry integration with selected reporting tool |  | 4d? | 2009-02-02 08:00 | 2009-02-05 17:00 |  | 81d | 0d |  | Justin | 32h | 3,680 | SYS09 | 4 days |
| 8 | 1.1.1.5 | Dev: GIS visual tool integration |  | 7.06d? | 2009-02-09 16:03 | 2009-02-18 16:31 | 4 | 81.29d | 0d |  | Thomas (Oz) [85%] | 48h | 5,520 | SYS10 | 6 days |
| 9 | 1.1.1.6 | Dev: Geoserver integration |  | 7.06d? | 2009-02-18 16:31 | 2009-02-27 16:59 | 8 | 81.29d | 0d |  | Thomas (Oz) [85%] | 48h | 5,520 | SYS11 | 6 days |
| 10 | 1.1.1.7 | Dev: DHTML tree widget selection and integration |  | 3.33d? | 2009-02-02 08:00 | 2009-02-05 10:40 |  | 87d | 0d |  | External TF [150%] | 40h |  | SYS02 | 5 days |
| 11 | 1.1.1.8 | Dev: Export an XLS file with a pre-populated headers |  | 1.33d? | 2009-02-05 10:40 | 2009-02-06 14:20 | 10 | 87d | 0d |  | External TF [150%] | 16h |  | SYS04-01 | 2 days |
| 12 | 1.1.1.9 | Dev: Import XLS file. Map column headers to fields of a class |  | 1.33d? | 2009-02-06 14:20 | 2009-02-09 17:00 | 11 | 87d | 0d |  | External TF [150%] | 16h |  | SYS04-02 | 2 days |
| 13 | 1.1.1.10 | Dev: Import records from XLS spreadsheet |  | 2.67d? | 2009-02-10 08:00 | 2009-02-12 14:20 | 12 | 87d | 0d |  | External TF [150%] | 32h |  | SYS04-03 | 4 days |
| 14 | 1.1.1.11 | Dev: Localizable Calendar widget integration |  | 1.18d? | 2009-02-24 11:45 | 2009-02-25 14:10 | 6 | 0d |  |  | Nathan [85%] | 8h | 920 | SYS13 | 1 day |
| 15 | 1.1.1.12 | Dev: Represent query criteria as in a user interface |  | 3.33d? | 2009-02-12 14:20 | 2009-02-17 17:00 | 13 | 87d | 0d |  | External TF [150%] | 40h |  | SYS06-01 | 5 days |
| 16 | 1.1.1.13 | Dev: Represent query criteria in back-end |  | 3.33d? | 2009-02-18 08:00 | 2009-02-23 10:40 | 15 | 87d | 0d |  | External TF [150%] | 40h |  | SYS06-02 | 5 days |
| 17 | 1.1.1.14 | Dev: Save query criteria to the database |  | 0.67d? | 2009-02-23 10:40 | 2009-02-23 17:00 | 16 | 87d | 0d |  | External TF [150%] | 8h |  | SYS06-03 | 1 day |
| 18 | 1.1.1.15 | Dev: User Admin Screen for account management |  | 2d? | 2009-02-24 08:00 | 2009-02-25 17:00 | 17 | 87d |  |  | External TF [150%] | 24h |  |  | 3 days |
| 19 | 1.1.1.16 | Dev: user Admin Screen for Role assignment |  | 2.35d? | 2009-02-25 14:10 | 2009-02-27 16:59 | 14 | 0d |  |  | Nathan [85%] | 16h | 1,840 |  | 2 days |
| 20 | 1.1.2 | **Prototype Use cases** |  | 36.47d? | 2009-02-02 08:00 | 2009-03-24 11:45 |  | 0d |  |  |  | 436h | 50,140 |  |  |
| 21 | 1.1.2.1 | Dev: configure import interfaces |  | 18.82h | 2009-02-27 16:59 | 2009-03-04 10:49 | 19 | 0d |  |  | Nathan [85%] | 16h | 1,840 | MDSS100 | 2 days |
| 22 | 1.1.2.2 | Dev: login to MDSS |  | 4h | 2009-02-02 08:00 | 2009-02-02 12:00 |  | 82.5d | 0d |  | Darrell | 4h | 460 | MDSS107 | 0.5 days |
| 23 | 1.1.2.3 | **Search for a geo entity** |  | 14.12d? | 2009-03-04 10:49 | 2009-03-24 11:45 |  | 0d |  |  |  | 96h | 11,040 | MDSS101 |  |
| 24 | 1.1.2.3.1 | Dev: Search for a geo entity - ontology tree |  | 5.88d? | 2009-03-04 10:49 | 2009-03-12 09:52 | 21 | 0d |  |  | Nathan [85%] | 40h | 4,600 | MDSS111 | 4 days |
| 25 | 1.1.2.3.2 | Dev: Search for a geo entity - filtered |  | 2.35d? | 2009-03-12 09:52 | 2009-03-16 13:42 | 24 | 0d |  |  | Nathan [85%] | 16h | 1,840 | MDSS101 |  |
| 26 | 1.1.2.3.3 | Dev: Search for a geo entity - Hierarchy table |  | 2.35d? | 2009-03-16 13:42 | 2009-03-18 16:31 | 25 | 0d |  |  | Nathan [85%] | 16h | 1,840 | MDSS101 |  |
| 27 | 1.1.2.3.4 | Dev: Search for a geo entity - combo boxes |  | 2.35d? | 2009-03-18 16:31 | 2009-03-23 10:21 | 26 | 0d |  |  | Nathan [85%] | 16h | 1,840 | MDSS101 |  |
| 28 | 1.1.2.3.5 | Dev: Search for a geo entity - finalise |  | 1.18d? | 2009-03-23 10:21 | 2009-03-24 11:45 | 27 | 0d |  |  | Nathan [85%] | 8h | 920 | MDSS101 |  |
| 29 | 1.1.2.4 | Dev: Submit a mosquito collection |  | 5d? | 2009-02-02 13:00 | 2009-02-09 12:00 | 22 | 82.5d | 0d |  | Darrell | 40h | 4,600 | MDSS024 | 5 days |
| 30 | 1.1.2.5 | Dev: Submit collection points |  | 3d? | 2009-02-09 13:00 | 2009-02-12 12:00 | 29 | 82.5d | 0d |  | Darrell | 24h | 2,760 | MDSS016 | 5 days |
| 31 | 1.1.2.6 | Dev: Species identification |  | 2d? | 2009-02-06 08:00 | 2009-02-09 17:00 | 7 | 81d | 0d |  | Justin | 16h | 1,840 | MDSS012 | 5 days |
| 32 | 1.1.2.7 | Dev: Infectivity assay |  | 2d? | 2009-02-10 08:00 | 2009-02-11 17:00 | 31 | 81d | 0d |  | Justin | 16h | 1,840 | MDSS022 | 5 days |
| 33 | 1.1.2.8 | Dev: Molecular assay |  | 3d? | 2009-02-12 08:00 | 2009-02-16 17:00 | 32 | 81d | 0d |  | Justin | 24h | 2,760 | MDSS010 | 5 days |
| 34 | 1.1.2.9 | Dev: Biochemical assay |  | 2d? | 2009-02-17 08:00 | 2009-02-18 17:00 | 33 | 81d | 0d |  | Justin | 16h | 1,840 | MDSS011 | 5 days |
| 35 | 1.1.2.10 | Dev: Biochemical cut-off values |  | 1d? | 2009-02-19 08:00 | 2009-02-19 17:00 | 34 | 81d | 0d |  | Justin | 8h | 920 | MDSS014 | 5 days |
| 36 | 1.1.2.11 | Dev: Resistance cut-off values |  | 1d? | 2009-02-20 08:00 | 2009-02-20 17:00 | 35 | 81d | 0d |  | Justin | 8h | 920 | MDSS009 | 5 days |
| 37 | 1.1.2.12 | Dev: Adult discriminating dose assay |  | 3d? | 2009-02-12 13:00 | 2009-02-17 12:00 | 30 | 82.5d | 0d |  | Darrell | 24h | 2,760 | MDSS004 | 5 days |
| 38 | 1.1.2.13 | Dev: Larvae discriminating dose assay |  | 2d? | 2009-02-17 13:00 | 2009-02-19 12:00 | 37 | 82.5d | 0d |  | Darrell | 16h | 1,840 | MDSS008 | 5 days |
| 39 | 1.1.2.14 | Dev: Adult knock down assay |  | 3d? | 2009-02-19 13:00 | 2009-02-24 12:00 | 38 | 82.5d | 0d |  | Darrell | 24h | 2,760 | MDSS006 | 5 days |
| 40 | 1.1.2.15 | Dev: Larvae lethal dose assay |  | 2d? | 2009-02-24 13:00 | 2009-02-26 12:00 | 39 | 82.5d | 0d |  | Darrell | 16h | 1,840 | MDSS007 | 5 days |
| 41 | 1.1.2.16 | Dev: Efficacy assay |  | 2d? | 2009-02-26 13:00 | 2009-03-02 12:00 | 40 | 82.5d | 0d |  | Darrell | 16h | 1,840 | MDSS025 | 5 days |
| 42 | 1.1.2.17 | Dev: Entomology dynamic query |  | 5d? | 2009-02-23 08:00 | 2009-02-27 17:00 | 36 | 81d | 0d |  | Justin | 40h | 4,600 | MDSS145 | 5 days |
| 43 | 1.1.2.18 | Dev: change visibility of fields on GUI |  | 32h | 2009-03-02 08:00 | 2009-03-05 17:00 | 42 | 81d |  |  | Justin | 32h | 3,680 | MDSS117 | 4 days |
| 44 | 1.1.3 | Dev: Integration of developed functionality |  | 2d? | 2009-03-02 13:00 | 2009-03-04 12:00 | 41 | 82.5d | 0d |  | Darrell | 16h | 1,840 |  |  |
| 45 | 1.2 | Delivery of prototype | milestone | 1d? | 2009-03-24 11:45 | 2009-03-25 11:45 | 2, 44 | 0d |  |  |  |  |  |  |  |
| 46 | 1.3 | Required delivery of prototype | milestone | 8h | 2009-03-02 08:00 | 2009-03-02 17:00 |  | 0d |  | must start on 2009-03-02 08:00 |  |  |  |  |  |
| 47 | 1.4 | Deliver data to be imported | milestone | 0h | 2009-02-20 17:00 | 2009-02-20 17:00 |  | 0d |  | must finish on 2009-02-20 17:00 | Mike |  |  |  |  |
| 48 | 1.5 | Create test cases for prototype |  | 14.29d? | 2009-02-02 08:00 | 2009-02-20 10:17 |  | 0.29d | 0d |  | Marlize [70%] | 80h |  |  |  |
| 49 | 1.6 | Test defect logging procedures |  | 2.86d? | 2009-02-20 10:17 | 2009-02-25 09:08 | 48 | 0.29d | 0d |  | Marlize [70%] | 16h |  |  |  |
| 50 | 1.7 | Prepare test data |  | 5.71h | 2009-02-25 09:08 | 2009-02-25 15:51 | 49, 47 | 0.29d | 0d |  | Marlize [70%] | 4h |  |  |  |
| 51 | 1.8 | Learn BIRT report writer |  | 22.86h | 2009-02-25 15:51 | 2009-03-02 14:42 | 50 | 0.29d | 0d |  | Marlize [70%] | 16h |  |  |  |

| ID | WBS | Task | Type | Duration | Start | Finish | Predecessors | Total slack | Free slack | Constraint | Deadline | Resources | Work | Text1 |
| --- | --- | --- | --- | --- | --- | --- | --- | --- | --- | --- | --- | --- | --- | --- |
| 52 | 1.9 | **Test Prototype Submit Change Requests** |  | 14.81d? | 2009-03-02 14:42 | 2009-03-23 13:09 | 51 | 0.29d |  |  |  |  | 125.02h |  |
| 53 | 1.9.1 | **Test: Geo entity search and maintanance** |  | 7.15d? | 2009-03-02 14:42 | 2009-03-11 15:52 |  | 0.29d |  |  |  |  | 40.02h |  |
| 54 | 1.9.1.1 | Test: login to MDSS | milestone | 0h | 2009-03-02 16:59 | 2009-03-02 16:59 |  | 0d |  | must start on 2009-03-02 16:59 | 2009-02-03 17:00 | Marlize [70%] |  | MDSS107 |
| 55 | 1.9.1.2 | Test: Search for a geo entity - tree |  | 0.36d? | 2009-03-02 14:42 | 2009-03-03 08:34 |  | 73.68d | 0d |  |  | Marlize [70%] | 2h | MDSS111 |
| 56 | 1.9.1.3 | Submit defects: Search for a geo entity - tree |  | 0.71d? | 2009-03-03 08:34 | 2009-03-03 15:17 | 55 | 73.68d | 0d |  |  | Marlize [70%] | 4h | MDSS111 |
| 57 | 1.9.1.4 | Test: create a geo entity |  | 2.86h | 2009-03-03 15:17 | 2009-03-04 09:08 | 56 | 73.68d | 0d |  |  | Marlize [70%] | 2h | MDSS101 |
| 58 | 1.9.1.5 | Submit defects: create a geo entity |  | 5.71h | 2009-03-04 09:08 | 2009-03-04 15:51 | 57 | 73.68d | 0d |  |  | Marlize [70%] | 4h | MDSS101 |
| 59 | 1.9.1.6 | Test: Search for a geo entity - filtered |  | 0.36d? | 2009-03-04 15:51 | 2009-03-05 09:42 | 58 | 73.68d | 0d |  |  | Marlize [70%] | 2h | MDSS101 |
| 60 | 1.9.1.7 | Submit defects: Search for a geo entity - filtered |  | 0.36d | 2009-03-05 09:42 | 2009-03-05 13:35 | 59 | 73.68d | 0d |  |  | Marlize [70%] | 2.02h | MDSS101 |
| 61 | 1.9.1.8 | Test: Search for a geo entity - Hierarchy table |  | 1.43d? | 2009-03-05 13:35 | 2009-03-09 08:01 | 60 | 73.68d | 0d |  |  | Marlize [70%] | 8h | MDSS101 |
| 62 | 1.9.1.9 | Submit defects: Search for a geo entity - Hierarchy table |  | 0.71d? | 2009-03-09 08:01 | 2009-03-09 14:44 | 61 | 73.68d | 0d |  |  | Marlize [70%] | 4h | MDSS101 |
| 63 | 1.9.1.10 | Test: Search for a geo entity - combo boxes |  | 0.36d? | 2009-03-09 14:44 | 2009-03-10 08:35 | 62 | 73.68d | 0d |  |  | Marlize [70%] | 2h | MDSS101 |
| 64 | 1.9.1.11 | Submit defects: Search for a geo entity - combo boxes |  | 0.36d? | 2009-03-10 08:35 | 2009-03-10 11:27 | 63 | 73.68d | 0d |  |  | Marlize [70%] | 2h | MDSS101 |
| 65 | 1.9.1.12 | Test: Call 101 from 024, 016, 025 |  | 0.36d? | 2009-03-10 11:27 | 2009-03-10 15:18 | 64 | 73.68d | 0d |  |  | Marlize [70%] | 2h | MDSS101 |
| 66 | 1.9.1.13 | Submit defects: Call 101 from 024, 016, 025 |  | 0.36d? | 2009-03-10 15:18 | 2009-03-11 09:09 | 65 | 73.68d | 0d |  |  | Marlize [70%] | 2h | MDSS101 |
| 67 | 1.9.1.14 | Write change request MDSS101, MDSS111 |  | 0.71d? | 2009-03-11 09:09 | 2009-03-11 15:52 | 66 | 73.68d | 0d |  |  | Marlize [70%] | 4h | MDSS101 |
| 68 | 1.9.2 | Test: changing visibility of fields in GUI |  | 1.43h | 2009-03-11 15:52 | 2009-03-12 08:18 | 67 | 77.6d | 0d |  |  | Marlize [70%] | 1h | MDSS117 |
| 69 | 1.9.3 | Submit defects: changing visibility of fields in GUI |  | 2.86h | 2009-03-12 08:18 | 2009-03-12 11:09 | 68 | 71.71d | 0d |  |  | Marlize [70%] | 2h | MDSS117 |
| 70 | 1.9.4 | Test: Submit a mosquito collection |  | 0.12d? | 2009-03-12 11:09 | 2009-03-12 13:09 | 69 | 70.73d | 0d | start no earlier than 2009-03-09 08:00 |  | Mike | 1h | MDSS024 |
| 71 | 1.9.5 | Submit defects: Submit a mosquito collection |  | 2h | 2009-03-12 13:09 | 2009-03-12 15:09 | 70 | 70.73d | 0d |  |  | Mike | 2h | MDSS024 |
| 72 | 1.9.6 | Test: search/update/delete record |  | 1h | 2009-03-12 15:09 | 2009-03-12 16:09 | 71 | 70.73d | 0d |  |  | Mike | 1h | MDSS75 |
| 73 | 1.9.7 | Submit defects: search/update/delete |  | 2h | 2009-03-12 16:09 | 2009-03-13 09:09 | 72 | 1.95d | 0d |  |  | Mike | 2h |  |
| 74 | 1.9.8 | Test: Submit collection points |  | 1h | 2009-03-13 09:09 | 2009-03-13 10:09 | 73 | 1.95d | 0d |  |  | Mike | 1h | MDSS016 |
| 75 | 1.9.9 | Submit defects: Submit collection points |  | 1h | 2009-03-13 10:09 | 2009-03-13 11:09 | 74 | 1.95d | 0d |  |  | Mike | 1h | MDSS016 |
| 76 | 1.9.10 | Write change request: Collections |  | 4h | 2009-03-13 11:09 | 2009-03-13 16:09 | 75 | 1.95d | 0d |  |  | Mike | 4h | MDSS024 |
| 77 | 1.9.11 | Test: Import assay and collection data |  | 1h | 2009-03-13 16:09 | 2009-03-16 08:09 | 76, 50 | 1.95d | 0d |  |  | Mike | 1h | MDSS102 |
| 78 | 1.9.12 | Submit defects: generic import functionality |  | 2h | 2009-03-16 08:09 | 2009-03-16 10:09 | 77 | 1.95d | 0d |  |  | Mike | 2h | MDSS102 |
| 79 | 1.9.13 | Test:Species identification |  | 1h | 2009-03-16 10:09 | 2009-03-16 11:09 | 78 | 1.95d | 0d |  |  | Mike | 1h | MDSS012 |
| 80 | 1.9.14 | Submit defects: Species identification |  | 1h | 2009-03-16 11:09 | 2009-03-16 13:09 | 79 | 1.95d | 0d |  |  | Mike | 1h | MDSS012 |
| 81 | 1.9.15 | Test: Infectivity assay |  | 1h | 2009-03-16 13:09 | 2009-03-16 14:09 | 80 | 1.95d | 0d |  |  | Mike | 1h | MDSS022 |
| 82 | 1.9.16 | Submit defects: Infectivity assay |  | 1h | 2009-03-16 14:09 | 2009-03-16 15:09 | 81 | 1.95d | 0d |  |  | Mike | 1h | MDSS022 |
| 83 | 1.9.17 | Test: Molecular assay |  | 2h | 2009-03-16 15:09 | 2009-03-17 08:09 | 82 | 1.95d | 0d |  |  | Mike | 2h | MDSS010 |
| 84 | 1.9.18 | Submit defects: Molecular assay |  | 2h | 2009-03-17 08:09 | 2009-03-17 10:09 | 83 | 1.95d | 0d |  |  | Mike | 2h | MDSS010 |
| 85 | 1.9.19 | Test: Biochemical assay |  | 1h | 2009-03-17 10:09 | 2009-03-17 11:09 | 84 | 1.95d | 0d |  |  | Mike | 1h | MDSS011 |
| 86 | 1.9.20 | Submit defects: Biochemical assay |  | 1h | 2009-03-17 11:09 | 2009-03-17 13:09 | 85 | 1.95d | 0d |  |  | Mike | 1h | MDSS011 |
| 87 | 1.9.21 | Test: Biochemical cut-off values |  | 1h | 2009-03-17 13:09 | 2009-03-17 14:09 | 86 | 1.95d | 0d |  |  | Mike | 1h | MDSS014 |
| 88 | 1.9.22 | Submit defects: Biochemical cut-off values |  | 1h | 2009-03-17 14:09 | 2009-03-17 15:09 | 87 | 1.95d | 0d |  |  | Mike | 1h | MDSS014 |
| 89 | 1.9.23 | Write change request: Mechanisms |  | 4h | 2009-03-17 15:09 | 2009-03-18 10:09 | 88 | 1.95d | 0d |  |  | Mike | 4h |  |
| 90 | 1.9.24 | Test: Adult discriminating dose assay |  | 0.25d? | 2009-03-18 10:09 | 2009-03-18 13:09 | 89 | 1.95d | 0d |  |  | Mike | 2h | MDSS004 |
| 91 | 1.9.25 | Submit defects: Adult discriminating dose assay |  | 2h | 2009-03-18 13:09 | 2009-03-18 15:09 | 90 | 1.95d | 0d |  |  | Mike | 2h | MDSS004 |
| 92 | 1.9.26 | Test: Larvae discriminating dose assay |  | 0.12d? | 2009-03-18 15:09 | 2009-03-18 16:09 | 91 | 1.95d | 0d |  |  | Mike | 1h | MDSS008 |
| 93 | 1.9.27 | Submit defects: Larvae discriminating dose assay |  | 1h | 2009-03-18 16:09 | 2009-03-19 08:09 | 92 | 1.95d | 0d |  |  | Mike | 1h | MDSS008 |
| 94 | 1.9.28 | Test: Adult knock down assay |  | 0.12d? | 2009-03-19 08:09 | 2009-03-19 09:09 | 93 | 1.95d | 0d |  |  | Mike | 1h | MDSS006 |
| 95 | 1.9.29 | Submit defects: Adult knock down assay |  | 1h | 2009-03-19 09:09 | 2009-03-19 10:09 | 94 | 1.95d | 0d |  |  | Mike | 1h | MDSS006 |
| 96 | 1.9.30 | Test: Larvae lethal dose assay |  | 0.12d? | 2009-03-19 10:09 | 2009-03-19 11:09 | 95 | 1.95d | 0d |  |  | Mike | 1h | MDSS007 |
| 97 | 1.9.31 | Submit defects: Larvae lethal dose assay |  | 1h | 2009-03-19 11:09 | 2009-03-19 13:09 | 96 | 1.95d | 0d |  |  | Mike | 1h | MDSS007 |
| 98 | 1.9.32 | Test: Resistance cut-off values |  | 1h | 2009-03-19 13:09 | 2009-03-19 14:09 | 97 | 1.95d | 0d |  |  | Mike | 1h | MDSS009 |
| 99 | 1.9.33 | Submit defects: Resistance cut-off values |  | 1h | 2009-03-19 14:09 | 2009-03-19 15:09 | 98 | 1.95d | 0d |  |  | Mike | 1h | MDSS009 |
| 100 | 1.9.34 | Write change request: resistance assays |  | 4h | 2009-03-19 15:09 | 2009-03-20 10:09 | 99 | 1.95d | 0d |  |  | Mike | 4h |  |
| 101 | 1.9.35 | Test: Efficacy assay |  | 0.12d? | 2009-03-20 10:09 | 2009-03-20 11:09 | 100 | 1.95d | 0d |  |  | Mike | 1h | MDSS025 |
| 102 | 1.9.36 | Submit defects: Efficacy assay |  | 1h | 2009-03-20 11:09 | 2009-03-20 13:09 | 101 | 1.95d | 0d |  |  | Mike | 1h | MDSS025 |
| 103 | 1.9.37 | Write change request: Efficacy assay |  | 8h | 2009-03-20 13:09 | 2009-03-23 13:09 | 102 | 1.95d |  |  |  |  |  | MDSS025 |

| ID | WBS | Task | Duration | Start | Finish | Predecessors | Total slack | Free slack | Resources | Work | Cost | Text1 | Text2 |
| --- | --- | --- | --- | --- | --- | --- | --- | --- | --- | --- | --- | --- | --- |
| 104 | 1.9.38 | **Test: Entomology dynamic query and reports** | 5.89d | 2009-03-12 11:09 | 2009-03-20 10:18 | 69 | 3.18d |  |  | 33h |  | MDSS145 |  |
| 105 | 1.9.38.1 | Test: add Geo-entity fields | 1.43h | 2009-03-12 11:09 | 2009-03-12 13:35 |  | 71.71d | 0d | Marlize [70%] | 1h |  | MDSS145 |  |
| 106 | 1.9.38.2 | Test: add other fields | 1.43h | 2009-03-12 13:35 | 2009-03-12 15:01 | 105 | 71.71d | 0d | Marlize [70%] | 1h |  | MDSS145 |  |
| 107 | 1.9.38.3 | Test: add functions | 1.43h | 2009-03-12 15:01 | 2009-03-12 16:26 | 106 | 71.71d | 0d | Marlize [70%] | 1h |  | MDSS145 |  |
| 108 | 1.9.38.4 | Test: date ranges on collection date or assay date | 1.43h | 2009-03-12 16:26 | 2009-03-13 08:52 | 107 | 71.71d | 0d | Marlize [70%] | 1h |  | MDSS145 |  |
| 109 | 1.9.38.5 | Submit defects: Build query | 2.86h | 2009-03-13 08:52 | 2009-03-13 11:44 | 108 | 71.71d | 0d | Marlize [70%] | 2h |  | MDSS145 |  |
| 110 | 1.9.38.6 | Test: save query | 1.43h | 2009-03-13 11:44 | 2009-03-13 14:09 | 109 | 71.71d | 0d | Marlize [70%] | 1h |  | MDSS056 |  |
| 111 | 1.9.38.7 | Test: run a saved query | 1.43h | 2009-03-13 14:09 | 2009-03-13 15:35 | 110 | 71.71d | 0d | Marlize [70%] | 1h |  | MDSS056 |  |
| 112 | 1.9.38.8 | Test: modify a saved query | 1.43h | 2009-03-13 15:35 | 2009-03-16 08:01 | 111 | 71.71d | 0d | Marlize [70%] | 1h |  | MDSS056 |  |
| 113 | 1.9.38.9 | Test: export query results | 1.43h | 2009-03-16 08:01 | 2009-03-16 09:26 | 112 | 71.71d | 0d | Marlize [70%] | 1h |  | MDSS071 |  |
| 114 | 1.9.38.10 | Test: dump functionality | 1.43h | 2009-03-16 09:26 | 2009-03-16 10:52 | 113 | 71.71d | 0d | Marlize [70%] | 1h |  |  |  |
| 115 | 1.9.38.11 | Submit defects: deploy query | 2.86h | 2009-03-16 10:52 | 2009-03-16 14:43 | 114 | 71.71d | 0d | Marlize [70%] | 2h |  |  |  |
| 116 | 1.9.38.12 | Test: create thematic map from query | 11.43h | 2009-03-16 14:43 | 2009-03-18 09:09 | 115 | 71.71d | 0d | Marlize [70%] | 8h |  |  |  |
| 117 | 1.9.38.13 | Test: find query results in BIRT | 1.43h | 2009-03-18 09:09 | 2009-03-18 10:35 | 116 | 71.71d | 0d | Marlize [70%] | 1h |  | MDSS062 |  |
| 118 | 1.9.38.14 | Test: create a report template (table) | 2.86h | 2009-03-18 10:35 | 2009-03-18 14:26 | 117 | 71.71d | 0d | Marlize [70%] | 2h |  | MDSS062 |  |
| 119 | 1.9.38.15 | Test: Link a report template to query | 1.43h | 2009-03-18 14:26 | 2009-03-18 15:52 | 118 | 71.71d | 0d | Marlize [70%] | 1h |  | MDSS056 |  |
| 120 | 1.9.38.16 | Test: view/print/save a report | 1.43h | 2009-03-18 15:52 | 2009-03-19 08:18 | 119 | 71.71d | 0d | Marlize [70%] | 1h |  | MDSS062 |  |
| 121 | 1.9.38.17 | Test: change linked report | 1.43h | 2009-03-19 08:18 | 2009-03-19 09:43 | 120 | 71.71d | 0d | Marlize [70%] | 1h |  | MDSS062 |  |
| 122 | 1.9.38.18 | Submit defects: deploy query | 2.86h | 2009-03-19 09:43 | 2009-03-19 13:35 | 121 | 71.71d | 0d | Marlize [70%] | 2h |  |  |  |
| 123 | 1.9.38.19 | Write change request: Dynamic query | 5.71h | 2009-03-19 13:35 | 2009-03-20 10:18 | 122 | 71.71d |  | Marlize [70%] | 4h |  |  |  |
| 124 | 1.10 | **Complete Development** | 24.71d | 2009-02-02 08:00 | 2009-03-06 14:38 |  | 12.76d |  |  | 592h | 10,120 |  |  |
| 125 | 1.10.1 | **Generic Development** | 24.71d | 2009-02-02 08:00 | 2009-03-06 14:38 |  | 12.76d |  |  | 112h | 10,120 |  |  |
| 126 | 1.10.1.1 | Dev: Configure system variables | 8h | 2009-03-04 13:00 | 2009-03-05 12:00 | 44 | 82.5d |  | Darrell | 8h | 920 | MDSS109 | 1 day |
| 127 | 1.10.1.2 | Dev: maintain catalogues | 8h | 2009-02-02 08:00 | 2009-02-02 17:00 |  | 105d |  |  | 24h |  | MDSS103 |  |
| 128 | 1.10.1.3 | Dev: Epi week - set or change | 18.82h | 2009-02-27 16:59 | 2009-03-04 10:49 | 9 | 81.29d | 0d | Thomas (Oz) [85%] | 16h | 1,840 | MDSS119 | 2 days |
| 129 | 1.10.1.4 | Dev: define season start and end dates | 18.82h | 2009-03-04 10:49 | 2009-03-06 14:38 | 128 | 81.29d |  | Thomas (Oz) [85%] | 16h | 1,840 | MDSS127 | 2 days |
| 130 | 1.10.1.5 | Dev: enter/maintain people in the system | 18.82h | 2009-02-02 08:00 | 2009-02-04 10:49 |  | 103.65d |  | Thomas (Oz) [85%] | 16h | 1,840 | MDSS114 |  |
| 131 | 1.10.1.6 | Dev: create synonyms for imported Geo entities | 32h | 2009-02-02 08:00 | 2009-02-05 17:00 |  | 102d |  | Justin | 32h | 3,680 | MDSS112 |  |

| ID | WBS | Task | Duration | Start | Finish | Total slack | Work | Text1 | Text2 |
| --- | --- | --- | --- | --- | --- | --- | --- | --- | --- |
| 132 | 1.10.2 | **Intervention monitoring** | 1d | 2009-02-02 08:00 | 2009-02-02 17:00 | 36.47d | 16h |  |  |
| 133 | 1.10.2.1 | **IRS** | 1d | 2009-02-02 08:00 | 2009-02-02 17:00 | 36.47d |  |  |  |
| 134 | 1.10.2.1.1 | Dev: enter/maintain spray team member | 8h | 2009-02-02 08:00 | 2009-02-02 17:00 | 105d |  | MDSS113 |  |
| 135 | 1.10.2.1.2 | Dev: enter/maintain IRS teams | 8h | 2009-02-02 08:00 | 2009-02-02 17:00 | 105d |  | MDSS141 |  |
| 136 | 1.10.2.1.3 | Dev: input or modify IRS targets | 8h | 2009-02-02 08:00 | 2009-02-02 17:00 | 105d |  | MDSS028 |  |
| 137 | 1.10.2.1.4 | Dev: Configure items relating to application rate | 8h | 2009-02-02 08:00 | 2009-02-02 17:00 | 105d |  | MDSS106 |  |
| 138 | 1.10.2.1.5 | Dev: IRS - CRUD | 8h | 2009-02-02 08:00 | 2009-02-02 17:00 | 105d |  | MDSS027 |  |
| 139 | 1.10.2.1.6 | Dev: IRS - dynamic query | 8h | 2009-02-02 08:00 | 2009-02-02 17:00 | 105d |  | MDSS132 |  |
| 140 | 1.10.2.2 | **Larvaciding** | 1d | 2009-02-02 08:00 | 2009-02-02 17:00 | 36.47d | 16h |  |  |
| 141 | 1.10.2.2.1 | Dev: larviciding - CRUD | 8h | 2009-02-02 08:00 | 2009-02-02 17:00 | 105d | 16h | MDSS031 | 8 days |
| 142 | 1.10.2.3 | **ITN** | 1d | 2009-02-02 08:00 | 2009-02-02 17:00 | 36.47d |  |  |  |
| 143 | 1.10.2.3.1 | Dev: ITN by household - CRUD | 8h | 2009-02-02 08:00 | 2009-02-02 17:00 | 36.47d |  | MDSS082 | 5 days |
| 144 | 1.10.2.3.2 | Dev: ITN facility distribution - CRUD | 8h | 2009-02-02 08:00 | 2009-02-02 17:00 | 36.47d |  | MDSS030 | 5 days |
| 145 | 1.10.2.3.3 | Dev: ITN community distribution - CRUD | 8h | 2009-02-02 08:00 | 2009-02-02 17:00 | 36.47d |  | MDSS079 | 5 days |
| 146 | 1.10.2.3.4 | Dev: ITN aggregated data - CRUD | 8h | 2009-02-02 08:00 | 2009-02-02 17:00 | 36.47d |  | MDSS080 | 5 days |
| 147 | 1.10.2.3.5 | Dev: ITN by household - query | 8h | 2009-02-02 08:00 | 2009-02-02 17:00 | 36.47d |  | MDSS138 |  |
| 148 | 1.10.2.3.6 | Dev: ITN by facilit/community - query | 8h | 2009-02-02 08:00 | 2009-02-02 17:00 | 36.47d |  | MDSS135 |  |
| 149 | 1.10.2.3.7 | Dev: ITN aggregated data - query | 8h | 2009-02-02 08:00 | 2009-02-02 17:00 | 36.47d |  | MDSS136 |  |
| 150 | 1.10.2.4 | **IPT** | 1d | 2009-02-02 08:00 | 2009-02-02 17:00 | 36.47d |  |  |  |
| 151 | 1.10.2.4.1 | Dev: IPT individual - CRUD | 8h | 2009-02-02 08:00 | 2009-02-02 17:00 | 105d |  | MDSS081 |  |
| 152 | 1.10.2.4.2 | Dev: IPT aggregated - CRUD | 8h | 2009-02-02 08:00 | 2009-02-02 17:00 | 105d |  | MDSS069 |  |
| 153 | 1.10.3 | **Indicator survey** | 1d | 2009-02-02 08:00 | 2009-02-02 17:00 | 36.47d | 40h |  |  |
| 154 | 1.10.3.1 | Dev: Indicator survey - CRUD | 8h | 2009-02-02 08:00 | 2009-02-02 17:00 | 105d |  | MDSS026 |  |
| 155 | 1.10.3.2 | Dev - Indicator survey - dynamic query | 8h | 2009-02-02 08:00 | 2009-02-02 17:00 | 105d | 40h | MDSS140 |  |

| ID | WBS | Task | Type | Duration | Start | Finish | Predecessors | Total slack | Free slack | Work | Text1 | Text2 |
| --- | --- | --- | --- | --- | --- | --- | --- | --- | --- | --- | --- | --- |
| 156 | 1.10.4 | **Case Surveilance** |  | 11d | 2009-02-02 08:00 | 2009-02-16 17:00 |  | 26.47d |  | 384h |  |  |
| 157 | 1.10.4.1 | Dev: Input or modify population data |  | 32h | 2009-02-02 08:00 | 2009-02-05 17:00 |  | 33.47d |  | 32h | MDSS003 | 4 days |
| 158 | 1.10.4.2 | Dev: Import population or annual growth rate data |  | 8h | 2009-02-02 08:00 | 2009-02-02 17:00 |  | 36.47d |  | 40h | MDSS083 |  |
| 159 | 1.10.4.3 | Dev: input/modify outbreak thresholds |  | 8h | 2009-02-02 08:00 | 2009-02-02 17:00 |  | 36.47d |  | 40h | MDSS105 | 5 days |
| 160 | 1.10.4.4 | Dev :import outbreak thresholds |  | 8h | 2009-02-02 08:00 | 2009-02-02 17:00 |  | 36.47d |  | 24h | MDSS085 | 5 days |
| 161 | 1.10.4.5 | Dev: Calculate annual or seasonal population |  | 8h | 2009-02-02 08:00 | 2009-02-02 17:00 |  | 36.47d |  | 40h | MDSS073 | 5 days |
| 162 | 1.10.4.6 | Dev: calculate incidence |  | 8h | 2009-02-02 08:00 | 2009-02-02 17:00 |  | 36.47d |  | 16h | MDSS086 | 5 days |
| 163 | 1.10.4.7 | Dev: calculate CFR |  | 8h | 2009-02-02 08:00 | 2009-02-02 17:00 |  | 36.47d |  | 16h | MDSS087 | 4 days |
| 164 | 1.10.4.8 | Dev: individual cases - CRUD |  | 40h | 2009-02-02 08:00 | 2009-02-06 17:00 |  | 26.47d | 0d | 40h | MDSS001 | 5 days |
| 165 | 1.10.4.9 | Dev: Outbreak notification |  | 8h | 2009-02-09 08:00 | 2009-02-09 17:00 | 164 | 26.47d | 0d | 16h | MDSS124 | 5 days |
| 166 | 1.10.4.10 | Dev: aggregated cases - CRUD |  | 40h | 2009-02-10 08:00 | 2009-02-16 17:00 | 165 | 26.47d |  | 40h | MDSS002 | 5 days |
| 167 | 1.10.4.11 | Dev: individual case - dynamic query |  | 40h | 2009-02-02 08:00 | 2009-02-06 17:00 |  | 32.47d |  | 40h | MDSS128 | 5 days |
| 168 | 1.10.4.12 | Dev: aggregated cases - dynamic query |  | 40h | 2009-02-02 08:00 | 2009-02-06 17:00 |  | 32.47d |  | 40h | MDSS129 | 5 days |
| 169 | 1.10.5 | Intervention planning |  | 8h | 2009-02-02 08:00 | 2009-02-02 17:00 |  | 105d |  | 40h | MDSS077 |  |
| 170 | 1.10.6 | Stock Control | milestone | 0d | 2009-02-02 08:00 | 2009-02-02 08:00 |  | 37.47d |  |  | MDSS032 |  |
| 175 | 1.11 | Complete Test and Fix Cycle |  | 8h | 2009-02-02 08:00 | 2009-02-02 17:00 |  | 36.47d |  |  |  |  |
| 176 | 1.12 | Project Buffer |  | 8h | 2009-02-02 08:00 | 2009-02-02 17:00 |  | 36.47d |  |  |  |  |
| 177 | 1.13 | Ready for Pilot Roll-Out |  | 8h | 2009-02-02 08:00 | 2009-02-02 17:00 |  | 36.47d |  |  |  |  |
